| id | phase_id | component_id | section_id | name | trade | kind | duration_days | crew_size | derived_from | scheduled_start | scheduled_end | earliest_start | latest_start | float_days | status | lead_time_days | depends_on | can_overlap_with |
| --- | --- | --- | --- | --- | --- | --- | --- | --- | --- | --- | --- | --- | --- | --- | --- | --- | --- | --- |
| pre.permit_submittal | pre_construction | permits_and_planning | general_conditions | Permit application prep & submittal | general | work | 1 | 2 | general_conditions pre_construction, permits PM prep + submit permit application at signed contract. | 2026-09-25 | 2026-09-25 | 2026-09-25 | 2026-09-25 | 0 | not_started |  |  |  |
| procure.permits | pre_construction | permits_and_planning | general_conditions | Permits (jurisdictional review) | general | procurement | 0 | 0 | general_conditions lead_time_items.permits 14 calendar day default lead. | 2026-09-28 | 2026-10-09 | 2026-09-28 | 2026-09-28 | 0 | not_started | 14 | pre.permit_submittal FS |  |
| pre.septic_tdec_eval | pre_construction | permits_and_planning | general_conditions | Septic inspection & TDEC evaluation | general | work | 1 | 1 | general_conditions scope.septic Scope calls for TDEC septic inspection prior to on-site start; result may trigger change order. | 2026-10-09 | 2026-10-09 | 2026-10-09 | 2027-01-21 | 69 | not_started |  | pre.permit_submittal SS |  |
| pre.selections_windows_doors | pre_construction | selections | windows_doors_weatherproofing | Client selections — windows & exterior door | general | work | 1 | 1 | windows_doors_weatherproofing pre_construction.selections | 2026-10-20 | 2026-10-21 | 2026-10-20 | 2026-10-26 | 4 | not_started |  |  |  |
| pre.selections_finishes | pre_construction | selections | interior_finish | Client selections — paint, flooring, trim | general | work | 1 | 1 | interior_finish pre_construction.selections | 2026-10-09 | 2026-10-09 | 2026-10-09 | 2027-01-21 | 69 | not_started |  |  |  |
| pre.selections_bath | pre_construction | selections | master_bath | Client selections — tile, fixtures, shower | general | work | 1 | 1 | master_bath pre_construction.selections, bathroom.selections_before_demo | 2026-11-20 | 2026-11-23 | 2026-11-20 | 2026-11-20 | 0 | not_started |  |  |  |
| procure.windows | pre_construction | procurement | windows_doors_weatherproofing | Windows procurement (4 units incl. transom) | general | procurement | 0 | 0 | windows_doors_weatherproofing lead_time_items.windows_stock | 2026-10-21 | 2026-11-11 | 2026-10-21 | 2026-10-27 | 4 | not_started | 21 | pre.selections_windows_doors FS, pre.permit_submittal FS |  |
| procure.exterior_door | pre_construction | procurement | windows_doors_weatherproofing | Exterior door procurement | general | procurement | 0 | 0 | windows_doors_weatherproofing lead_time_items.exterior_doors | 2026-10-21 | 2026-11-11 | 2026-10-21 | 2026-10-27 | 4 | not_started | 21 | pre.selections_windows_doors FS, pre.permit_submittal FS |  |
| procure.lvl_beam | pre_construction | procurement | structural_modifications | LVL beam procurement (3-ply 14") | general | procurement | 0 | 0 | structural_modifications lead_time_items.lvl_beams | 2026-10-08 | 2026-10-28 | 2026-10-08 | 2026-10-12 | 2 | not_started | 21 | pre.permit_submittal FS |  |
| procure.mini_split | pre_construction | procurement | hvac | Mini-split unit procurement | general | procurement | 0 | 0 | hvac lead_time_items.mini_split | 2026-11-06 | 2026-11-19 | 2026-11-06 | 2026-11-10 | 2 | not_started | 14 | pre.permit_submittal FS |  |
| procure.tankless_wh | pre_construction | procurement | hvac | Tankless water heater procurement | general | procurement | 0 | 0 | hvac lead_time_items.tankless_water_heater | 2026-11-05 | 2026-11-19 | 2026-11-05 | 2026-11-05 | 0 | not_started | 14 | pre.permit_submittal FS |  |
| procure.subpanel | pre_construction | procurement | electrical | 100A subpanel procurement | general | procurement | 0 | 0 | electrical lead_time_items.electrical_panel | 2026-11-06 | 2026-11-19 | 2026-11-06 | 2026-11-06 | 0 | not_started | 14 | pre.permit_submittal FS |  |
| procure.tile | pre_construction | procurement | master_bath | Master bath tile procurement | general | procurement | 0 | 0 | master_bath lead_time_items.tile_custom | 2026-11-23 | 2026-12-16 | 2026-11-23 | 2026-11-23 | 0 | not_started | 21 | pre.selections_bath FS |  |
| procure.shower_glass | pre_construction | procurement | master_bath | Shower glass enclosure procurement (templated later) | general | procurement | 0 | 0 | master_bath lead_time_items.glass_shower Templated after tile shower complete; procurement gate here approximates readiness. | 2026-12-28 | 2027-01-11 | 2026-12-28 | 2026-12-28 | 0 | not_started | 14 | pre.selections_bath FS |  |
| site.dumpster_delivery | site_prep | site_setup | demolition_site_work | Dumpster delivered (day before demo) | general | work | 0.5 | 1 | demolition_site_work equipment_delivery | 2026-10-12 | 2026-10-12 | 2026-10-12 | 2026-10-12 | 0 | not_started |  | procure.permits FS |  |
| site.protection | site_prep | site_setup | general_conditions | Site protection & staging | general | work | 0.5 | 2 | general_conditions site_prep | 2026-10-12 | 2026-10-12 | 2026-10-12 | 2026-10-12 | 0 | not_started |  | site.dumpster_delivery SS |  |
| demo.concrete_walkway | demo_and_protection | demo | demolition_site_work | Saw cut & remove concrete walkway, RR ties | demo | work | 1 | 3 | demolition_site_work demo | 2026-10-12 | 2026-10-13 | 2026-10-12 | 2026-10-12 | 0 | not_started |  | site.protection FS |  |
| demo.relocate_heat_pump | demo_and_protection | demo | demolition_site_work | Relocate existing heat pump & electrical disconnect | electrical | work | 1 | 2 | demolition_site_work scope.demo_site_work | 2026-10-13 | 2026-10-14 | 2026-10-13 | 2027-01-21 | 66.5 | not_started |  | demo.concrete_walkway FS |  |
| demo.wh_vent | demo_and_protection | demo | demolition_site_work | Extend gas water heater vent through new roof line | plumbing | work | 0.5 | 1 | demolition_site_work scope.demo_site_work | 2026-10-13 | 2026-10-13 | 2026-10-13 | 2027-01-21 | 67 | not_started |  | demo.concrete_walkway FS |  |
| excav.footings | structural_and_shell | excavation_foundation | excavation_foundation | Excavate for footings & slab | excavation | work | 2 | 2 | excavation_foundation excavation | 2026-10-13 | 2026-10-15 | 2026-10-13 | 2026-10-13 | 0 | not_started |  | demo.concrete_walkway FS |  |
| found.footing_forms | structural_and_shell | excavation_foundation | excavation_foundation | Set footing forms, gravel, vapor barrier, rebar | concrete | work | 2 | 4 | excavation_foundation foundation.monolithic | 2026-10-15 | 2026-10-19 | 2026-10-15 | 2026-10-15 | 0 | not_started |  | excav.footings FS |  |
| inspect.footing | structural_and_shell | excavation_foundation | excavation_foundation | Footing inspection | inspector | inspection | 0.5 | 1 | excavation_foundation inspection.footing | 2026-10-20 | 2026-10-20 | 2026-10-20 | 2026-10-20 | 0 | not_started |  | found.footing_forms FS 1 |  |
| found.monolithic_pour | structural_and_shell | excavation_foundation | excavation_foundation | Monolithic footing + slab pour, smooth finish | concrete | work | 1.5 | 4 | excavation_foundation foundation.monolithic | 2026-10-21 | 2026-10-22 | 2026-10-21 | 2026-10-21 | 0 | not_started |  | inspect.footing FS |  |
| found.cure | structural_and_shell | excavation_foundation | excavation_foundation | Slab cure wait | general | milestone | 0 | 0 | excavation_foundation foundation.cure | 2026-10-27 | 2026-10-27 | 2026-10-27 | 2026-10-27 | 0 | not_started |  | found.monolithic_pour FS 3 |  |
| inspect.foundation_slab | structural_and_shell | excavation_foundation | excavation_foundation | Foundation/slab inspection | inspector | inspection | 0.5 | 1 | excavation_foundation inspection.foundation | 2026-10-28 | 2026-10-28 | 2026-10-28 | 2026-10-28 | 0 | not_started |  | found.cure FS 1 |  |
| struct.temp_shoring | structural_and_shell | structural_mods | structural_modifications | Temporary shoring at load-bearing wall | framing | work | 1 | 3 | structural_modifications structural_mods | 2026-10-29 | 2026-10-29 | 2026-10-29 | 2026-11-02 | 2 | not_started |  | inspect.foundation_slab FS, procure.lvl_beam FS |  |
| struct.lvl_beam | structural_and_shell | structural_mods | structural_modifications | Install 3-ply 14" LVL beam, open load-bearing wall | framing | work | 2 | 3 | structural_modifications structural_mods.lvl | 2026-10-30 | 2026-11-02 | 2026-10-30 | 2026-11-03 | 2 | not_started |  | struct.temp_shoring FS |  |
| framing.floor_system | structural_and_shell | framing_shell | framing | Floor system + subfloor (glued & fastened) | framing | work | 3 | 3 | framing framing.floor_systems | 2026-10-29 | 2026-11-02 | 2026-10-29 | 2026-10-29 | 0 | not_started |  | inspect.foundation_slab FS |  |
| framing.basement_walls | structural_and_shell | framing_shell | framing | Basement walls 2x4 @ 16" O.C. | framing | work | 2 | 3 | framing framing.walls | 2026-11-03 | 2026-11-04 | 2026-11-03 | 2026-11-03 | 0 | not_started |  | framing.floor_system FS |  |
| framing.exterior_walls | structural_and_shell | framing_shell | framing | Exterior walls 2x4 @ 16" O.C. | framing | work | 3 | 3 | framing framing.walls | 2026-11-05 | 2026-11-09 | 2026-11-05 | 2026-11-05 | 0 | not_started |  | framing.basement_walls FS, struct.lvl_beam FS |  |
| framing.interior_walls | structural_and_shell | framing_shell | framing | Interior walls + elevator shaft rough frame (4x4) | framing | work | 2 | 3 | framing framing.walls Includes future elevator shaft framed opening. | 2026-11-06 | 2026-11-09 | 2026-11-06 | 2027-01-20 | 48 | not_started |  | framing.exterior_walls SS 1 |  |
| roof.framing | structural_and_shell | roof | roof_framing_roofing | Roof framing (gable, tie into existing 6/12) | framing | work | 3 | 3 | roof_framing_roofing framing.roof | 2026-11-10 | 2026-11-12 | 2026-11-10 | 2026-11-10 | 0 | not_started |  | framing.exterior_walls FS |  |
| roof.sheathing | structural_and_shell | roof | roof_framing_roofing | Roof sheathing | framing | work | 1 | 3 | roof_framing_roofing framing.roof | 2026-11-13 | 2026-11-13 | 2026-11-13 | 2026-11-13 | 0 | not_started |  | roof.framing FS |  |
| site.scaffolding | structural_and_shell | roof | roof_framing_roofing | Scaffolding delivered (day before roofing) | general | work | 0.5 | 1 | roof_framing_roofing equipment_delivery | 2026-11-16 | 2026-11-16 | 2026-11-16 | 2026-11-16 | 0 | not_started |  | roof.sheathing FS |  |
| roof.shingles | structural_and_shell | roof | roof_framing_roofing | Underlayment, drip edge, arch shingles, ridge vent | roofing | work | 3 | 3 | roof_framing_roofing roofing.shingle | 2026-11-16 | 2026-11-19 | 2026-11-16 | 2026-11-16 | 0 | not_started |  | site.scaffolding FS |  |
| exterior.sheathing_wrb | structural_and_shell | exterior_envelope | windows_doors_weatherproofing | Wall sheathing + WRB | framing | work | 1.5 | 3 | windows_doors_weatherproofing exterior.wrb | 2026-11-10 | 2026-11-11 | 2026-11-10 | 2026-11-16 | 4 | not_started |  | framing.exterior_walls FS |  |
| exterior.windows_doors | structural_and_shell | exterior_envelope | windows_doors_weatherproofing | Install 4 windows + 1 exterior door w/ flashing | windows_doors | work | 2 | 2 | windows_doors_weatherproofing windows_doors | 2026-11-11 | 2026-11-13 | 2026-11-11 | 2026-11-17 | 4 | not_started |  | exterior.sheathing_wrb FS, procure.windows FS, procure.exterior_door FS |  |
| exterior.dried_in | structural_and_shell | exterior_envelope | windows_doors_weatherproofing | Dried-in milestone | general | milestone | 0 | 0 | windows_doors_weatherproofing milestone.dried_in | 2026-11-19 | 2026-11-19 | 2026-11-19 | 2026-11-19 | 0 | not_started |  | roof.shingles FS, exterior.windows_doors FS |  |
| exterior.siding_trim_gutters | structural_and_shell | exterior_envelope | exterior_finishes | Vinyl siding + trim + soffit/fascia + seamless gutters | siding | work | 5 | 3 | exterior_finishes siding, same_crew_exterior_pattern Single continuous block from same crew — siding + trim + gutters. | 2026-11-19 | 2026-11-30 | 2026-11-19 | 2027-01-15 | 35.5 | not_started |  | exterior.dried_in FS | elec.rough_in, plumb.rough_in, hvac.rough_in |
| plumb.tank_set | rough_trades | rough_plumbing | hvac | Tankless water heater set | plumbing | work | 0.5 | 2 | hvac plumbing.tank_set_first | 2026-11-19 | 2026-11-19 | 2026-11-19 | 2026-11-19 | 0 | not_started |  | exterior.dried_in FS, procure.tankless_wh FS |  |
| plumb.rough_in | rough_trades | rough_plumbing | plumbing | Rough plumbing — master bath + W/D relocation | plumbing | work | 3 | 2 | plumbing rough_plumbing | 2026-11-20 | 2026-11-24 | 2026-11-20 | 2026-11-20 | 0 | not_started |  | plumb.tank_set FS |  |
| elec.rough_in | rough_trades | rough_electrical | electrical | Rough electrical — 100A subpanel, boxes, wiring | electrical | work | 4 | 2 | electrical rough_electrical, overlap.rough_mep | 2026-11-20 | 2026-11-25 | 2026-11-20 | 2026-11-20 | 0 | not_started |  | exterior.dried_in FS, procure.subpanel FS, plumb.rough_in SS |  |
| hvac.rough_in | rough_trades | rough_hvac | hvac | Rough HVAC — mini-split line sets + relocations | hvac | work | 2 | 2 | hvac hvac.mini_split, overlap.rough_mep | 2026-11-20 | 2026-11-23 | 2026-11-20 | 2026-11-24 | 2 | not_started |  | exterior.dried_in FS, procure.mini_split FS, plumb.rough_in SS |  |
| inspect.rough_bundled | rough_inspections | rough_mep_inspections | electrical | Bundled rough MEP + framing inspection | inspector | inspection | 0.5 | 1 | electrical inspection.bundled Rough E/P/M and framing bundled per TN sequence. | 2026-12-01 | 2026-12-01 | 2026-12-01 | 2026-12-01 | 0 | not_started |  | elec.rough_in FS 1, plumb.rough_in FS 1, hvac.rough_in FS 1 |  |
| insul.batts | insulation_and_drywall | insulation | insulation_air_sealing | Insulation & air sealing | insulation | work | 2 | 2 | insulation_air_sealing insulation | 2026-12-01 | 2026-12-03 | 2026-12-01 | 2026-12-01 | 0 | not_started |  | inspect.rough_bundled FS |  |
| inspect.insulation | insulation_and_drywall | insulation | insulation_air_sealing | Insulation inspection | inspector | inspection | 0.5 | 1 | insulation_air_sealing inspection.insulation | 2026-12-04 | 2026-12-04 | 2026-12-04 | 2026-12-04 | 0 | not_started |  | insul.batts FS 1 |  |
| site.dumpster_swap | insulation_and_drywall | drywall | drywall | Dumpster swap (day before drywall hang) | general | work | 0.5 | 1 | drywall equipment_delivery | 2026-12-07 | 2026-12-07 | 2026-12-07 | 2026-12-07 | 0 | not_started |  | inspect.insulation FS |  |
| drywall.hang | insulation_and_drywall | drywall | drywall | Drywall hang — addition + existing bedroom | drywall | work | 3 | 3 | drywall drywall.consolidate | 2026-12-07 | 2026-12-10 | 2026-12-07 | 2026-12-07 | 0 | not_started |  | site.dumpster_swap FS |  |
| drywall.finish | insulation_and_drywall | drywall | drywall | Drywall tape/mud/sand (3-day cycle) | drywall | work | 3 | 3 | drywall drywall.finish | 2026-12-10 | 2026-12-15 | 2026-12-10 | 2026-12-10 | 0 | not_started |  | drywall.hang FS |  |
| paint.prime_coat1 | interior_finishes | paint | interior_finish | Paint phase 1 — prime + first coat | paint | work | 3 | 2 | interior_finish paint.two_phases | 2026-12-14 | 2026-12-17 | 2026-12-14 | 2026-12-16 | 2 | not_started |  | drywall.finish FS -1 |  |
| bath.waterproof | interior_finishes | master_bath_tile | master_bath | Shower waterproofing (Kerdi/Wedi) | tile | work | 1 | 2 | master_bath waterproofing Non-negotiable waterproofing standard. | 2026-12-15 | 2026-12-16 | 2026-12-15 | 2026-12-15 | 0 | not_started |  | drywall.finish FS |  |
| bath.tile | interior_finishes | master_bath_tile | master_bath | Master bath tile — shower + floor | tile | work | 5 | 2 | master_bath tile | 2026-12-16 | 2026-12-23 | 2026-12-16 | 2026-12-16 | 0 | not_started |  | bath.waterproof FS, procure.tile FS |  |
| glass.template | interior_finishes | master_bath_tile | master_bath | Shower glass templating | glazing | work | 0.5 | 1 | master_bath glazing.template | 2026-12-23 | 2026-12-23 | 2026-12-23 | 2026-12-23 | 0 | not_started |  | bath.tile FS |  |
| floor.lvp | interior_finishes | flooring | interior_finish | Flooring — LVP install | flooring | work | 3 | 2 | interior_finish flooring.lvp | 2026-12-17 | 2026-12-22 | 2026-12-17 | 2026-12-21 | 2 | not_started |  | paint.prime_coat1 FS |  |
| trim.carpentry | interior_finishes | interior_carpentry | interior_finish | Trim carpentry — base, case, doors | trim_carpentry | work | 4 | 2 | interior_finish trim_carpentry | 2026-12-22 | 2026-12-30 | 2026-12-22 | 2026-12-28 | 2 | not_started |  | floor.lvp FS |  |
| paint.finish_coat | interior_finishes | paint | interior_finish | Paint phase 2 — finish coat, caulk, touch-ups | paint | work | 3 | 2 | interior_finish paint.two_phases, substantial_completion | 2026-12-30 | 2027-01-05 | 2026-12-30 | 2027-01-04 | 2 | not_started |  | trim.carpentry FS |  |
| milestone.substantial_completion | interior_finishes | paint | interior_finish | Substantial completion | general | milestone | 0 | 0 | interior_finish substantial_completion | 2027-01-05 | 2027-01-05 | 2027-01-05 | 2027-01-22 | 12.5 | not_started |  | paint.finish_coat FS |  |
| elec.finish | finish_trades | finish_electrical | electrical | Electrical finish — devices, fixtures, recessed, fans | electrical | work | 2 | 2 | electrical finish_electrical | 2027-01-05 | 2027-01-07 | 2027-01-05 | 2027-01-08 | 3 | not_started |  | paint.finish_coat FS |  |
| plumb.finish | finish_trades | finish_plumbing | plumbing | Plumbing finish — vanities, shower valves, W/D hookup | plumbing | work | 2 | 2 | plumbing finish_plumbing | 2027-01-05 | 2027-01-07 | 2027-01-05 | 2027-01-08 | 2.5 | not_started |  | bath.tile FS, paint.finish_coat FS |  |
| hvac.finish | finish_trades | finish_hvac | hvac | HVAC finish — mini-split install, commissioning | hvac | work | 1 | 2 | hvac hvac.mini_split_day_of | 2027-01-05 | 2027-01-06 | 2027-01-05 | 2027-01-11 | 4 | not_started |  | paint.finish_coat FS |  |
| glass.install | finish_trades | finish_plumbing | master_bath | Shower glass install | glazing | work | 0.5 | 2 | master_bath glazing.install | 2027-01-12 | 2027-01-12 | 2027-01-12 | 2027-01-12 | 0 | not_started |  | glass.template FS 10, procure.shower_glass FS, plumb.finish FS |  |
| hall_bath.mod | finish_trades | hall_bath_bedroom | hall_bath_bedroom_closeout | Existing hall bath mod + bedroom remodel patch/paint | general | work | 3 | 2 | hall_bath_bedroom_closeout scope.hall_bath_bedroom Negative section_total indicates credit/scope reduction; minimal tasks for patch/paint + bedroom finish. | 2027-01-05 | 2027-01-08 | 2027-01-05 | 2027-01-07 | 2 | not_started |  | paint.finish_coat FS |  |
| pm.walkthrough | closeout | punch_and_final | hall_bath_bedroom_closeout | PM walkthrough with client — punch list | pm | work | 0.5 | 1 | hall_bath_bedroom_closeout closeout.walkthrough | 2027-01-12 | 2027-01-12 | 2027-01-12 | 2027-01-12 | 0 | not_started |  | elec.finish FS, plumb.finish FS, hvac.finish FS, glass.install FS, hall_bath.mod FS |  |
| punch.work | closeout | punch_and_final | hall_bath_bedroom_closeout | Punch-list work (multi-trade returns) | general | work | 2 | 2 | hall_bath_bedroom_closeout closeout.punch | 2027-01-13 | 2027-01-14 | 2027-01-13 | 2027-01-13 | 0 | not_started |  | pm.walkthrough FS |  |
| clean.final | closeout | punch_and_final | hall_bath_bedroom_closeout | Final clean | cleanup | work | 1 | 2 | hall_bath_bedroom_closeout closeout.final_clean | 2027-01-15 | 2027-01-15 | 2027-01-15 | 2027-01-15 | 0 | not_started |  | punch.work FS |  |
| inspect.final_epm | closeout | punch_and_final | hall_bath_bedroom_closeout | Final E/P/M inspection | inspector | inspection | 0.5 | 1 | hall_bath_bedroom_closeout inspection.final_epm | 2027-01-19 | 2027-01-19 | 2027-01-19 | 2027-01-19 | 0 | not_started |  | clean.final FS 1 |  |
| inspect.final_building | closeout | punch_and_final | hall_bath_bedroom_closeout | Final building inspection | inspector | inspection | 0.5 | 1 | hall_bath_bedroom_closeout inspection.final_building | 2027-01-21 | 2027-01-21 | 2027-01-21 | 2027-01-21 | 0 | not_started |  | inspect.final_epm FS 2 |  |
| milestone.co_handoff | closeout | punch_and_final | hall_bath_bedroom_closeout | CO + handoff | general | milestone | 0 | 0 | hall_bath_bedroom_closeout closeout.handoff | 2027-01-22 | 2027-01-22 | 2027-01-22 | 2027-01-22 | 0 | not_started |  | inspect.final_building FS |  |
