| id | phase_id | component_id | section_id | name | trade | kind | duration_days | crew_size | lead_time_days | derived_from | scheduled_start | scheduled_end | earliest_start | latest_start | float_days | status | pre_construction_offset_working_days | depends_on | can_overlap_with |
| --- | --- | --- | --- | --- | --- | --- | --- | --- | --- | --- | --- | --- | --- | --- | --- | --- | --- | --- | --- |
| pre.permit_procure | pre_construction | permits | general_conditions | Permit application & approval | general | procurement | 0 | 0 | 14 | general_conditions lead-time.permits, pre_construction.permitting Standard 14-calendar-day permit lead time at signed contract | 2026-09-22 | 2026-10-06 | 2026-09-22 | 2026-09-22 | 0 | not_started |  |  |  |
| pre.pm_planning | pre_construction | permits | general_conditions | PM planning, contract, scope walk | pm | work | 2 | 1 |  | general_conditions pre_construction.planning | 2026-09-21 | 2026-09-22 | 2026-09-21 | 2027-01-20 | 82 | not_started | 15 |  |  |
| pre.selections_tile | pre_construction | selections | master_bath | Tile & bath fixture selections | general | work | 1 | 1 |  | master_bath pre_construction.selections Customer picks tile + fixtures before demo | 2026-09-28 | 2026-09-28 | 2026-09-28 | 2026-12-01 | 44 | not_started | 10 |  |  |
| pre.selections_paint_finish | pre_construction | selections | interior_finish | Paint colors & interior finish selections | general | work | 1 | 1 |  | interior_finish pre_construction.selections | 2026-09-30 | 2026-09-30 | 2026-09-30 | 2027-01-21 | 76 | not_started | 8 |  |  |
| proc.windows | pre_construction | procurement | windows_doors_weatherproofing | Order windows (4) & exterior door | general | procurement | 0 | 0 | 21 | windows_doors_weatherproofing lead-time.windows_stock, lead-time.exterior_doors | 2026-10-26 | 2026-11-16 | 2026-10-26 | 2026-10-26 | 0 | not_started |  | pre.permit_procure FS |  |
| proc.lvl_beam | pre_construction | procurement | structural_modifications | Order 3-ply 14" LVL beam | general | procurement | 0 | 0 | 21 | structural_modifications lead-time.lvl_beams | 2026-10-09 | 2026-10-30 | 2026-10-09 | 2026-10-09 | 0 | not_started |  | pre.permit_procure FS |  |
| proc.trusses | pre_construction | procurement | roof_framing_roofing | Order roof trusses | general | procurement | 0 | 0 | 35 | roof_framing_roofing lead-time.roof_trusses_custom | 2026-10-06 | 2026-11-10 | 2026-10-06 | 2026-10-06 | 0 | not_started |  | pre.permit_procure FS |  |
| proc.electrical_panel | pre_construction | procurement | electrical | Order 100A subpanel | general | procurement | 0 | 0 | 10 | electrical lead-time.electrical_panel | 2026-11-06 | 2026-11-18 | 2026-11-06 | 2026-11-06 | 0 | not_started |  | pre.permit_procure FS |  |
| proc.mini_split | pre_construction | procurement | hvac | Order mini-split unit | general | procurement | 0 | 0 | 10 | hvac lead-time.mini_split | 2026-11-06 | 2026-11-18 | 2026-11-06 | 2026-11-10 | 2 | not_started |  | pre.permit_procure FS |  |
| proc.tankless_wh | pre_construction | procurement | hvac | Order tankless water heater | general | procurement | 0 | 0 | 10 | hvac lead-time.tankless_wh | 2026-11-06 | 2026-11-18 | 2026-11-06 | 2026-11-09 | 0.5 | not_started |  | pre.permit_procure FS |  |
| proc.tile | pre_construction | procurement | master_bath | Order shower tile & materials | general | procurement | 0 | 0 | 18 | master_bath lead-time.tile_custom | 2026-12-02 | 2026-12-18 | 2026-12-02 | 2026-12-02 | 0 | not_started |  | pre.selections_tile FS |  |
| equip.dumpster_demo | site_prep | site_setup | demolition_site_work | Dumpster delivery for demo | general | work | 0.5 | 1 |  | demolition_site_work equipment.day_before Dumpster lands day before demo | 2026-10-12 | 2026-10-12 | 2026-10-12 | 2026-10-12 | 0 | not_started |  | pre.permit_procure FS |  |
| site.protection | site_prep | site_setup | general_conditions | Site protection, staging setup | general | work | 0.5 | 2 |  | general_conditions site_prep | 2026-10-12 | 2026-10-12 | 2026-10-12 | 2026-10-12 | 0 | not_started |  | equip.dumpster_demo SS |  |
| demo.walkway_ties | demo_and_protection | demolition | demolition_site_work | Saw cut walkway, remove railroad ties & obstructions | demo | work | 2 | 3 |  | demolition_site_work trade.demo | 2026-10-12 | 2026-10-14 | 2026-10-12 | 2026-10-12 | 0 | not_started |  | site.protection FS |  |
| demo.relocate_heatpump | demo_and_protection | demolition | demolition_site_work | Relocate existing heat pump & electrical disconnect | electrical | work | 1 | 2 |  | demolition_site_work trade.electrical | 2026-10-14 | 2026-10-15 | 2026-10-14 | 2027-01-21 | 65.5 | not_started |  | demo.walkway_ties FS |  |
| demo.debris_haul | demo_and_protection | demolition | demolition_site_work | Debris haul-out & dump runs | demo | work | 0.5 | 2 |  | demolition_site_work trade.demo | 2026-10-14 | 2026-10-14 | 2026-10-14 | 2027-01-21 | 66 | not_started |  | demo.walkway_ties FS |  |
| excav.footings | structural_and_shell | excavation_foundation | excavation_foundation | Excavate for footings & slab | excavation | work | 2 | 2 |  | excavation_foundation trade.excavation | 2026-10-14 | 2026-10-16 | 2026-10-14 | 2026-10-14 | 0 | not_started |  | demo.walkway_ties FS |  |
| conc.forms_footing | structural_and_shell | excavation_foundation | excavation_foundation | Set footing forms, gravel base, vapor barrier, rebar | concrete | work | 2 | 4 |  | excavation_foundation trade.concrete | 2026-10-16 | 2026-10-20 | 2026-10-16 | 2026-10-16 | 0 | not_started |  | excav.footings FS |  |
| inspect.footing | structural_and_shell | excavation_foundation | excavation_foundation | Footing inspection | inspector | inspection | 0.5 | 1 |  | excavation_foundation inspection.footing | 2026-10-21 | 2026-10-21 | 2026-10-21 | 2026-10-21 | 0 | not_started |  | conc.forms_footing FS 1 |  |
| conc.monolithic_pour | structural_and_shell | excavation_foundation | excavation_foundation | Monolithic pour — footings + slab | concrete | work | 1 | 4 |  | excavation_foundation foundation.monolithic_default Monolithic default per rules — footing+slab in one pour | 2026-10-22 | 2026-10-22 | 2026-10-22 | 2026-10-22 | 0 | not_started |  | inspect.footing FS |  |
| conc.cure | structural_and_shell | excavation_foundation | excavation_foundation | Concrete cure | general | work | 0 | 0 |  | excavation_foundation concrete.cure | 2026-10-28 | 2026-10-28 | 2026-10-28 | 2026-10-28 | 0 | not_started |  | conc.monolithic_pour FS 3 |  |
| inspect.foundation | structural_and_shell | excavation_foundation | excavation_foundation | Foundation/slab inspection | inspector | inspection | 0.5 | 1 |  | excavation_foundation inspection.foundation | 2026-10-29 | 2026-10-29 | 2026-10-29 | 2026-10-29 | 0 | not_started |  | conc.cure FS 1 |  |
| struct.shoring | structural_and_shell | structural_mods | structural_modifications | Temporary shoring for load-bearing wall | framing | work | 1 | 3 |  | structural_modifications structural.shoring | 2026-10-29 | 2026-10-30 | 2026-10-29 | 2026-10-29 | 0 | not_started |  | inspect.foundation FS |  |
| struct.lvl_install | structural_and_shell | structural_mods | structural_modifications | Install 3-ply 14" LVL beam, open load-bearing wall | framing | work | 2 | 3 |  | structural_modifications structural.lvl_install | 2026-10-30 | 2026-11-03 | 2026-10-30 | 2026-10-30 | 0 | not_started |  | struct.shoring FS, proc.lvl_beam FS |  |
| frame.floor_system | structural_and_shell | framing | framing | Floor system (joists, subfloor glued & fastened) | framing | work | 3 | 3 |  | framing trade.framing | 2026-10-29 | 2026-11-03 | 2026-10-29 | 2026-10-29 | 0 | not_started |  | inspect.foundation FS |  |
| frame.walls | structural_and_shell | framing | framing | Basement + exterior + interior walls 2x4@16" O.C. | framing | work | 5 | 3 |  | framing trade.framing | 2026-11-03 | 2026-11-10 | 2026-11-03 | 2026-11-03 | 0 | not_started |  | frame.floor_system FS, struct.lvl_install FS |  |
| frame.elevator_shaft | structural_and_shell | framing | framing | Frame 4x4 future elevator shaft | framing | work | 1 | 2 |  | framing trade.framing | 2026-11-05 | 2026-11-06 | 2026-11-05 | 2027-01-21 | 49.5 | not_started |  | frame.walls SS 2 |  |
| roof.frame_sheath | structural_and_shell | roofing | roof_framing_roofing | Roof framing (trusses/rafters) + sheathing | framing | work | 4 | 3 |  | roof_framing_roofing trade.framing, roof.sequence | 2026-11-10 | 2026-11-16 | 2026-11-10 | 2026-11-10 | 0 | not_started |  | frame.walls FS, proc.trusses FS |  |
| roof.shingle | structural_and_shell | roofing | roof_framing_roofing | Underlayment, drip edge, flashing, architectural shingles, ridge vent | roofing | work | 3 | 3 |  | roof_framing_roofing overlap.roofing_after_sheathing | 2026-11-12 | 2026-11-17 | 2026-11-12 | 2027-01-11 | 36.5 | not_started |  | roof.frame_sheath FS -2 | roof.frame_sheath |
| roof.gutters_fascia | structural_and_shell | roofing | roof_framing_roofing | Fascia, soffit, seamless gutters | siding | work | 2 | 3 |  | roof_framing_roofing same_crew.exterior_pattern | 2026-11-17 | 2026-11-19 | 2026-11-17 | 2027-01-14 | 36.5 | not_started |  | roof.shingle FS |  |
| wd.install | structural_and_shell | windows_doors | windows_doors_weatherproofing | Install 4 windows + 1 exterior door + WRB | windows_doors | work | 2 | 2 |  | windows_doors_weatherproofing trade.windows_doors | 2026-11-16 | 2026-11-18 | 2026-11-16 | 2026-11-16 | 0 | not_started |  | roof.frame_sheath FS, proc.windows FS |  |
| ext.siding_trim | structural_and_shell | exterior_finishes | exterior_finishes | Sheathing/WRB, vinyl siding, trim | siding | work | 4 | 3 |  | exterior_finishes same_crew.exterior_pattern, overlap.exterior_parallel_rough | 2026-11-19 | 2026-11-25 | 2026-11-19 | 2027-01-18 | 36.5 | not_started |  | wd.install FS, roof.gutters_fascia FS | re.rough, rp.rough, rh.rough |
| re.rough | rough_trades | rough_electrical | electrical | Rough electrical + 100A subpanel | electrical | work | 4 | 2 |  | electrical trade.electrical, overlap.rough_trades_parallel | 2026-11-18 | 2026-11-24 | 2026-11-18 | 2026-11-18 | 0 | not_started |  | wd.install FS, proc.electrical_panel FS | rp.rough, rh.rough |
| rp.tank_set | rough_trades | rough_plumbing | hvac | Set tankless water heater | plumbing | work | 0.5 | 2 |  | hvac plumbing.tank_set_first Tankless set before rough-in | 2026-11-18 | 2026-11-18 | 2026-11-18 | 2026-11-19 | 0.5 | not_started |  | wd.install FS, proc.tankless_wh FS |  |
| rp.rough | rough_trades | rough_plumbing | plumbing | Rough plumbing — master bath + W/D relocate | plumbing | work | 3 | 2 |  | plumbing trade.plumbing, overlap.rough_trades_parallel | 2026-11-19 | 2026-11-23 | 2026-11-19 | 2026-11-19 | 0.5 | not_started |  | rp.tank_set FS, re.rough SS | re.rough, rh.rough |
| rh.rough | rough_trades | rough_hvac | hvac | Rough HVAC — mini-split lineset & relocations | hvac | work | 2 | 2 |  | hvac hvac.mini_split_day_of, overlap.rough_trades_parallel Mini-split lineset run coordinated with rough trades; equipment set day-of at finish | 2026-11-18 | 2026-11-20 | 2026-11-18 | 2026-11-20 | 2 | not_started |  | wd.install FS, proc.mini_split FS, re.rough SS | re.rough, rp.rough |
| inspect.rough_bundled | rough_inspections | inspections_rough | electrical | Bundled rough inspections (E/P/M + framing) | inspector | inspection | 0.5 | 1 |  | electrical inspection.bundled_rough | 2026-11-25 | 2026-11-25 | 2026-11-25 | 2026-11-25 | 0 | not_started |  | re.rough FS 1, rp.rough FS 1, rh.rough FS 1 |  |
| ins.batts | insulation_and_drywall | insulation | insulation_air_sealing | Insulation & air sealing (batts) | insulation | work | 2 | 2 |  | insulation_air_sealing trade.insulation | 2026-11-30 | 2026-12-01 | 2026-11-30 | 2026-11-30 | 0 | not_started |  | inspect.rough_bundled FS |  |
| inspect.insulation | insulation_and_drywall | insulation | insulation_air_sealing | Insulation inspection | inspector | inspection | 0.5 | 1 |  | insulation_air_sealing inspection.insulation | 2026-12-03 | 2026-12-03 | 2026-12-03 | 2026-12-03 | 0 | not_started |  | ins.batts FS 1 |  |
| equip.dumpster_drywall | insulation_and_drywall | drywall | drywall | Second dumpster for drywall | general | work | 0.5 | 1 |  | drywall equipment.day_before | 2026-12-03 | 2026-12-03 | 2026-12-03 | 2026-12-03 | 0 | not_started |  | inspect.insulation FS |  |
| dw.hang | insulation_and_drywall | drywall | drywall | Drywall hang — addition + existing bedroom (consolidated) | drywall | work | 3 | 3 |  | drywall drywall.consolidate_zones | 2026-12-04 | 2026-12-08 | 2026-12-04 | 2026-12-04 | 0 | not_started |  | equip.dumpster_drywall FS |  |
| dw.finish | insulation_and_drywall | drywall | drywall | Drywall tape/mud/sand (3-cycle) | drywall | work | 5 | 3 |  | drywall drywall.finish_cycle | 2026-12-10 | 2026-12-16 | 2026-12-10 | 2026-12-10 | 0 | not_started |  | dw.hang FS 1 |  |
| paint.phase1 | interior_finishes | paint_phase_1 | interior_finish | Paint phase 1 — prime + first coat | paint | work | 3 | 2 |  | interior_finish paint.two_phases | 2026-12-16 | 2026-12-18 | 2026-12-16 | 2026-12-16 | 0 | not_started |  | dw.finish FS -1 |  |
| tile.waterproof_shower | interior_finishes | tile_bath | master_bath | Waterproofing (Kerdi) + shower tile | tile | work | 5 | 2 |  | master_bath waterproofing.kerdi_required | 2026-12-21 | 2026-12-29 | 2026-12-21 | 2026-12-21 | 0 | not_started |  | paint.phase1 FS, proc.tile FS |  |
| floor.lvp | interior_finishes | flooring | interior_finish | Flooring install (LVP) | flooring | work | 3 | 2 |  | interior_finish trade.flooring, overlap.two_interior_max | 2026-12-21 | 2026-12-23 | 2026-12-21 | 2026-12-23 | 2 | not_started |  | paint.phase1 FS | tile.waterproof_shower |
| trim.carpentry | interior_finishes | trim_carpentry | interior_finish | Interior trim, base/case | trim_carpentry | work | 4 | 2 |  | interior_finish trade.trim_carpentry | 2026-12-30 | 2027-01-05 | 2026-12-30 | 2026-12-30 | 0 | not_started |  | floor.lvp FS, tile.waterproof_shower FS |  |
| paint.phase2 | interior_finishes | paint_phase_2 | interior_finish | Paint phase 2 — finish coat (substantial completion) | paint | work | 3 | 2 |  | interior_finish paint.two_phases, substantial_completion | 2027-01-06 | 2027-01-08 | 2027-01-06 | 2027-01-06 | 0 | not_started |  | trim.carpentry FS |  |
| milestone.substantial_completion | interior_finishes | paint_phase_2 | interior_finish | Substantial completion | pm | milestone | 0 | 0 |  | interior_finish substantial_completion | 2027-01-11 | 2027-01-11 | 2027-01-11 | 2027-01-22 | 9 | not_started |  | paint.phase2 FS |  |
| fe.trim | finish_trades | finish_electrical | electrical | Electrical finish — recessed, vanity lights, fan/light, outlets, dimmers | electrical | work | 3 | 2 |  | electrical trade.electrical.finish | 2027-01-11 | 2027-01-13 | 2027-01-11 | 2027-01-11 | 0 | not_started |  | paint.phase2 FS |  |
| fp.trim | finish_trades | finish_plumbing | plumbing | Plumbing finish — master bath fixtures & connections | plumbing | work | 2 | 2 |  | plumbing trade.plumbing.finish | 2027-01-11 | 2027-01-12 | 2027-01-11 | 2027-01-12 | 1 | not_started |  | paint.phase2 FS, tile.waterproof_shower FS |  |
| fh.trim | finish_trades | finish_hvac | hvac | HVAC finish — mini-split head install & commissioning | hvac | work | 1 | 2 |  | hvac hvac.mini_split_day_of | 2027-01-11 | 2027-01-11 | 2027-01-11 | 2027-01-13 | 2 | not_started |  | paint.phase2 FS |  |
| hallbath.mod | finish_trades | hall_bath_bedroom | hall_bath_closeout | Existing hall bath modification & bedroom remodel touch-ups | general | work | 2 | 2 |  | hall_bath_closeout negative_section.minimal_tasks Section has negative material total (credit) — kept minimal per rules | 2027-01-11 | 2027-01-12 | 2027-01-11 | 2027-01-12 | 1 | not_started |  | paint.phase2 FS |  |
| close.pm_walkthrough | closeout | punch_and_closeout | hall_bath_closeout | PM walkthrough with client — punch list produced | pm | work | 0.5 | 1 |  | hall_bath_closeout closeout.pm_walkthrough | 2027-01-14 | 2027-01-14 | 2027-01-14 | 2027-01-14 | 0 | not_started |  | fe.trim FS, fp.trim FS, fh.trim FS, hallbath.mod FS |  |
| close.punch | closeout | punch_and_closeout | hall_bath_closeout | Punch list execution (multi-trade returns) | general | work | 2 | 2 |  | hall_bath_closeout closeout.punch_list | 2027-01-14 | 2027-01-18 | 2027-01-14 | 2027-01-14 | 0 | not_started |  | close.pm_walkthrough FS |  |
| close.final_clean | closeout | punch_and_closeout | hall_bath_closeout | Final clean | cleanup | work | 1 | 2 |  | hall_bath_closeout closeout.final_clean | 2027-01-18 | 2027-01-19 | 2027-01-18 | 2027-01-18 | 0 | not_started |  | close.punch FS |  |
| inspect.final_building | closeout | punch_and_closeout | hall_bath_closeout | Final building inspection | inspector | inspection | 0.5 | 1 |  | hall_bath_closeout inspection.final_building | 2027-01-21 | 2027-01-21 | 2027-01-21 | 2027-01-21 | 0 | not_started |  | close.final_clean FS 2 |  |
| close.co_handoff | closeout | punch_and_closeout | hall_bath_closeout | CO issued & handoff to customer | pm | milestone | 0 | 0 |  | hall_bath_closeout closeout.handoff | 2027-01-22 | 2027-01-22 | 2027-01-22 | 2027-01-22 | 0 | not_started |  | inspect.final_building FS |  |
