| id | phase_id | component_id | section_id | name | trade | kind | duration_days | crew_size | pre_construction_offset_working_days | lead_up_working_days | derived_from | scheduled_start | scheduled_end | earliest_start | latest_start | float_days | status | lead_time_days | depends_on |
| --- | --- | --- | --- | --- | --- | --- | --- | --- | --- | --- | --- | --- | --- | --- | --- | --- | --- | --- | --- |
| general.permitting | pre_construction | permits_and_planning | general_conditions | Pull building permit (walk-in) | general | work | 1 | 1 | 15 | 2 | general_conditions 4A Will walks permit; typically issued same day. 1d work task 3 weeks before on-site start. | 2026-09-21 | 2026-09-21 | 2026-09-21 | 2027-01-08 | 74.5 | not_started |  |  |
| general.pre_construction_walkthrough | pre_construction | permits_and_planning | general_conditions | Pre-construction walkthrough: verify existing conditions, dimensions, tie-in points | general | work | 0.5 | 2 | 10 | 1 | general_conditions Scope requires verification of existing conditions before construction. | 2026-09-28 | 2026-09-28 | 2026-09-28 | 2027-01-11 | 70 | not_started |  |  |
| permit.tdec_septic | pre_construction | tdec_septic | general_conditions | TDEC septic permit process (contact, soil scientist, issuance) | general | lead_time | 0 | 0 | 30 | 0 | general_conditions TDEC Scope adds a bathroom on a home with septic (scope names TDEC septic inspection). 6-week TDEC lead per Will. | 2026-08-28 | 2026-10-09 | 2026-08-28 | 2026-09-03 | 4 | not_started | 42 |  |
| prep.amperage_check | pre_construction | amperage_check | electrical | Verify existing main service amperage for new subpanel | general | work | 0.5 | 1 | 15 | 1 | electrical addition-amperage 100A subpanel in scope — verify main service can accept it. | 2026-09-21 | 2026-09-21 | 2026-09-21 | 2026-11-13 | 39 | not_started |  |  |
| checkpoint.selections_finalized | pre_construction | checkpoints | general_conditions | All customer selections finalized (tile, fixtures, paint, cabinets, flooring) | general | milestone | 0 | 0 | 15 | 5 | general_conditions 4P Mandatory selections checkpoint 3 weeks before on-site. | 2026-09-21 | 2026-09-21 | 2026-09-21 | 2026-11-18 | 42.5 | not_started |  |  |
| checkpoint.equipment_confirmed_demo | pre_construction | checkpoints | demolition_site_work | Confirm demo equipment (dumpster, saw, mini-ex) reserved | general | milestone | 0 | 0 | 10 | 2 | demolition_site_work 4O Equipment reservation confirmation 2 weeks before demo. | 2026-09-28 | 2026-09-28 | 2026-09-28 | 2026-10-13 | 11 | not_started |  |  |
| checkpoint.equipment_confirmed_excavation | pre_construction | checkpoints | excavation_foundation | Confirm excavation equipment (mini-ex) reserved | general | milestone | 0 | 0 | 10 | 2 | excavation_foundation 4O Excavation equipment reservation confirmation. | 2026-09-28 | 2026-09-28 | 2026-09-28 | 2026-10-16 | 14 | not_started |  |  |
| checkpoint.equipment_confirmed_roof | pre_construction | checkpoints | roof_framing_roofing | Confirm roof scaffolding reserved | general | milestone | 0 | 0 | 10 | 2 | roof_framing_roofing 4O Scaffolding reservation confirmation for roof phase. | 2026-09-28 | 2026-09-28 | 2026-09-28 | 2027-01-11 | 70.5 | not_started |  |  |
| checkpoint.call_jasper | pre_construction | family_contact | general_conditions | Call Jasper Simons (brother/POC) — 1 week before job start | general | milestone | 0 | 0 | 5 | 0 | general_conditions Per PM notes: Jasper (John's brother) is a POC. Call 1 week before job start to align. | 2026-10-05 | 2026-10-05 | 2026-10-05 | 2027-01-11 | 65.5 | not_started |  |  |
| order.windows | procurement_long_leads | procurement_windows | windows_doors_weatherproofing | Place windows + exterior door order | general | work | 0.5 | 1 |  | 2 | windows_doors_weatherproofing 4R PM places order for (3) 36x60 windows + (1) transom + (1) exterior door. Stock windows assumed — flag for PM if custom. | 2026-10-12 | 2026-10-12 | 2026-10-12 | 2026-10-21 | 7 | not_started |  |  |
| wait.windows | procurement_long_leads | procurement_windows | windows_doors_weatherproofing | Windows + door supplier lead | general | lead_time | 0 | 0 |  | 0 | windows_doors_weatherproofing 4R Stock windows 21-day supplier delivery window. | 2026-10-12 | 2026-11-02 | 2026-10-12 | 2026-10-21 | 7 | not_started | 21 | order.windows FS |
| checkpoint.windows_arrived | procurement_long_leads | procurement_windows | windows_doors_weatherproofing | Windows + door delivered to site | general | milestone | 0 | 0 |  | 0 | windows_doors_weatherproofing 4R Arrival checkpoint gates windows install. | 2026-11-02 | 2026-11-02 | 2026-11-02 | 2026-11-11 | 7 | not_started |  | wait.windows FS |
| order.lvl | procurement_long_leads | procurement_lvl | structural_modifications | Order 3-ply 14" LVL beam | general | work | 0.5 | 1 |  | 2 | structural_modifications 4R LVL order at structural sign-off. | 2026-10-12 | 2026-10-12 | 2026-10-12 | 2026-11-04 | 17 | not_started |  |  |
| wait.lvl | procurement_long_leads | procurement_lvl | structural_modifications | LVL supplier lead | general | lead_time | 0 | 0 |  | 0 | structural_modifications 4R Standard LVL 1 week supplier but padded to 2 weeks for market fluctuation. | 2026-10-12 | 2026-10-26 | 2026-10-12 | 2026-11-04 | 17 | not_started | 14 | order.lvl FS |
| checkpoint.lvl_arrived | procurement_long_leads | procurement_lvl | structural_modifications | LVL delivered to site | general | milestone | 0 | 0 |  | 0 | structural_modifications 4R Arrival checkpoint gates LVL install. | 2026-10-26 | 2026-10-26 | 2026-10-26 | 2026-11-18 | 17 | not_started |  | wait.lvl FS |
| order.subpanel | procurement_long_leads | procurement_subpanel | electrical | Order 100A subpanel | general | work | 0.5 | 1 |  | 2 | electrical 4R Subpanel is a lead item. | 2026-10-12 | 2026-10-12 | 2026-10-12 | 2026-11-03 | 16 | not_started |  |  |
| wait.subpanel | procurement_long_leads | procurement_subpanel | electrical | Subpanel supplier lead | general | lead_time | 0 | 0 |  | 0 | electrical 4R Panel 7-14 day supplier window. | 2026-10-12 | 2026-10-22 | 2026-10-12 | 2026-11-03 | 16 | not_started | 10 | order.subpanel FS |
| checkpoint.subpanel_arrived | procurement_long_leads | procurement_subpanel | electrical | Subpanel delivered to site | general | milestone | 0 | 0 |  | 0 | electrical 4R Arrival gates rough electrical. | 2026-10-22 | 2026-10-22 | 2026-10-22 | 2026-11-13 | 16 | not_started |  | wait.subpanel FS |
| order.minisplit | procurement_long_leads | procurement_minisplit | hvac | Order mini-split unit | general | work | 0.5 | 1 |  | 2 | hvac 4R Mini-split ordered at dried-in timing per addition rules. | 2026-10-12 | 2026-10-12 | 2026-10-12 | 2026-12-11 | 42.5 | not_started |  |  |
| wait.minisplit | procurement_long_leads | procurement_minisplit | hvac | Mini-split supplier lead | general | lead_time | 0 | 0 |  | 0 | hvac 4R 7-14 day supplier window. | 2026-10-12 | 2026-10-22 | 2026-10-12 | 2026-12-14 | 42.5 | not_started | 10 | order.minisplit FS |
| checkpoint.minisplit_arrived | procurement_long_leads | procurement_minisplit | hvac | Mini-split delivered to site | general | milestone | 0 | 0 |  | 0 | hvac 4R Arrival gates mini-split install. | 2026-10-22 | 2026-10-22 | 2026-10-22 | 2026-12-28 | 42.5 | not_started |  | wait.minisplit FS |
| order.tankless | procurement_long_leads | procurement_tankless | hvac | Order tankless water heater | general | work | 0.5 | 1 |  | 2 | hvac 4R, 4H Tankless WH replaces existing per scope. Set before plumbing rough. | 2026-10-12 | 2026-10-12 | 2026-10-12 | 2026-12-29 | 52 | not_started |  |  |
| wait.tankless | procurement_long_leads | procurement_tankless | hvac | Tankless supplier lead | general | lead_time | 0 | 0 |  | 0 | hvac 4R 7-14 day supplier window. | 2026-10-12 | 2026-10-22 | 2026-10-12 | 2026-12-29 | 52 | not_started | 10 | order.tankless FS |
| checkpoint.tankless_arrived | procurement_long_leads | procurement_tankless | hvac | Tankless WH delivered to site | general | milestone | 0 | 0 |  | 0 | hvac 4R Arrival gates tank set. | 2026-10-22 | 2026-10-22 | 2026-10-22 | 2027-01-11 | 52 | not_started |  | wait.tankless FS |
| order.tile | procurement_long_leads | procurement_tile | master_bath | Order master bath tile | general | work | 0.5 | 1 |  | 2 | master_bath 4R Custom tile after selections locked. | 2026-10-12 | 2026-10-12 | 2026-10-12 | 2026-11-18 | 27.5 | not_started |  | checkpoint.selections_finalized FS |
| wait.tile | procurement_long_leads | procurement_tile | master_bath | Tile supplier lead | general | lead_time | 0 | 0 |  | 0 | master_bath 4R Custom tile 14-21 day supplier. | 2026-10-12 | 2026-11-02 | 2026-10-12 | 2026-11-19 | 27.5 | not_started | 21 | order.tile FS |
| checkpoint.tile_arrived | procurement_long_leads | procurement_tile | master_bath | Tile delivered to site | general | milestone | 0 | 0 |  | 0 | master_bath 4R Arrival gates tile install. | 2026-11-02 | 2026-11-02 | 2026-11-02 | 2026-12-14 | 27.5 | not_started |  | wait.tile FS |
| order.flooring | procurement_long_leads | procurement_flooring | interior_finish | Order LVP / hardwood flooring | general | work | 0.5 | 1 |  | 2 | interior_finish 4R Flooring order after selections locked. | 2026-10-12 | 2026-10-12 | 2026-10-12 | 2026-12-04 | 37.5 | not_started |  | checkpoint.selections_finalized FS |
| wait.flooring | procurement_long_leads | procurement_flooring | interior_finish | Flooring supplier lead | general | lead_time | 0 | 0 |  | 0 | interior_finish 4R Standard 1-2 week supplier. | 2026-10-12 | 2026-10-22 | 2026-10-12 | 2026-12-07 | 37.5 | not_started | 10 | order.flooring FS |
| checkpoint.flooring_arrived | procurement_long_leads | procurement_flooring | interior_finish | Flooring delivered to site | general | milestone | 0 | 0 |  | 0 | interior_finish 4R Arrival gates flooring install. | 2026-10-22 | 2026-10-22 | 2026-10-22 | 2026-12-17 | 37.5 | not_started |  | wait.flooring FS |
| order.cabinets | procurement_long_leads | procurement_cabinets | master_bath | Order vanity + master closet cabinetry | general | work | 0.5 | 1 |  | 2 | master_bath 4R Vanity + closet built-ins ordered after selections. | 2026-10-12 | 2026-10-12 | 2026-10-12 | 2026-11-18 | 27.5 | not_started |  | checkpoint.selections_finalized FS |
| wait.cabinets | procurement_long_leads | procurement_cabinets | master_bath | Cabinets supplier lead | general | lead_time | 0 | 0 |  | 0 | master_bath 4R Vanity typical 4-week supplier. | 2026-10-12 | 2026-11-09 | 2026-10-12 | 2026-11-19 | 27.5 | not_started | 28 | order.cabinets FS |
| checkpoint.cabinets_arrived | procurement_long_leads | procurement_cabinets | master_bath | Vanity + closet cabinets delivered | general | milestone | 0 | 0 |  | 0 | master_bath 4R Arrival gates cabinet install. | 2026-11-09 | 2026-11-09 | 2026-11-09 | 2026-12-21 | 27.5 | not_started |  | wait.cabinets FS |
| order.fixtures | procurement_long_leads | procurement_fixtures | master_bath | Order plumbing + light fixtures (recessed, vanity, fan) | general | work | 0.5 | 1 |  | 2 | master_bath 4R Fixtures ordered after selections locked. | 2026-10-12 | 2026-10-12 | 2026-10-12 | 2026-12-09 | 40.5 | not_started |  | checkpoint.selections_finalized FS |
| wait.fixtures | procurement_long_leads | procurement_fixtures | master_bath | Fixtures supplier lead | general | lead_time | 0 | 0 |  | 0 | master_bath 4R Standard 1-2 week. | 2026-10-12 | 2026-10-22 | 2026-10-12 | 2026-12-10 | 40.5 | not_started | 10 | order.fixtures FS |
| checkpoint.fixtures_arrived | procurement_long_leads | procurement_fixtures | master_bath | Fixtures delivered to site | general | milestone | 0 | 0 |  | 0 | master_bath 4R Arrival gates finish plumbing and finish electrical. | 2026-10-22 | 2026-10-22 | 2026-10-22 | 2026-12-22 | 40.5 | not_started |  | wait.fixtures FS |
| order.paint | procurement_long_leads | procurement_paint | interior_finish | Order paint (primer + finish coats) | general | work | 1 | 1 |  | 0 | interior_finish 4R Paint is short-lead; picked up ~1 week before paint phase 1. | 2026-10-12 | 2026-10-12 | 2026-10-12 | 2026-12-10 | 41 | not_started |  | checkpoint.selections_finalized FS |
| site.setup | site_prep | site_setup | demolition_site_work | Site protection setup, signage, staging | general | work | 0.5 | 2 |  | 1 | demolition_site_work Day 1 site setup, on-site anchor. | 2026-10-12 | 2026-10-12 | 2026-10-12 | 2026-10-12 | 0 | not_started |  |  |
| equipment.dumpster_arrive | site_prep | site_setup | demolition_site_work | Dumpster + porta-john delivered (day before demo) | general | work | 0.5 | 1 |  | 0 | demolition_site_work 4O Equipment lands day before demo phase. | 2026-10-12 | 2026-10-12 | 2026-10-12 | 2026-10-13 | 0.5 | not_started |  | checkpoint.equipment_confirmed_demo FS, site.setup FS |
| prep.heat_pump_relocate | site_prep | prep_work_before_demo | demolition_site_work | Relocate existing heat pump | hvac | work | 1 | 2 |  | 1 | demolition_site_work 4K Heat pump in the way of addition footprint. Must move BEFORE demo, not during. | 2026-10-12 | 2026-10-13 | 2026-10-12 | 2026-10-12 | 0 | not_started |  | site.setup FS |
| prep.electrical_disconnect_relocate | site_prep | prep_work_before_demo | demolition_site_work | Relocate existing electrical disconnect | electrical | work | 0.5 | 1 |  | 1 | demolition_site_work 4K Disconnect in the way of addition footprint. | 2026-10-12 | 2026-10-12 | 2026-10-12 | 2026-10-13 | 0.5 | not_started |  | site.setup FS |
| demo.sawcut_walkway | demo_and_protection | main_demo | demolition_site_work | Saw cut + remove concrete walkway, railroad ties, site obstructions | demo | work | 1 | 3 |  | 2 | demolition_site_work Selective demo of walkway + site obstructions. | 2026-10-13 | 2026-10-14 | 2026-10-13 | 2026-10-13 | 0 | not_started |  | equipment.dumpster_arrive FS, prep.heat_pump_relocate FS, prep.electrical_disconnect_relocate FS |
| demo.tie_in_open | demo_and_protection | main_demo | demolition_site_work | Open existing exterior wall at tie-in / expose bearing wall | demo | work | 1 | 3 |  | 0 | demolition_site_work Open existing wall for LVL install and addition tie-in. | 2026-10-14 | 2026-10-15 | 2026-10-14 | 2026-10-14 | 0 | not_started |  | demo.sawcut_walkway FS |
| demo.haul_out | demo_and_protection | main_demo | demolition_site_work | Haul-out, dump run | demo | work | 0.5 | 2 |  | 0 | demolition_site_work Consolidated haul-out. | 2026-10-15 | 2026-10-15 | 2026-10-15 | 2026-10-15 | 0 | not_started |  | demo.tie_in_open FS |
| excavation.dig | structural_and_shell | foundation | excavation_foundation | Excavate footings + slab area | excavation | work | 2 | 2 |  | 2 | excavation_foundation TDEC Excavation gated on TDEC permit + demo done + equipment on hand. | 2026-10-16 | 2026-10-19 | 2026-10-16 | 2026-10-16 | 0 | not_started |  | demo.haul_out FS, checkpoint.equipment_confirmed_excavation FS, permit.tdec_septic FS |
| foundation.form_and_prep | structural_and_shell | foundation | excavation_foundation | Form footings, gravel base, vapor barrier, rebar/mesh | concrete | work | 1.5 | 4 |  | 1 | excavation_foundation 4B Monolithic prep: footings + slab prep in one task. | 2026-10-20 | 2026-10-21 | 2026-10-20 | 2026-10-20 | 0 | not_started |  | excavation.dig FS |
| inspect.footing | structural_and_shell | foundation | excavation_foundation | Footing/slab prep inspection | inspector | inspection | 0.5 | 1 |  | 1 | excavation_foundation 4B Single inspection covers footing and slab prep for monolithic pour. | 2026-10-22 | 2026-10-22 | 2026-10-22 | 2026-10-22 | 0 | not_started |  | foundation.form_and_prep FS 1 |
| foundation.monolithic_pour | structural_and_shell | foundation | excavation_foundation | Monolithic pour (footings + slab) | concrete | work | 1 | 4 |  | 0 | excavation_foundation 4B Single monolithic pour per Will default. | 2026-10-23 | 2026-10-23 | 2026-10-23 | 2026-10-23 | 0 | not_started |  | inspect.footing FS |
| foundation.cure | structural_and_shell | foundation | excavation_foundation | Concrete cure | general | lead_time | 0 | 0 |  | 0 | excavation_foundation 4B 2 calendar-day cure. | 2026-10-26 | 2026-10-27 | 2026-10-26 | 2026-10-26 | 0 | not_started | 2 | foundation.monolithic_pour FS |
| structural.temp_shoring | structural_and_shell | lvl_subchain | structural_modifications | Install temporary shoring at existing bearing wall | framing | work | 1 | 2 |  | 1 | structural_modifications LVL-subchain Temp shoring before LVL install. | 2026-10-15 | 2026-10-16 | 2026-10-15 | 2026-11-17 | 23 | not_started |  | demo.tie_in_open FS |
| structural.install_lvl | structural_and_shell | lvl_subchain | structural_modifications | Install 3-ply 14" LVL beam | framing | work | 1.5 | 2 |  | 0 | structural_modifications LVL-subchain LVL install after shoring + LVL on site. | 2026-10-26 | 2026-10-27 | 2026-10-26 | 2026-11-18 | 17 | not_started |  | structural.temp_shoring FS, checkpoint.lvl_arrived FS |
| structural.remove_temp_shoring | structural_and_shell | lvl_subchain | structural_modifications | Remove temporary shoring | framing | work | 0.5 | 2 |  | 0 | structural_modifications LVL-subchain Remove shoring once LVL bearing. | 2026-10-28 | 2026-10-28 | 2026-10-28 | 2026-11-20 | 17 | not_started |  | structural.install_lvl FS |
| framing.floor_system | structural_and_shell | framing | framing | Floor system framing + subfloor glue/fasten | framing | work | 3 | 3 |  | 2 | framing Floor system sits on new foundation. Independent of LVL subchain per addition rules. | 2026-10-28 | 2026-10-30 | 2026-10-28 | 2026-10-28 | 0 | not_started |  | foundation.cure FS |
| framing.basement_walls | structural_and_shell | framing | framing | Basement 2x4 walls @ 16 O.C. | framing | work | 2 | 3 |  | 0 | framing Basement walls parallel with floor system. | 2026-10-28 | 2026-10-29 | 2026-10-28 | 2027-01-07 | 46.5 | not_started |  | foundation.cure FS |
| framing.exterior_walls | structural_and_shell | framing | framing | Exterior/interior walls (2x4 @ 16 O.C.), elevator shaft framing | framing | work | 4 | 3 |  | 0 | framing 2nd floor walls + 4x4 elevator shaft framing. | 2026-11-02 | 2026-11-05 | 2026-11-02 | 2026-11-02 | 0 | not_started |  | framing.floor_system FS |
| framing.roof | structural_and_shell | framing | roof_framing_roofing | Roof framing (stick-frame gable, 3/12 tying into existing 6/12) | framing | work | 3 | 3 |  | 1 | roof_framing_roofing truss-conditional Stick-frame default: scope says 'truss or rafter TBD in design phase' — ambiguous, so default to stick-frame for small (~300 sqft) addition. No trusses procurement task. | 2026-11-06 | 2026-11-10 | 2026-11-06 | 2026-11-06 | 0 | not_started |  | framing.exterior_walls FS |
| roof.concealed_buffer | structural_and_shell | roof_tie_in | roof_framing_roofing | Concealed roof tie-in discovery buffer | general | lead_time | 0 | 0 |  | 0 | roof_framing_roofing concealed-tie-in Reserve for hidden existing-rafter change orders. Runs concurrent with framing.roof. | 2026-11-09 | 2026-11-11 | 2026-11-09 | 2027-01-06 | 37.5 | not_started | 3 | framing.roof SS 1 |
| framing.sheathing | structural_and_shell | framing | roof_framing_roofing | Roof + wall sheathing, WRB | framing | work | 1.5 | 3 |  | 0 | roof_framing_roofing Sheathing + WRB after roof framed. | 2026-11-11 | 2026-11-12 | 2026-11-11 | 2026-11-11 | 0 | not_started |  | framing.roof FS |
| windows.install | structural_and_shell | envelope | windows_doors_weatherproofing | Install (4) windows + (1) exterior door | windows_doors | work | 2 | 2 |  | 1 | windows_doors_weatherproofing 4J Windows install as soon as roof framed, in parallel with underlayment. NOT after dried-in milestone. | 2026-11-11 | 2026-11-12 | 2026-11-11 | 2026-11-11 | 0.5 | not_started |  | framing.roof FS, checkpoint.windows_arrived FS |
| roofing.underlayment | structural_and_shell | roofing | roof_framing_roofing | Roof underlayment, drip edge, flashing | roofing | work | 1 | 3 |  | 1 | roof_framing_roofing Synthetic underlayment + flashing. Building weatherproof after this + windows. | 2026-11-12 | 2026-11-13 | 2026-11-12 | 2026-11-12 | 0 | not_started |  | framing.sheathing FS |
| roofing.shingles | structural_and_shell | roofing | roof_framing_roofing | Install architectural asphalt shingles, ridge vent, fascia, gutters | roofing | work | 1 | 3 |  | 0 | roof_framing_roofing Shingles + soffit/fascia/gutters (same crew per addition rule). | 2026-11-13 | 2026-11-16 | 2026-11-13 | 2027-01-05 | 32 | not_started |  | roofing.underlayment FS |
| plumbing.wh_vent | structural_and_shell | roofing | demolition_site_work | Extend existing gas WH vent through new roof | plumbing | work | 0.5 | 1 |  | 0 | demolition_site_work Code-required vent extension. Existing WH stays — do NOT emit tank set. | 2026-11-16 | 2026-11-16 | 2026-11-16 | 2027-01-11 | 34.5 | not_started |  | roofing.shingles FS |
| milestone.dried_in | structural_and_shell | roofing | roof_framing_roofing | Dried-in milestone | general | milestone | 0 | 0 |  | 0 | roof_framing_roofing Dried-in gates exterior siding. Does NOT gate MEPs. | 2026-11-16 | 2026-11-16 | 2026-11-16 | 2027-01-06 | 32 | not_started |  | roofing.shingles FS, windows.install FS |
| exterior.siding_trim_gutters | structural_and_shell | exterior_finishes | exterior_finishes | Vinyl siding + trim (same crew continuous block) | siding | work | 3 | 3 |  | 1 | exterior_finishes same-crew-exterior Vinyl siding + trim + gutter integration same crew. Runs in parallel with interior MEPs. | 2026-11-16 | 2026-11-19 | 2026-11-16 | 2027-01-06 | 32 | not_started |  | milestone.dried_in FS |
| electrical.subpanel_install | rough_trades | rough_electrical | electrical | Install 100A subpanel | electrical | work | 1 | 1 |  | 1 | electrical Subpanel install: 1d, 1 person. | 2026-11-13 | 2026-11-16 | 2026-11-13 | 2026-11-13 | 0 | not_started |  | roofing.underlayment FS, windows.install FS, checkpoint.subpanel_arrived FS, prep.amperage_check FS |
| electrical.rough_in | rough_trades | rough_electrical | electrical | Rough electrical (~12 recessed, outlets, dedicated elevator circuit, hall switch relocate) | electrical | work | 3 | 2 |  | 0 | electrical 4I Rough electrical gated on weatherproof envelope (underlayment + windows), NOT on dried-in. | 2026-11-16 | 2026-11-19 | 2026-11-16 | 2026-11-16 | 0 | not_started |  | electrical.subpanel_install FS |
| plumbing.rough_in | rough_trades | rough_plumbing | plumbing | Rough plumbing (master bath + W/D relocation) | plumbing | work | 3 | 2 |  | 0 | plumbing 4I Rough plumbing gated on weatherproof envelope. SS+1 with electrical for parallel rough. Existing WH stays — no tank set task per 4H. | 2026-11-17 | 2026-11-20 | 2026-11-17 | 2026-11-17 | 0 | not_started |  | roofing.underlayment FS, windows.install FS, electrical.rough_in SS 1 |
| hvac.minisplit_rough | rough_trades | rough_hvac | hvac | Mini-split line-set rough | hvac | work | 0.5 | 1 |  | 0 | hvac 4G, 4I Mini-split rough is line set only: 0.5d, 1 person. Runs in parallel with electrical/plumbing. | 2026-11-13 | 2026-11-13 | 2026-11-13 | 2026-11-20 | 4.5 | not_started |  | roofing.underlayment FS, windows.install FS |
| inspect.rough_bundled | rough_inspections | rough_inspections | framing | Bundled rough inspection (electrical, plumbing, HVAC, framing) | inspector | inspection | 0.5 | 1 |  | 1 | framing 4C One inspector, one day: rough MEP + framing bundled. | 2026-11-23 | 2026-11-23 | 2026-11-23 | 2026-11-23 | 0 | not_started |  | electrical.rough_in FS 1, plumbing.rough_in FS 1, hvac.minisplit_rough FS 1, structural.remove_temp_shoring FS 1 |
| buffer.post_rough_inspection | rough_inspections | rough_inspections | framing | Post-inspection punch buffer | general | lead_time | 0 | 0 |  | 0 | framing 4D 2-day punch buffer: trades return for fixes, then re-inspect. | 2026-11-24 | 2026-11-25 | 2026-11-24 | 2026-11-24 | 0 | not_started | 2 | inspect.rough_bundled FS |

| id | phase_id | component_id | section_id | name | trade | kind | duration_days | crew_size | lead_up_working_days | derived_from | scheduled_start | scheduled_end | earliest_start | latest_start | float_days | status | depends_on |
| --- | --- | --- | --- | --- | --- | --- | --- | --- | --- | --- | --- | --- | --- | --- | --- | --- | --- |
| insulation.air_seal | insulation_and_drywall | insulation | insulation_air_sealing | Insulation + air sealing | insulation | work | 1 | 2 | 1 | insulation_air_sealing Typical addition insulation ~1 day. | 2026-11-30 | 2026-11-30 | 2026-11-30 | 2026-11-30 | 0 | not_started | buffer.post_rough_inspection FS |
| inspect.insulation | insulation_and_drywall | insulation | insulation_air_sealing | Insulation inspection | inspector | inspection | 0.5 | 1 | 1 | insulation_air_sealing Insulation inspection before drywall. | 2026-12-02 | 2026-12-02 | 2026-12-02 | 2026-12-02 | 0 | not_started | insulation.air_seal FS 1 |
| equipment.drywall_dumpster | insulation_and_drywall | drywall | drywall | Dumpster swap for drywall phase | general | work | 0.5 | 1 | 0 | drywall 4O Dumpster arrives day before drywall hang. | 2026-12-02 | 2026-12-02 | 2026-12-02 | 2026-12-02 | 0 | not_started | inspect.insulation FS |
| drywall.consolidated | insulation_and_drywall | drywall | drywall | Drywall hang, tape, sand (new addition + existing bedroom + hall bath patches) | drywall | work | 6 | 3 | 2 | drywall drywall-consolidate Consolidated hang + tape + sand for new + retrofit zones in one visit. | 2026-12-03 | 2026-12-10 | 2026-12-03 | 2026-12-03 | 0 | not_started | equipment.drywall_dumpster FS, inspect.insulation FS |
| paint.phase_1 | insulation_and_drywall | paint_phase1 | interior_finish | Paint phase 1: primer (walls+ceilings) AM + ceiling finish PM | paint | work | 1 | 2 | 0 | interior_finish 4E 1d covers primer (walls + ceilings) AM + ceiling finish coat PM same day per Will's standard sequence. | 2026-12-11 | 2026-12-11 | 2026-12-11 | 2026-12-11 | 0 | not_started | drywall.consolidated FS, order.paint FS |
| tile.shower_substrate | interior_finishes | tile | master_bath | Master bath shower substrate (Kerdi/Wedi waterproofing) | tile | work | 1 | 2 | 1 | master_bath Waterproofing per TCR standard before tile. | 2026-12-14 | 2026-12-14 | 2026-12-14 | 2026-12-14 | 0 | not_started | paint.phase_1 FS, checkpoint.tile_arrived FS |
| tile.install | interior_finishes | tile | master_bath | Master bath tile install (shower walls, floor) | tile | work | 4 | 2 | 0 | master_bath Custom tile shower install; bumped 25% for finish detail. | 2026-12-15 | 2026-12-18 | 2026-12-15 | 2026-12-15 | 0 | not_started | tile.shower_substrate FS |
| tile.grout_seal | interior_finishes | tile | master_bath | Tile grout + seal | tile | work | 1 | 2 | 0 | master_bath Grout after tile set. | 2026-12-22 | 2026-12-22 | 2026-12-22 | 2026-12-22 | 0 | not_started | tile.install FS 1 |
| flooring.install | interior_finishes | flooring | interior_finish | Flooring install (LVP/hardwood in bedroom, closet, non-wet areas) | flooring | work | 2 | 2 | 1 | interior_finish 4L Flooring after paint phase 1 and after wet-area substrate. | 2026-12-15 | 2026-12-16 | 2026-12-15 | 2026-12-17 | 2 | not_started | paint.phase_1 FS, tile.shower_substrate FS, checkpoint.flooring_arrived FS |
| trim.install | interior_finishes | trim | interior_finish | Trim carpentry (base, case, closet built-ins) | trim_carpentry | work | 3 | 2 | 0 | interior_finish 4L Trim after flooring. | 2026-12-17 | 2026-12-21 | 2026-12-17 | 2026-12-22 | 3 | not_started | flooring.install FS |
| cabinets.install | interior_finishes | cabinets | master_bath | Vanity + master closet cabinet install | cabinets | work | 1 | 2 | 0 | master_bath Vanity + closet cabinets after floor + paint 1. | 2026-12-17 | 2026-12-17 | 2026-12-17 | 2026-12-21 | 2 | not_started | flooring.install FS, paint.phase_1 FS, checkpoint.cabinets_arrived FS |
| retrofit.hall_bath_repaint | interior_finishes | hall_bath_mod | hall_bath_closeout | Hall bath modification: drywall patch touch-ups + repaint (retrofit) | paint | work | 1 | 2 | 0 | hall_bath_closeout retrofit Existing hall bath mods flagged retrofit (Signal B: 'existing'). Repaint scoped separately per TCR rule. | 2026-12-11 | 2026-12-11 | 2026-12-11 | 2027-01-08 | 17.5 | not_started | drywall.consolidated FS |
| paint.phase_2 | interior_finishes | paint_phase2 | interior_finish | Paint phase 2: finish wall coat (spot, caulk, finish) | paint | work | 1 | 2 | 0 | interior_finish 4F Paint phase 2 gated on every finish trade; last work task on site. | 2026-12-29 | 2026-12-29 | 2026-12-29 | 2026-12-29 | 0 | not_started | trim.install FS, flooring.install FS, cabinets.install FS, tile.grout_seal FS, plumbing.finish FS, electrical.finish FS, hvac.minisplit_install FS |
| electrical.finish | finish_trades | finish_electrical | electrical | Finish electrical (trim out, recessed, vanity lights, fan/light, dimmers, outlets) | electrical | work | 2 | 2 | 0 | electrical 4L Finish electrical after paint phase 1, cabinets, and fixtures on site. | 2026-12-18 | 2026-12-21 | 2026-12-18 | 2026-12-22 | 2 | not_started | paint.phase_1 FS, cabinets.install FS, checkpoint.fixtures_arrived FS |
| plumbing.finish | finish_trades | finish_plumbing | plumbing | Finish plumbing (vanity hookup, shower fixtures, W/D) | plumbing | work | 2 | 2 | 0 | plumbing 4L Finish plumbing after cabinets, flooring, tile grout. | 2026-12-23 | 2026-12-28 | 2026-12-23 | 2026-12-23 | 0 | not_started | cabinets.install FS, flooring.install FS, tile.grout_seal FS, checkpoint.fixtures_arrived FS |
| hvac.minisplit_install | finish_trades | finish_hvac | hvac | Mini-split install (indoor head + outdoor connect) | hvac | work | 1 | 1 | 0 | hvac 4N Mini-split install 1d/1 person. Serialized after electrical.finish per 4N stagger rule to preserve 2-interior-trade cap. | 2026-12-22 | 2026-12-22 | 2026-12-22 | 2026-12-28 | 2 | not_started | paint.phase_1 FS, electrical.finish FS, checkpoint.minisplit_arrived FS |
| milestone.substantial_completion | interior_finishes | paint_phase2 | interior_finish | Substantial completion | general | milestone | 0 | 0 | 0 | interior_finish 4F Fires when paint phase 2 completes. | 2026-12-30 | 2026-12-30 | 2026-12-30 | 2026-12-30 | 0 | not_started | paint.phase_2 FS |
| closeout.pm_walkthrough | closeout | punch_and_final | hall_bath_closeout | PM walkthrough with customer; produce punch list | pm | work | 0.5 | 1 | 1 | hall_bath_closeout PM walkthrough right after substantial completion. | 2026-12-30 | 2026-12-30 | 2026-12-30 | 2026-12-30 | 0 | not_started | milestone.substantial_completion FS |
| closeout.punch_list | closeout | punch_and_final | hall_bath_closeout | Punch list work (multi-trade returns) | general | work | 2 | 2 | 0 | hall_bath_closeout Punch-list return trips. | 2026-12-30 | 2027-01-04 | 2026-12-30 | 2026-12-30 | 0 | not_started | closeout.pm_walkthrough FS |
| closeout.final_clean | closeout | punch_and_final | hall_bath_closeout | Final clean | cleanup | work | 1 | 2 | 0 | hall_bath_closeout Final clean before final inspection. | 2027-01-04 | 2027-01-05 | 2027-01-04 | 2027-01-04 | 0 | not_started | closeout.punch_list FS |
| inspect.final_bundled | closeout | punch_and_final | hall_bath_closeout | Bundled final inspection (E/P/M + building) | inspector | inspection | 0.5 | 1 | 1 | hall_bath_closeout 4M Bundled final: E/P/M + building, one inspector, one day. | 2027-01-07 | 2027-01-07 | 2027-01-07 | 2027-01-07 | 0 | not_started | closeout.final_clean FS 2 |
| closeout.wills_walkthrough | closeout | punch_and_final | hall_bath_closeout | Will's final walkthrough with customer + handoff | general | work | 0.5 | 1 | 1 | hall_bath_closeout wills-walkthrough Will's personal final walkthrough one day after bundled final inspection. | 2027-01-11 | 2027-01-11 | 2027-01-11 | 2027-01-11 | 0 | not_started | inspect.final_bundled FS 1 |
