| id | phase_id | component_id | section_id | name | trade | kind | duration_days | crew_size | pre_construction_offset_working_days | lead_up_working_days | derived_from | scheduled_start | scheduled_end | earliest_start | latest_start | float_days | status | lead_time_days | depends_on |
| --- | --- | --- | --- | --- | --- | --- | --- | --- | --- | --- | --- | --- | --- | --- | --- | --- | --- | --- | --- |
| general.permitting | pre_construction | permits_and_planning | general_conditions | Permit walk-in | general | work | 1 | 1 | 15 | 2 | general_conditions 4A 1-day walk-in permit task; Will pulls same-day ~90% of the time. | 2026-09-21 | 2026-09-21 | 2026-09-21 | 2026-10-09 | 14.5 | not_started |  |  |
| permit.tdec_septic | pre_construction | tdec_septic | general_conditions | TDEC septic permit process | general | lead_time | 0 | 0 | 30 | 2 | general_conditions addition.tdec Scope explicitly names TDEC septic inspection. 6-week process anchored via offset at start of PC. Also gates excavation. | 2026-08-28 | 2026-10-09 | 2026-08-28 | 2026-09-02 | 3 | not_started | 42 |  |
| prep.amperage_check | pre_construction | amperage_check | electrical | Verify existing service amperage | general | work | 0.5 | 1 | 15 | 1 | electrical addition.amperage_check New 100A subpanel in scope — verify existing main service has capacity before signed contract. | 2026-09-21 | 2026-09-21 | 2026-09-21 | 2027-01-08 | 74 | not_started |  |  |
| checkpoint.selections_finalized | pre_construction | checkpoints | general_conditions | Customer selections finalized | general | milestone | 0 | 0 | 15 | 5 | general_conditions 4P PM confirms all customer selections locked 3 weeks before on-site. | 2026-09-21 | 2026-09-21 | 2026-09-21 | 2026-10-21 | 22 | not_started |  |  |
| checkpoint.equipment_confirmed_demo | pre_construction | checkpoints | demolition_site_work | Equipment confirmed — demo | general | milestone | 0 | 0 | 10 | 2 | demolition_site_work 4O PM confirms dumpster + demo equipment 2 weeks before demo phase. | 2026-09-28 | 2026-09-28 | 2026-09-28 | 2026-10-12 | 10 | not_started |  |  |
| checkpoint.equipment_confirmed_excavation | pre_construction | checkpoints | excavation_foundation | Equipment confirmed — excavation | general | milestone | 0 | 0 | 10 | 2 | excavation_foundation 4O PM confirms mini-ex + concrete supplier 2 weeks before excavation. | 2026-09-28 | 2026-09-28 | 2026-09-28 | 2026-10-15 | 13 | not_started |  |  |
| checkpoint.equipment_confirmed_roof | pre_construction | checkpoints | roof_framing_roofing | Equipment confirmed — roof | general | milestone | 0 | 0 | 10 | 2 | roof_framing_roofing 4O PM confirms scaffolding + shingle delivery 2 weeks before roof phase. | 2026-09-28 | 2026-09-28 | 2026-09-28 | 2026-11-12 | 33 | not_started |  |  |
| checkpoint.equipment_confirmed_drywall | pre_construction | checkpoints | drywall | Equipment confirmed — drywall | general | milestone | 0 | 0 | 10 | 2 | drywall 4O PM confirms drywall lift + second dumpster 2 weeks before drywall. | 2026-09-28 | 2026-09-28 | 2026-09-28 | 2026-12-02 | 45.5 | not_started |  |  |
| order.windows | procurement_long_leads | procurement_windows | windows_doors_weatherproofing | Order windows & exterior door | general | work | 0.5 | 1 |  | 2 | windows_doors_weatherproofing 4R PM places windows order (3-task pattern step 1). Stock windows assumed. | 2026-10-12 | 2026-10-12 | 2026-10-12 | 2026-10-21 | 7 | not_started |  | checkpoint.selections_finalized FS |
| wait.windows | procurement_long_leads | procurement_windows | windows_doors_weatherproofing | Windows supplier lead | general | lead_time | 0 | 0 |  | 0 | windows_doors_weatherproofing 4R 21-day supplier delivery window for stock windows. | 2026-10-12 | 2026-11-02 | 2026-10-12 | 2026-10-21 | 7 | not_started | 21 | order.windows FS |
| checkpoint.windows_arrived | procurement_long_leads | procurement_windows | windows_doors_weatherproofing | Windows delivered | general | milestone | 0 | 0 |  | 0 | windows_doors_weatherproofing 4R PM confirms windows delivered. | 2026-11-02 | 2026-11-02 | 2026-11-02 | 2026-11-11 | 7 | not_started |  | wait.windows FS |
| order.lvl | procurement_long_leads | procurement_lvl | structural_modifications | Order LVL beam | general | work | 0.5 | 1 |  | 2 | structural_modifications 4R, addition.lvl 3-ply 14" LVL beam. Default 14-day safety lead. | 2026-10-12 | 2026-10-12 | 2026-10-12 | 2026-11-03 | 16 | not_started |  |  |
| wait.lvl | procurement_long_leads | procurement_lvl | structural_modifications | LVL supplier lead | general | lead_time | 0 | 0 |  | 0 | structural_modifications 4R Standard LVL 2-week safety window. | 2026-10-12 | 2026-10-26 | 2026-10-12 | 2026-11-03 | 16 | not_started | 14 | order.lvl FS |
| checkpoint.lvl_arrived | procurement_long_leads | procurement_lvl | structural_modifications | LVL delivered | general | milestone | 0 | 0 |  | 0 | structural_modifications 4R PM confirms LVL beam on site. | 2026-10-26 | 2026-10-26 | 2026-10-26 | 2026-11-17 | 16 | not_started |  | wait.lvl FS |
| order.subpanel | procurement_long_leads | procurement_subpanel | electrical | Order 100A subpanel | general | work | 0.5 | 1 |  | 2 | electrical 4R Order 100A subpanel. | 2026-10-12 | 2026-10-12 | 2026-10-12 | 2026-11-03 | 16 | not_started |  |  |
| wait.subpanel | procurement_long_leads | procurement_subpanel | electrical | Subpanel supplier lead | general | lead_time | 0 | 0 |  | 0 | electrical 4R 10 calendar days for electrical panel. | 2026-10-12 | 2026-10-22 | 2026-10-12 | 2026-11-03 | 16 | not_started | 10 | order.subpanel FS |
| checkpoint.subpanel_arrived | procurement_long_leads | procurement_subpanel | electrical | Subpanel delivered | general | milestone | 0 | 0 |  | 0 | electrical 4R PM confirms subpanel on site. | 2026-10-22 | 2026-10-22 | 2026-10-22 | 2026-11-13 | 16 | not_started |  | wait.subpanel FS |
| order.minisplit | procurement_long_leads | procurement_minisplit | hvac | Order mini-split + tankless WH | general | work | 0.5 | 1 |  | 2 | hvac 4R Order mini-split unit and tankless WH. Ordered at dried-in per rules. | 2026-10-12 | 2026-10-12 | 2026-10-12 | 2026-11-03 | 16.5 | not_started |  |  |
| wait.minisplit | procurement_long_leads | procurement_minisplit | hvac | Mini-split supplier lead | general | lead_time | 0 | 0 |  | 0 | hvac 4R ~10 calendar days for mini-split + tankless. | 2026-10-12 | 2026-10-22 | 2026-10-12 | 2026-11-04 | 16.5 | not_started | 10 | order.minisplit FS |
| checkpoint.minisplit_arrived | procurement_long_leads | procurement_minisplit | hvac | Mini-split & tankless delivered | general | milestone | 0 | 0 |  | 0 | hvac 4R PM confirms mini-split and tankless on site. | 2026-10-22 | 2026-10-22 | 2026-10-22 | 2026-11-16 | 16.5 | not_started |  | wait.minisplit FS |
| order.tile | procurement_long_leads | procurement_tile | master_bath | Order tile | general | work | 0.5 | 1 |  | 2 | master_bath 4R Order tile ~3 weeks before tile install. | 2026-10-12 | 2026-10-12 | 2026-10-12 | 2026-11-25 | 32.5 | not_started |  | checkpoint.selections_finalized FS |
| wait.tile | procurement_long_leads | procurement_tile | master_bath | Tile supplier lead | general | lead_time | 0 | 0 |  | 0 | master_bath 4R 14 calendar days for tile. | 2026-10-12 | 2026-10-26 | 2026-10-12 | 2026-11-30 | 32.5 | not_started | 14 | order.tile FS |
| checkpoint.tile_arrived | procurement_long_leads | procurement_tile | master_bath | Tile delivered | general | milestone | 0 | 0 |  | 0 | master_bath 4R PM confirms tile on site. | 2026-10-26 | 2026-10-26 | 2026-10-26 | 2026-12-14 | 32.5 | not_started |  | wait.tile FS |
| order.flooring | procurement_long_leads | procurement_flooring | interior_finish | Order flooring (LVP) | general | work | 0.5 | 1 |  | 2 | interior_finish 4R LVP flooring ordered ~1 week before install. | 2026-10-12 | 2026-10-12 | 2026-10-12 | 2026-12-09 | 40.5 | not_started |  | checkpoint.selections_finalized FS |
| wait.flooring | procurement_long_leads | procurement_flooring | interior_finish | Flooring supplier lead | general | lead_time | 0 | 0 |  | 0 | interior_finish 4R Standard LVP delivery window. | 2026-10-12 | 2026-10-19 | 2026-10-12 | 2026-12-10 | 40.5 | not_started | 7 | order.flooring FS |
| checkpoint.flooring_arrived | procurement_long_leads | procurement_flooring | interior_finish | Flooring delivered | general | milestone | 0 | 0 |  | 0 | interior_finish 4R PM confirms flooring on site. | 2026-10-19 | 2026-10-19 | 2026-10-19 | 2026-12-17 | 40.5 | not_started |  | wait.flooring FS |
| order.paint | procurement_long_leads | procurement_paint | interior_finish | Order paint | general | work | 0.5 | 1 |  | 0 | interior_finish 4R Paint is short-lead stock item; single order task 1 week before use. | 2026-10-12 | 2026-10-12 | 2026-10-12 | 2026-12-10 | 41.5 | not_started |  | checkpoint.selections_finalized FS |
| order.vanity | procurement_long_leads | procurement_vanity | master_bath | Order vanity & bath fixtures | general | work | 0.5 | 1 |  | 2 | master_bath 4R Order vanity + fixtures. | 2026-10-12 | 2026-10-12 | 2026-10-12 | 2026-12-10 | 41 | not_started |  | checkpoint.selections_finalized FS |
| wait.vanity | procurement_long_leads | procurement_vanity | master_bath | Vanity supplier lead | general | lead_time | 0 | 0 |  | 0 | master_bath 4R 10 calendar days for stock vanity + fixtures. | 2026-10-12 | 2026-10-22 | 2026-10-12 | 2026-12-10 | 41 | not_started | 10 | order.vanity FS |
| checkpoint.vanity_arrived | procurement_long_leads | procurement_vanity | master_bath | Vanity & fixtures delivered | general | milestone | 0 | 0 |  | 0 | master_bath 4R PM confirms vanity + fixtures on site. | 2026-10-22 | 2026-10-22 | 2026-10-22 | 2026-12-22 | 41 | not_started |  | wait.vanity FS |
| equipment.dumpster_arrive | site_prep | site_setup | demolition_site_work | Dumpster delivery | general | work | 0.5 | 1 |  | 0 | demolition_site_work 4O Dumpster lands day before demo. | 2026-10-12 | 2026-10-12 | 2026-10-12 | 2026-10-12 | 0 | not_started |  | checkpoint.equipment_confirmed_demo FS |
| general.site_setup | site_prep | site_setup | general_conditions | Site protection & setup | general | work | 0.5 | 2 |  | 2 | general_conditions site_prep Establish site protection, staging, and safety. | 2026-10-12 | 2026-10-12 | 2026-10-12 | 2026-10-12 | 0 | not_started |  | general.permitting FS, equipment.dumpster_arrive FS |
| prep.heat_pump_relocate | site_prep | prep_work_before_demo | demolition_site_work | Relocate existing heat pump | hvac | work | 1 | 2 |  | 2 | demolition_site_work 4K, addition.heat_pump Existing heat pump in addition footprint must be relocated BEFORE main demo begins. | 2026-10-13 | 2026-10-13 | 2026-10-13 | 2026-10-13 | 0 | not_started |  | general.site_setup FS |
| prep.electrical_disconnect_relocate | site_prep | prep_work_before_demo | demolition_site_work | Relocate electrical disconnect | electrical | work | 0.5 | 1 |  | 1 | demolition_site_work 4K Electrical disconnect in addition footprint relocated before demo. | 2026-10-13 | 2026-10-13 | 2026-10-13 | 2026-10-13 | 0.5 | not_started |  | general.site_setup FS |
| demo.sawcut_walkway | demo_and_protection | demo_new_construction | demolition_site_work | Saw-cut concrete walkway & remove obstructions | demo | work | 1 | 3 |  | 2 | demolition_site_work demo Concrete saw-cut + railroad tie removal for addition footprint. | 2026-10-14 | 2026-10-14 | 2026-10-14 | 2026-10-14 | 0 | not_started |  | prep.heat_pump_relocate FS, prep.electrical_disconnect_relocate FS |
| demo.tie_in_open | demo_and_protection | demo_new_construction | demolition_site_work | Open tie-in wall/roof line | demo | work | 1 | 3 |  | 0 | demolition_site_work demo Open the existing wall/roof where addition ties in. | 2026-10-15 | 2026-10-15 | 2026-10-15 | 2027-01-07 | 55.5 | not_started |  | demo.sawcut_walkway FS |
| demo.expose_bearing_wall | demo_and_protection | demo_retrofit | structural_modifications | Expose existing load-bearing wall | demo | work | 1 | 2 |  | 1 | structural_modifications lvl_subchain Expose the existing load-bearing wall to prep for LVL install (independent retrofit). | 2026-10-15 | 2026-10-15 | 2026-10-15 | 2026-11-13 | 21.5 | not_started |  | demo.sawcut_walkway FS |
| demo.hall_bath_prep | demo_and_protection | demo_retrofit | hall_bath_closeout | Hall bath retrofit prep demo | demo | work | 0.5 | 2 |  | 1 | hall_bath_closeout retrofit Hall bath is mentioned in scope but is not in the addition objective areas — retrofit demo isolated. | 2026-10-13 | 2026-10-13 | 2026-10-13 | 2027-01-08 | 58 | not_started |  | general.site_setup FS |
| excavation.dig | structural_and_shell | foundation | excavation_foundation | Excavate footings/slab | excavation | work | 2 | 2 |  | 2 | excavation_foundation excavation Mini-ex dig for footings and slab. Gated by TDEC per addition rules. | 2026-10-15 | 2026-10-16 | 2026-10-15 | 2026-10-15 | 0 | not_started |  | demo.sawcut_walkway FS, checkpoint.equipment_confirmed_excavation FS, permit.tdec_septic FS |
| foundation.form_and_prep | structural_and_shell | foundation | excavation_foundation | Form footings, gravel, vapor, rebar | concrete | work | 1.5 | 4 |  | 1 | excavation_foundation 4B Form footings, place gravel base, vapor barrier, rebar in one task for monolithic pour. | 2026-10-19 | 2026-10-20 | 2026-10-19 | 2026-10-19 | 0 | not_started |  | excavation.dig FS |
| inspect.footing | structural_and_shell | foundation | excavation_foundation | Footing inspection | inspector | inspection | 0.5 | 1 |  | 1 | excavation_foundation 4B, inspection.footing Single footing inspection covers footings and slab prep (monolithic). | 2026-10-21 | 2026-10-21 | 2026-10-21 | 2026-10-21 | 0 | not_started |  | foundation.form_and_prep FS 1 |
| foundation.monolithic_pour | structural_and_shell | foundation | excavation_foundation | Monolithic foundation pour | concrete | work | 1 | 4 |  | 1 | excavation_foundation 4B Footings + slab in ONE pour. Default per Will. | 2026-10-22 | 2026-10-22 | 2026-10-22 | 2026-10-22 | 0 | not_started |  | inspect.footing FS |
| foundation.cure | structural_and_shell | foundation | excavation_foundation | Concrete cure | general | lead_time | 0 | 0 |  | 0 | excavation_foundation 4B 2-calendar-day cure before framing loads. | 2026-10-23 | 2026-10-26 | 2026-10-23 | 2026-10-23 | 0 | not_started | 2 | foundation.monolithic_pour FS |
| framing.floor_system | structural_and_shell | framing | framing | Floor system + subfloor | framing | work | 3 | 3 |  | 2 | framing framing Dimensional/engineered floor system + glued subfloor over cured foundation. | 2026-10-27 | 2026-10-29 | 2026-10-27 | 2026-10-27 | 0 | not_started |  | foundation.cure FS |
| framing.exterior_walls | structural_and_shell | framing | framing | Exterior & interior walls | framing | work | 5 | 3 |  | 1 | framing framing 2x4 @ 16 O.C. framing for basement, first-floor, and second-floor walls incl. elevator shaft framing. | 2026-10-30 | 2026-11-05 | 2026-10-30 | 2026-10-30 | 0 | not_started |  | framing.floor_system FS |
| framing.roof | structural_and_shell | framing | roof_framing_roofing | Roof framing (stick-frame) | framing | work | 3 | 3 |  | 1 | roof_framing_roofing framing.roof, addition.trusses Scope ambiguous — 'truss or rafter framed (TBD design phase)'. Small addition footprint (~300 sqft roof, ~10 ft span). Default stick-frame per addition rules. | 2026-11-06 | 2026-11-10 | 2026-11-06 | 2026-11-06 | 0 | not_started |  | framing.exterior_walls FS |
| roof.concealed_buffer | structural_and_shell | roof_tie_in | roof_framing_roofing | Concealed roof tie-in buffer | general | lead_time | 0 | 0 |  | 0 | roof_framing_roofing addition.roof_tie_in 3-day buffer concurrent with roof framing for concealed rafter condition discovery on tie-in. | 2026-11-09 | 2026-11-11 | 2026-11-09 | 2027-01-05 | 36.5 | not_started | 3 | framing.roof SS 1 |
| structural.temp_shoring | structural_and_shell | lvl_subchain | structural_modifications | Temporary shoring | framing | work | 1 | 2 |  | 1 | structural_modifications lvl_subchain Temp shoring before LVL install. | 2026-10-16 | 2026-10-16 | 2026-10-16 | 2026-11-16 | 21.5 | not_started |  | demo.expose_bearing_wall FS |
| structural.install_lvl | structural_and_shell | lvl_subchain | structural_modifications | Install LVL beam | framing | work | 1.5 | 2 |  | 1 | structural_modifications lvl_subchain Install 3-ply 14" LVL spanning ~15'-6". | 2026-10-26 | 2026-10-27 | 2026-10-26 | 2026-11-17 | 16 | not_started |  | structural.temp_shoring FS, checkpoint.lvl_arrived FS |
| structural.remove_shoring | structural_and_shell | lvl_subchain | structural_modifications | Remove temporary shoring | framing | work | 0.5 | 2 |  | 0 | structural_modifications lvl_subchain Remove temp shoring after LVL bears load. Bundled with framing inspection — no separate inspection. | 2026-10-28 | 2026-10-28 | 2026-10-28 | 2026-11-19 | 16 | not_started |  | structural.install_lvl FS |
| framing.sheathing | structural_and_shell | framing | roof_framing_roofing | Roof sheathing | framing | work | 1 | 3 |  | 0 | roof_framing_roofing framing.roof Sheathing after roof framing complete. | 2026-11-11 | 2026-11-11 | 2026-11-11 | 2026-11-11 | 0 | not_started |  | framing.roof FS |
| equipment.scaffolding_arrive | structural_and_shell | roofing | roof_framing_roofing | Scaffolding delivery | general | work | 0.5 | 1 |  | 0 | roof_framing_roofing 4O Scaffolding lands day before roof underlayment. | 2026-11-12 | 2026-11-12 | 2026-11-12 | 2026-11-12 | 0 | not_started |  | checkpoint.equipment_confirmed_roof FS, framing.sheathing FS |
| roofing.underlayment | structural_and_shell | roofing | roof_framing_roofing | Roof underlayment + drip edge | roofing | work | 1 | 3 |  | 1 | roof_framing_roofing roofing Synthetic underlayment + drip edge. Building weatherproof after this step. | 2026-11-12 | 2026-11-13 | 2026-11-12 | 2026-11-12 | 0 | not_started |  | framing.sheathing FS, equipment.scaffolding_arrive FS |
| windows.install | structural_and_shell | envelope | windows_doors_weatherproofing | Install windows & exterior door | windows_doors | work | 2 | 2 |  | 1 | windows_doors_weatherproofing 4J, addition.windows 4 windows + 1 exterior door installed AS SOON AS roof is framed. Parallel with roofing.underlayment. | 2026-11-11 | 2026-11-12 | 2026-11-11 | 2026-11-11 | 0.5 | not_started |  | framing.roof FS, checkpoint.windows_arrived FS |
| roofing.shingles | structural_and_shell | roofing | roof_framing_roofing | Install architectural shingles + ridge vent + flashing | roofing | work | 1 | 3 |  | 0 | roof_framing_roofing roofing ~300 sqft roof — 1 day for shingles + ridge vent + flashing per TCR baseline. | 2026-11-13 | 2026-11-16 | 2026-11-13 | 2027-01-05 | 32 | not_started |  | roofing.underlayment FS |
| roofing.gutters_fascia | structural_and_shell | exterior_finishes | exterior_finishes | Fascia, soffit & seamless gutters | siding | work | 1.5 | 3 |  | 0 | exterior_finishes same_crew_exterior Same crew does siding, trim, and gutters as a continuous block. | 2026-11-16 | 2026-11-17 | 2026-11-16 | 2027-01-07 | 32.5 | not_started |  | roofing.shingles FS |
| exterior.sheathing_wrb | structural_and_shell | exterior_finishes | exterior_finishes | Sheathing + WRB | siding | work | 1.5 | 3 |  | 1 | exterior_finishes exterior Sheathing + WRB after wall framing complete. | 2026-11-06 | 2026-11-09 | 2026-11-06 | 2027-01-05 | 37 | not_started |  | framing.exterior_walls FS |
| milestone.dried_in | structural_and_shell | exterior_finishes | exterior_finishes | Dried-in milestone | general | milestone | 0 | 0 |  | 0 | exterior_finishes milestone.dried_in Dried-in gates exterior siding. Does NOT gate MEPs. | 2026-11-16 | 2026-11-16 | 2026-11-16 | 2027-01-06 | 32 | not_started |  | roofing.shingles FS, windows.install FS, exterior.sheathing_wrb FS |
| exterior.siding | structural_and_shell | exterior_finishes | exterior_finishes | Vinyl siding install | siding | work | 2 | 3 |  | 1 | exterior_finishes exterior Vinyl lap siding to match existing. | 2026-11-16 | 2026-11-18 | 2026-11-16 | 2027-01-06 | 32 | not_started |  | milestone.dried_in FS |
| plumbing.tank_set | rough_trades | rough_plumbing | hvac | Set tankless water heater | plumbing | work | 0.5 | 2 |  | 1 | hvac 4H Tankless WH set FIRST before plumbing rough-in per Will's rule. | 2026-11-13 | 2026-11-13 | 2026-11-13 | 2026-11-16 | 0.5 | not_started |  | roofing.underlayment FS, windows.install FS, checkpoint.minisplit_arrived FS |
| electrical.rough_in | rough_trades | rough_electrical | electrical | Rough electrical incl. subpanel | electrical | work | 4 | 2 |  | 2 | electrical 4I, electrical Rough electrical: 100A subpanel install, ~12 recessed cans, outlets, dedicated elevator circuit. Gated by underlayment + windows. | 2026-11-13 | 2026-11-19 | 2026-11-13 | 2026-11-13 | 0 | not_started |  | roofing.underlayment FS, windows.install FS, checkpoint.subpanel_arrived FS |
| plumbing.rough_in | rough_trades | rough_plumbing | plumbing | Rough plumbing | plumbing | work | 3 | 2 |  | 2 | plumbing 4I, plumbing Rough plumbing: master bath + W/D relocation. Stubs into set tankless. | 2026-11-16 | 2026-11-18 | 2026-11-16 | 2026-11-16 | 0.5 | not_started |  | plumbing.tank_set FS |
| hvac.minisplit_rough | rough_trades | rough_hvac | hvac | Mini-split line set rough-in | hvac | work | 0.5 | 1 |  | 1 | hvac 4G Mini-split line set rough is 0.5d, 1 person. | 2026-11-13 | 2026-11-13 | 2026-11-13 | 2026-11-19 | 3.5 | not_started |  | roofing.underlayment FS, windows.install FS |
| gas.wh_vent_extend | rough_trades | rough_hvac | demolition_site_work | Extend gas WH vent through new roof | plumbing | work | 0.5 | 1 |  | 1 | demolition_site_work scope.gas_vent Existing gas WH stays; vent extended through new roof. Retrofit trade item. | 2026-11-16 | 2026-11-16 | 2026-11-16 | 2027-01-08 | 33.5 | not_started |  | roofing.shingles FS |
| inspect.rough_bundled | rough_inspections | rough_inspections | framing | Bundled rough inspection (E/P/M + framing) | inspector | inspection | 0.5 | 1 |  | 1 | framing 4C Bundled rough inspection: electrical + plumbing + mini-split + framing on one day with one inspector. | 2026-11-20 | 2026-11-20 | 2026-11-20 | 2026-11-20 | 0 | not_started |  | electrical.rough_in FS 1, plumbing.rough_in FS 1, hvac.minisplit_rough FS 1, structural.remove_shoring FS 1 |
| buffer.post_rough_inspection | rough_inspections | rough_inspections | framing | Post-rough punch buffer | general | lead_time | 0 | 0 |  | 0 | framing 4D Standard 2-day punch-list buffer after rough inspection. | 2026-11-23 | 2026-11-24 | 2026-11-23 | 2026-11-23 | 0 | not_started | 2 | inspect.rough_bundled FS |
| insulation.install | insulation_and_drywall | insulation | insulation_air_sealing | Insulation & air sealing | insulation | work | 2 | 2 |  | 1 | insulation_air_sealing insulation Batts + air sealing throughout addition. | 2026-11-25 | 2026-11-30 | 2026-11-25 | 2026-11-25 | 0 | not_started |  | buffer.post_rough_inspection FS |
| inspect.insulation | insulation_and_drywall | insulation | insulation_air_sealing | Insulation inspection | inspector | inspection | 0.5 | 1 |  | 1 | insulation_air_sealing inspection.insulation Standard insulation inspection gate before drywall. | 2026-12-02 | 2026-12-02 | 2026-12-02 | 2026-12-02 | 0 | not_started |  | insulation.install FS 1 |
| equipment.drywall_dumpster | insulation_and_drywall | drywall | drywall | Second dumpster + drywall lift arrive | general | work | 0.5 | 1 |  | 0 | drywall 4O Equipment lands day before drywall hang. | 2026-12-02 | 2026-12-02 | 2026-12-02 | 2026-12-02 | 0 | not_started |  | checkpoint.equipment_confirmed_drywall FS, inspect.insulation FS |
| drywall.consolidated | insulation_and_drywall | drywall | drywall | Drywall hang / tape / sand — consolidated (addition + retrofit) | drywall | work | 6 | 3 |  | 2 | drywall drywall.consolidated Consolidated hang + tape + sand for new addition AND existing bedroom + hall bath retrofit patches in single block. Cure waits modeled inside task duration. | 2026-12-03 | 2026-12-10 | 2026-12-03 | 2026-12-03 | 0 | not_started |  | inspect.insulation FS, equipment.drywall_dumpster FS |

| id | phase_id | component_id | section_id | name | trade | kind | duration_days | crew_size | lead_up_working_days | derived_from | scheduled_start | scheduled_end | earliest_start | latest_start | float_days | status | depends_on |
| --- | --- | --- | --- | --- | --- | --- | --- | --- | --- | --- | --- | --- | --- | --- | --- | --- | --- |
| paint.phase_1 | insulation_and_drywall | paint_phase1 | interior_finish | Paint phase 1 — primer + ceiling finish | paint | work | 1 | 2 | 2 | interior_finish 4E 1d covers primer (walls + ceilings) AM + ceiling finish coat PM same day per Will's standard sequence. | 2026-12-11 | 2026-12-11 | 2026-12-11 | 2026-12-11 | 0 | not_started | drywall.consolidated FS, order.paint FS |
| tile.shower_substrate | interior_finishes | tile | master_bath | Tile shower substrate & waterproofing | tile | work | 2 | 2 | 1 | master_bath tile.substrate Kerdi/Wedi waterproofing + substrate before tile. | 2026-12-14 | 2026-12-15 | 2026-12-14 | 2026-12-14 | 0 | not_started | paint.phase_1 FS, checkpoint.tile_arrived FS |
| tile.shower_set | interior_finishes | tile | master_bath | Set shower tile | tile | work | 3 | 2 | 0 | master_bath tile Custom master bath shower tile set. | 2026-12-16 | 2026-12-18 | 2026-12-16 | 2026-12-16 | 0 | not_started | tile.shower_substrate FS |
| tile.grout_seal | interior_finishes | tile | master_bath | Grout & seal tile | tile | work | 1 | 2 | 0 | master_bath tile Grout + seal after thinset cure. | 2026-12-22 | 2026-12-22 | 2026-12-22 | 2026-12-22 | 0 | not_started | tile.shower_set FS 1 |
| flooring.install | interior_finishes | flooring | interior_finish | Flooring install (LVP) | flooring | work | 3 | 2 | 1 | interior_finish 4L LVP flooring after paint phase 1 and shower substrate. | 2026-12-16 | 2026-12-18 | 2026-12-16 | 2026-12-17 | 1 | not_started | paint.phase_1 FS, tile.shower_substrate FS, checkpoint.flooring_arrived FS |
| trim.install | interior_finishes | trim | interior_finish | Trim carpentry (base, case, doors) | trim_carpentry | work | 3 | 2 | 1 | interior_finish 4L Trim after flooring. | 2026-12-21 | 2026-12-23 | 2026-12-21 | 2026-12-22 | 1 | not_started | flooring.install FS |
| cabinets.install | interior_finishes | cabinets | master_bath | Vanity install | cabinets | work | 0.5 | 2 | 1 | master_bath cabinets Vanity install after flooring. | 2026-12-21 | 2026-12-21 | 2026-12-21 | 2026-12-22 | 1.5 | not_started | flooring.install FS, checkpoint.vanity_arrived FS |
| retrofit.hall_bath_repaint | interior_finishes | hall_bath_mod | hall_bath_closeout | Hall bath repaint (retrofit) | paint | work | 1 | 2 | 1 | hall_bath_closeout retrofit Hall bath is outside addition objective areas — retrofit component, gated only on drywall consolidated. | 2026-12-11 | 2026-12-11 | 2026-12-11 | 2026-12-28 | 9 | not_started | drywall.consolidated FS, order.paint FS |
| electrical.finish | finish_trades | finish_electrical | electrical | Electrical finish (trim out) | electrical | work | 2 | 2 | 1 | electrical 4L Fixture, outlet, switch trim after paint phase 1. | 2026-12-14 | 2026-12-15 | 2026-12-14 | 2026-12-22 | 6 | not_started | paint.phase_1 FS |
| plumbing.finish | finish_trades | finish_plumbing | plumbing | Plumbing finish | plumbing | work | 2 | 2 | 1 | plumbing 4L Plumbing finish after cabinets, flooring, tile grout. | 2026-12-23 | 2026-12-28 | 2026-12-23 | 2026-12-23 | 0 | not_started | cabinets.install FS, flooring.install FS, tile.grout_seal FS |
| hvac.minisplit_install | finish_trades | finish_hvac | hvac | Mini-split install | hvac | work | 1 | 1 | 1 | hvac 4N Mini-split day-of-install. Sequenced AFTER electrical finish per 2-trade-max stagger rule. | 2026-12-16 | 2026-12-16 | 2026-12-16 | 2026-12-28 | 6 | not_started | paint.phase_1 FS, electrical.finish FS, checkpoint.minisplit_arrived FS |
| paint.phase_2 | interior_finishes | paint_phase2 | interior_finish | Paint phase 2 — final wall coat | paint | work | 1 | 2 | 1 | interior_finish 4F Paint phase 2 gates on every finish trade — LAST work task on site. | 2026-12-29 | 2026-12-29 | 2026-12-29 | 2026-12-29 | 0 | not_started | trim.install FS, flooring.install FS, cabinets.install FS, tile.grout_seal FS, plumbing.finish FS, electrical.finish FS, hvac.minisplit_install FS, retrofit.hall_bath_repaint FS |
| milestone.substantial_completion | interior_finishes | paint_phase2 | interior_finish | Substantial completion | general | milestone | 0 | 0 | 0 | interior_finish 4F Home substantially complete when paint 2 finishes. | 2026-12-30 | 2026-12-30 | 2026-12-30 | 2026-12-30 | 0 | not_started | paint.phase_2 FS |
| closeout.pm_walkthrough | closeout | closeout | hall_bath_closeout | PM walkthrough with customer | pm | work | 0.5 | 1 | 1 | hall_bath_closeout closeout PM walkthrough to produce punch list. | 2026-12-30 | 2026-12-30 | 2026-12-30 | 2026-12-30 | 0 | not_started | milestone.substantial_completion FS |
| closeout.punch_list | closeout | closeout | hall_bath_closeout | Punch list work | general | work | 2 | 2 | 1 | hall_bath_closeout closeout Punch-list return for multiple trades. | 2026-12-30 | 2027-01-04 | 2026-12-30 | 2026-12-30 | 0 | not_started | closeout.pm_walkthrough FS |
| closeout.final_clean | closeout | closeout | hall_bath_closeout | Final clean | cleanup | work | 1 | 2 | 0 | hall_bath_closeout closeout Whole-house clean after punch list. | 2027-01-04 | 2027-01-05 | 2027-01-04 | 2027-01-04 | 0 | not_started | closeout.punch_list FS |
| inspect.final_bundled | closeout | closeout | hall_bath_closeout | Final bundled inspection (E/P/M + building) | inspector | inspection | 0.5 | 1 | 1 | hall_bath_closeout 4M All finals + final building bundled to one inspector on one day. | 2027-01-06 | 2027-01-06 | 2027-01-06 | 2027-01-06 | 0 | not_started | closeout.final_clean FS 1 |
| closeout.wills_walkthrough | closeout | closeout | hall_bath_closeout | Will's final walkthrough | general | work | 0.5 | 1 | 1 | hall_bath_closeout closeout.wills_walkthrough Will's personal final walkthrough with customer — end of project. | 2027-01-08 | 2027-01-08 | 2027-01-08 | 2027-01-08 | 0 | not_started | inspect.final_bundled FS 1 |
