| id | phase_id | component_id | section_id | name | trade | kind | duration_days | crew_size | pre_construction_offset_working_days | lead_up_working_days | derived_from | scheduled_start | scheduled_end | earliest_start | latest_start | float_days | status | lead_time_days | depends_on |
| --- | --- | --- | --- | --- | --- | --- | --- | --- | --- | --- | --- | --- | --- | --- | --- | --- | --- | --- | --- |
| general.permitting | pre_construction | permits_and_planning | general_conditions | Pull building permit (walk-in) | general | work | 1 | 1 | 15 | 2 | general_conditions 4A Permit walk-in scheduled 3 weeks before on-site start; TCR gets same-day permits ~90% of the time. | 2026-09-21 | 2026-09-21 | 2026-09-21 | 2026-10-09 | 14 | not_started |  |  |
| permit.tdec_septic | pre_construction | tdec_septic | general_conditions | TDEC septic permit process | general | lead_time | 0 | 0 | 30 | 2 | general_conditions TDEC Scope explicitly requires TDEC septic inspection pre-construction; addition adds bedroom + master bath. 6-week calendar lead. Offset pins start at 30 working days before on-site. | 2026-08-28 | 2026-10-09 | 2026-08-28 | 2026-08-28 | 0 | not_started | 42 |  |
| prep.amperage_check | pre_construction | amperage_check | electrical | Verify main service amperage for new subpanel | general | work | 0.5 | 1 | 15 | 1 | electrical addition-subpanel-amperage New 100A subpanel scoped — verify existing service can accept subpanel before contract lock. | 2026-09-21 | 2026-09-21 | 2026-09-21 | 2026-11-02 | 30.5 | not_started |  |  |
| checkpoint.selections_finalized | pre_construction | checkpoints | general_conditions | Customer selections finalized | general | milestone | 0 | 0 | 15 | 5 | general_conditions 4P PM confirms tile, paint, fixtures, LVT, vanity selections locked 3 weeks before on-site. | 2026-09-21 | 2026-09-21 | 2026-09-21 | 2026-11-18 | 42.5 | not_started |  |  |
| checkpoint.equipment_confirmed_demo | pre_construction | checkpoints | demolition_site_work | Confirm demo equipment reserved | general | milestone | 0 | 0 | 10 | 2 | demolition_site_work 4O 2 weeks before demo: PM confirms dumpster + mini-ex reserved. | 2026-09-28 | 2026-09-28 | 2026-09-28 | 2026-10-13 | 11 | not_started |  |  |
| checkpoint.equipment_confirmed_roof | pre_construction | checkpoints | roof_framing_roofing | Confirm roof equipment reserved | general | milestone | 0 | 0 | 10 | 2 | roof_framing_roofing 4O 2 weeks before roof: PM confirms scaffolding reserved. | 2026-09-28 | 2026-09-28 | 2026-09-28 | 2027-01-07 | 68.5 | not_started |  |  |
| pm.call_tony | pre_construction | pm_calls | general_conditions | PM calls Tony (John's brother) | pm | work | 0.5 | 1 | 2 | 0 | general_conditions pm-notes Per PM notes: must call Tony 2 days before job start. | 2026-10-08 | 2026-10-08 | 2026-10-08 | 2027-01-07 | 60 | not_started |  |  |
| order.windows | procurement_long_leads | procurement_windows | windows_doors_weatherproofing | Order windows + exterior door | general | work | 0.5 | 1 |  | 2 | windows_doors_weatherproofing 4R 3 stock windows + 1 transom + 1 exterior door. PM places order per 3-task procurement pattern. | 2026-10-12 | 2026-10-12 | 2026-10-12 | 2026-10-19 | 5.5 | not_started |  |  |
| wait.windows | procurement_long_leads | procurement_windows | windows_doors_weatherproofing | Windows + door supplier delivery window | general | lead_time | 0 | 0 |  | 0 | windows_doors_weatherproofing 4R Stock windows 21-day supplier delivery. | 2026-10-12 | 2026-11-02 | 2026-10-12 | 2026-10-20 | 5.5 | not_started | 21 | order.windows FS |
| checkpoint.windows_arrived | procurement_long_leads | procurement_windows | windows_doors_weatherproofing | Windows delivered to site | general | milestone | 0 | 0 |  | 0 | windows_doors_weatherproofing 4R PM confirms windows on site. | 2026-11-02 | 2026-11-02 | 2026-11-02 | 2026-11-10 | 5.5 | not_started |  | wait.windows FS |
| order.lvl | procurement_long_leads | procurement_lvl | structural_modifications | Order LVL beam (3-ply 14") | general | work | 0.5 | 1 |  | 2 | structural_modifications 4R, addition-lvl LVL beam per scope; default 14 calendar days safety even for standard stock. | 2026-10-12 | 2026-10-12 | 2026-10-12 | 2026-12-17 | 46 | not_started |  |  |
| wait.lvl | procurement_long_leads | procurement_lvl | structural_modifications | LVL supplier delivery window | general | lead_time | 0 | 0 |  | 0 | structural_modifications 4R Standard LVL default 14 day safety window. | 2026-10-12 | 2026-10-26 | 2026-10-12 | 2026-12-17 | 46 | not_started | 14 | order.lvl FS |
| checkpoint.lvl_arrived | procurement_long_leads | procurement_lvl | structural_modifications | LVL delivered to site | general | milestone | 0 | 0 |  | 0 | structural_modifications 4R PM confirms LVL on site. | 2026-10-26 | 2026-10-26 | 2026-10-26 | 2027-01-05 | 46 | not_started |  | wait.lvl FS |
| order.subpanel | procurement_long_leads | procurement_subpanel | electrical | Order 100A subpanel | general | work | 0.5 | 1 |  | 2 | electrical 4R Order subpanel after amperage check confirms. | 2026-10-12 | 2026-10-12 | 2026-10-12 | 2026-11-03 | 16 | not_started |  | prep.amperage_check FS |
| wait.subpanel | procurement_long_leads | procurement_subpanel | electrical | Subpanel supplier delivery | general | lead_time | 0 | 0 |  | 0 | electrical 4R 7-14 day supplier lead for electrical panel. | 2026-10-12 | 2026-10-22 | 2026-10-12 | 2026-11-03 | 16 | not_started | 10 | order.subpanel FS |
| checkpoint.subpanel_arrived | procurement_long_leads | procurement_subpanel | electrical | Subpanel delivered | general | milestone | 0 | 0 |  | 0 | electrical 4R PM confirms subpanel on site. | 2026-10-22 | 2026-10-22 | 2026-10-22 | 2026-11-13 | 16 | not_started |  | wait.subpanel FS |
| order.minisplit | procurement_long_leads | procurement_minisplit | hvac | Order mini-split unit | general | work | 0.5 | 1 |  | 2 | hvac 4R Mini-split ordered to arrive at dried-in. | 2026-10-12 | 2026-10-12 | 2026-10-12 | 2026-12-09 | 40.5 | not_started |  |  |
| wait.minisplit | procurement_long_leads | procurement_minisplit | hvac | Mini-split supplier delivery | general | lead_time | 0 | 0 |  | 0 | hvac 4R 7-14 day supplier lead. | 2026-10-12 | 2026-10-22 | 2026-10-12 | 2026-12-10 | 40.5 | not_started | 10 | order.minisplit FS |
| checkpoint.minisplit_arrived | procurement_long_leads | procurement_minisplit | hvac | Mini-split delivered | general | milestone | 0 | 0 |  | 0 | hvac 4R PM confirms mini-split on site. | 2026-10-22 | 2026-10-22 | 2026-10-22 | 2026-12-22 | 40.5 | not_started |  | wait.minisplit FS |
| order.tankless | procurement_long_leads | procurement_tankless | hvac | Order tankless water heater | general | work | 0.5 | 1 |  | 2 | hvac 4R, 4H Tankless WH ordered so it lands before plumbing rough-in (tank set first). | 2026-10-12 | 2026-10-12 | 2026-10-12 | 2026-10-30 | 14.5 | not_started |  |  |
| wait.tankless | procurement_long_leads | procurement_tankless | hvac | Tankless WH supplier delivery | general | lead_time | 0 | 0 |  | 0 | hvac 4R 7-14 day supplier lead. | 2026-10-12 | 2026-10-22 | 2026-10-12 | 2026-11-02 | 14.5 | not_started | 10 | order.tankless FS |
| checkpoint.tankless_arrived | procurement_long_leads | procurement_tankless | hvac | Tankless WH delivered | general | milestone | 0 | 0 |  | 0 | hvac 4R PM confirms tankless WH on site. | 2026-10-22 | 2026-10-22 | 2026-10-22 | 2026-11-12 | 14.5 | not_started |  | wait.tankless FS |
| order.tile | procurement_long_leads | procurement_tile | master_bath | Order master bath tile | general | work | 0.5 | 1 |  | 2 | master_bath 4R Custom tile 14-21 supplier days after selections locked. | 2026-10-12 | 2026-10-12 | 2026-10-12 | 2026-11-18 | 27.5 | not_started |  | checkpoint.selections_finalized FS |
| wait.tile | procurement_long_leads | procurement_tile | master_bath | Tile supplier delivery | general | lead_time | 0 | 0 |  | 0 | master_bath 4R Tile 14-21 day supplier delivery. | 2026-10-12 | 2026-10-29 | 2026-10-12 | 2026-11-19 | 27.5 | not_started | 18 | order.tile FS |
| checkpoint.tile_arrived | procurement_long_leads | procurement_tile | master_bath | Tile delivered | general | milestone | 0 | 0 |  | 0 | master_bath 4R PM confirms tile on site. | 2026-10-29 | 2026-10-29 | 2026-10-29 | 2026-12-10 | 27.5 | not_started |  | wait.tile FS |
| order.vanity | procurement_long_leads | procurement_vanity | master_bath | Order master bath vanity | general | work | 0.5 | 1 |  | 2 | master_bath 4R Vanity ordered post-selections. | 2026-10-12 | 2026-10-12 | 2026-10-12 | 2026-12-04 | 37 | not_started |  | checkpoint.selections_finalized FS |
| wait.vanity | procurement_long_leads | procurement_vanity | master_bath | Vanity supplier delivery | general | lead_time | 0 | 0 |  | 0 | master_bath 4R Standard vanity 14-day supplier lead. | 2026-10-12 | 2026-10-26 | 2026-10-12 | 2026-12-04 | 37 | not_started | 14 | order.vanity FS |
| checkpoint.vanity_arrived | procurement_long_leads | procurement_vanity | master_bath | Vanity delivered | general | milestone | 0 | 0 |  | 0 | master_bath 4R PM confirms vanity on site. | 2026-10-26 | 2026-10-26 | 2026-10-26 | 2026-12-18 | 37 | not_started |  | wait.vanity FS |
| order.fixtures | procurement_long_leads | procurement_fixtures | plumbing | Order plumbing fixtures | general | work | 0.5 | 1 |  | 2 | plumbing 4R Fixtures ordered post-selections. | 2026-10-12 | 2026-10-12 | 2026-10-12 | 2026-12-08 | 39.5 | not_started |  | checkpoint.selections_finalized FS |
| wait.fixtures | procurement_long_leads | procurement_fixtures | plumbing | Fixtures supplier delivery | general | lead_time | 0 | 0 |  | 0 | plumbing 4R Standard fixtures 10 day supplier lead. | 2026-10-12 | 2026-10-22 | 2026-10-12 | 2026-12-09 | 39.5 | not_started | 10 | order.fixtures FS |
| checkpoint.fixtures_arrived | procurement_long_leads | procurement_fixtures | plumbing | Fixtures delivered | general | milestone | 0 | 0 |  | 0 | plumbing 4R PM confirms fixtures on site. | 2026-10-22 | 2026-10-22 | 2026-10-22 | 2026-12-21 | 39.5 | not_started |  | wait.fixtures FS |
| order.flooring | procurement_long_leads | procurement_flooring | interior_finish | Order LVP flooring | general | work | 0.5 | 1 |  | 2 | interior_finish 4R LVP ordered to arrive 1 week before install. | 2026-10-12 | 2026-10-12 | 2026-10-12 | 2026-12-03 | 36.5 | not_started |  | checkpoint.selections_finalized FS |
| wait.flooring | procurement_long_leads | procurement_flooring | interior_finish | Flooring supplier delivery | general | lead_time | 0 | 0 |  | 0 | interior_finish 4R Standard LVP 10 day supplier lead. | 2026-10-12 | 2026-10-22 | 2026-10-12 | 2026-12-04 | 36.5 | not_started | 10 | order.flooring FS |
| checkpoint.flooring_arrived | procurement_long_leads | procurement_flooring | interior_finish | Flooring delivered | general | milestone | 0 | 0 |  | 0 | interior_finish 4R PM confirms flooring on site. | 2026-10-22 | 2026-10-22 | 2026-10-22 | 2026-12-16 | 36.5 | not_started |  | wait.flooring FS |
| order.paint | procurement_long_leads | procurement_paint | interior_finish | Order paint | general | work | 0.5 | 1 |  | 0 | interior_finish 4R Paint is short lead — collapsed to single order task per Rule 4R exception. | 2026-10-12 | 2026-10-12 | 2026-10-12 | 2026-12-08 | 39.5 | not_started |  | checkpoint.selections_finalized FS |
| order.shower_glass | procurement_long_leads | procurement_shower_glass | master_bath | Template + order shower glass enclosure | general | work | 0.5 | 1 |  | 2 | master_bath 4R Custom glass ordered from template after tile shower substrate complete — placeholder gate. | 2026-10-12 | 2026-10-12 | 2026-10-12 | 2026-12-22 | 49.5 | not_started |  |  |
| wait.shower_glass | procurement_long_leads | procurement_shower_glass | master_bath | Shower glass fabrication | general | lead_time | 0 | 0 |  | 0 | master_bath 4R 7-14 day custom glass fabrication. | 2026-10-12 | 2026-10-22 | 2026-10-12 | 2026-12-23 | 49.5 | not_started | 10 | order.shower_glass FS |
| checkpoint.shower_glass_arrived | procurement_long_leads | procurement_shower_glass | master_bath | Shower glass delivered | general | milestone | 0 | 0 |  | 0 | master_bath 4R PM confirms glass on site. | 2026-10-22 | 2026-10-22 | 2026-10-22 | 2027-01-07 | 49.5 | not_started |  | wait.shower_glass FS |
| equipment.dumpster_arrive | site_prep | site_setup | demolition_site_work | Dumpster arrives day before demo | general | work | 0.5 | 1 |  | 0 | demolition_site_work 4O Dumpster lands the day before demo. | 2026-10-12 | 2026-10-12 | 2026-10-12 | 2026-10-13 | 1 | not_started |  | checkpoint.equipment_confirmed_demo FS |
| general.site_setup | site_prep | site_setup | general_conditions | Site setup + protection | general | work | 0.5 | 2 |  | 1 | general_conditions site-prep Kick-off site protection, temp fencing, staging. | 2026-10-12 | 2026-10-12 | 2026-10-12 | 2026-10-12 | 0 | not_started |  | general.permitting FS, permit.tdec_septic FS |
| prep.heat_pump_relocate | site_prep | prep_work_before_demo | hvac | Relocate existing heat pump / disconnect | hvac | work | 1 | 2 |  | 1 | hvac 4K, addition-heat-pump Scope includes HVAC relocations — must happen BEFORE demo starts. | 2026-10-12 | 2026-10-13 | 2026-10-12 | 2026-10-12 | 0 | not_started |  | general.site_setup FS |
| demo.selective | demo_and_protection | demolition | demolition_site_work | Selective demolition + haul-out | demo | work | 2 | 3 |  | 2 | demolition_site_work demo Selective demo of existing wall for addition tie-in + hall bath demo. | 2026-10-13 | 2026-10-15 | 2026-10-13 | 2026-10-13 | 0 | not_started |  | prep.heat_pump_relocate FS, equipment.dumpster_arrive FS |
| demo.expose_bearing_wall | demo_and_protection | demolition | structural_modifications | Expose existing load-bearing wall | demo | work | 1 | 2 |  | 0 | structural_modifications lvl-subchain Expose bearing wall so LVL retrofit can proceed independently. | 2026-10-15 | 2026-10-16 | 2026-10-15 | 2026-12-31 | 51 | not_started |  | demo.selective FS |
| excavation.dig | structural_and_shell | excavation | excavation_foundation | Excavate for basement/foundation | excavation | work | 2 | 2 |  | 2 | excavation_foundation excavation Excavate for footings + basement slab area. Gated on TDEC permit. | 2026-10-15 | 2026-10-19 | 2026-10-15 | 2026-10-15 | 0 | not_started |  | demo.selective FS, permit.tdec_septic FS |
| foundation.form_and_prep | structural_and_shell | foundation | excavation_foundation | Form footings + gravel + vapor + rebar | concrete | work | 1.5 | 4 |  | 0 | excavation_foundation 4B Monolithic foundation prep — footings + slab prep in one task. | 2026-10-19 | 2026-10-20 | 2026-10-19 | 2026-10-19 | 0 | not_started |  | excavation.dig FS |
| inspect.footing | structural_and_shell | foundation | excavation_foundation | Footing inspection | inspector | inspection | 0.5 | 1 |  | 1 | excavation_foundation 4B, inspections Footing inspection covers both footing and slab prep for monolithic pour. | 2026-10-22 | 2026-10-22 | 2026-10-22 | 2026-10-22 | 0 | not_started |  | foundation.form_and_prep FS 1 |
| foundation.monolithic_pour | structural_and_shell | foundation | excavation_foundation | Monolithic pour (footings + slab) | concrete | work | 1 | 4 |  | 0 | excavation_foundation 4B Single monolithic pour. | 2026-10-22 | 2026-10-23 | 2026-10-22 | 2026-10-22 | 0 | not_started |  | inspect.footing FS |
| foundation.cure | structural_and_shell | foundation | excavation_foundation | Foundation cure | general | lead_time | 0 | 0 |  | 0 | excavation_foundation 4B 2 calendar days cure before floor system. | 2026-10-23 | 2026-10-27 | 2026-10-23 | 2026-10-23 | 0 | not_started | 2 | foundation.monolithic_pour FS |
| structural.temp_shoring | structural_and_shell | lvl_subchain | structural_modifications | Install temporary shoring | framing | work | 1 | 2 |  | 0 | structural_modifications lvl-subchain Temp shoring before LVL install. | 2026-10-16 | 2026-10-19 | 2026-10-16 | 2027-01-04 | 51 | not_started |  | demo.expose_bearing_wall FS |
| structural.install_lvl | structural_and_shell | lvl_subchain | structural_modifications | Install LVL beam (3-ply 14", ~15'6" span) | framing | work | 1.5 | 3 |  | 1 | structural_modifications lvl-subchain LVL install once shoring set + beam on site. | 2026-10-26 | 2026-10-27 | 2026-10-26 | 2027-01-05 | 46 | not_started |  | structural.temp_shoring FS, checkpoint.lvl_arrived FS |
| structural.remove_temp_shoring | structural_and_shell | lvl_subchain | structural_modifications | Remove temporary shoring | framing | work | 0.5 | 2 |  | 0 | structural_modifications lvl-subchain Remove shoring after LVL load transfers. | 2026-10-28 | 2026-10-28 | 2026-10-28 | 2027-01-07 | 46 | not_started |  | structural.install_lvl FS |
| framing.floor_system | structural_and_shell | floor_system | framing | Frame floor system | framing | work | 2 | 3 |  | 2 | framing framing Dimensional/engineered floor joists per span; ~789 sqft footprint. | 2026-10-27 | 2026-10-29 | 2026-10-27 | 2026-10-27 | 0 | not_started |  | foundation.cure FS |
| framing.exterior_walls | structural_and_shell | framing | framing | Frame exterior walls (2 stories) + elevator shaft | framing | work | 4 | 3 |  | 0 | framing framing Two-story exterior walls 2x4@16 OC plus 4x4 elevator shaft framing. | 2026-10-29 | 2026-11-04 | 2026-10-29 | 2026-10-29 | 0 | not_started |  | framing.floor_system FS |
| framing.interior_walls | structural_and_shell | framing | framing | Frame interior walls | framing | work | 2 | 3 |  | 0 | framing framing Interior partitions can start once exterior walls are 2 days in — same crew flows in. | 2026-11-02 | 2026-11-04 | 2026-11-02 | 2027-01-05 | 41 | not_started |  | framing.exterior_walls SS 2 |
| framing.roof | structural_and_shell | framing | roof_framing_roofing | Frame gable roof (stick frame) + tie-in | framing | work | 3 | 3 |  | 1 | roof_framing_roofing stick-frame-default Stick-frame default for <800 sqft addition. Tie-in to existing 6/12 pitch. | 2026-11-04 | 2026-11-09 | 2026-11-04 | 2026-11-04 | 0 | not_started |  | framing.exterior_walls FS |
| roof.concealed_buffer | structural_and_shell | roof_tie_in | roof_framing_roofing | Concealed roof tie-in discovery buffer | framing | lead_time | 0 | 0 |  | 0 | roof_framing_roofing addition-roof-tie-in 3-day concealed condition buffer running concurrent with framing.roof. | 2026-11-05 | 2026-11-10 | 2026-11-05 | 2027-01-04 | 37 | not_started | 3 | framing.roof SS 1 |
| framing.sheathing | structural_and_shell | framing | roof_framing_roofing | Roof + wall sheathing | framing | work | 1.5 | 3 |  | 0 | roof_framing_roofing framing Sheathing after roof framing. | 2026-11-09 | 2026-11-10 | 2026-11-09 | 2026-11-09 | 0 | not_started |  | framing.roof FS |
| inspect.framing_prep | structural_and_shell | framing | framing | Framing prep inspection point | inspector | milestone | 0 | 0 |  | 0 | framing 4C Framing ready for MEPs to drill — actual framing inspection is bundled with rough MEPs. | 2026-11-11 | 2026-11-11 | 2026-11-11 | 2027-01-07 | 36.5 | not_started |  | framing.sheathing FS, structural.remove_temp_shoring FS |
| roofing.underlayment | structural_and_shell | roofing | roof_framing_roofing | Roof underlayment + drip edge + flashing | roofing | work | 1 | 3 |  | 1 | roof_framing_roofing addition-underlayment Synthetic underlayment + drip edge + flashing — makes building weathertight. | 2026-11-11 | 2026-11-11 | 2026-11-11 | 2026-11-11 | 0 | not_started |  | framing.sheathing FS |
| windows.install | structural_and_shell | envelope | windows_doors_weatherproofing | Install windows + exterior door | windows_doors | work | 2 | 2 |  | 1 | windows_doors_weatherproofing 4J Windows install AS SOON AS roof framed. Parallel with underlayment. | 2026-11-09 | 2026-11-11 | 2026-11-09 | 2026-11-10 | 0.5 | not_started |  | framing.roof FS, checkpoint.windows_arrived FS |
| roofing.shingles | structural_and_shell | roofing | roof_framing_roofing | Install architectural shingles + ridge vent | roofing | work | 1 | 3 |  | 0 | roof_framing_roofing roofing Small addition roof <6000 sqft — 1 day. | 2026-11-12 | 2026-11-12 | 2026-11-12 | 2026-12-30 | 30.5 | not_started |  | roofing.underlayment FS |
| exterior.wrb | structural_and_shell | exterior | exterior_finishes | Weather resistive barrier | siding | work | 0.5 | 2 |  | 0 | exterior_finishes exterior WRB before siding. | 2026-11-11 | 2026-11-11 | 2026-11-11 | 2026-12-31 | 32 | not_started |  | framing.sheathing FS |
| milestone.dried_in | structural_and_shell | envelope | windows_doors_weatherproofing | Dried-in milestone | general | milestone | 0 | 0 |  | 0 | windows_doors_weatherproofing dried-in Dried-in = shingles + windows + WRB. Gates exterior siding + interior comfort; does NOT gate MEPs. | 2026-11-13 | 2026-11-13 | 2026-11-13 | 2026-12-31 | 30.5 | not_started |  | roofing.shingles FS, windows.install FS, exterior.wrb FS |
| exterior.siding_trim_gutters | structural_and_shell | exterior | exterior_finishes | Vinyl siding + trim + soffit + fascia + gutters | siding | work | 4 | 3 |  | 1 | exterior_finishes same-crew-exterior Single continuous block per TCR same-crew-exterior pattern. | 2026-11-13 | 2026-11-18 | 2026-11-13 | 2026-12-31 | 30.5 | not_started |  | milestone.dried_in FS |
| plumbing.tank_set | rough_trades | rough_plumbing | hvac | Set tankless water heater | plumbing | work | 0.5 | 2 |  | 1 | hvac 4H Tank set BEFORE plumbing rough-in — rough stubs into set tank. | 2026-11-12 | 2026-11-12 | 2026-11-12 | 2026-11-12 | 0 | not_started |  | checkpoint.tankless_arrived FS, roofing.underlayment FS, windows.install FS |
| plumbing.rough_in | rough_trades | rough_plumbing | plumbing | Plumbing rough-in (master bath + W/D relocate) | plumbing | work | 3 | 2 |  | 1 | plumbing 4I Rough-in after tank set, after MEP gate (underlayment + windows). | 2026-11-12 | 2026-11-17 | 2026-11-12 | 2026-11-12 | 0 | not_started |  | plumbing.tank_set FS |
| electrical.rough_in | rough_trades | rough_electrical | electrical | Rough electrical + 100A subpanel install | electrical | work | 3 | 2 |  | 1 | electrical 4I, overlap Electrical rough-in runs parallel with plumbing (SS +1). Subpanel + recessed + circuits + elevator dedicated circuit. | 2026-11-13 | 2026-11-18 | 2026-11-13 | 2026-11-13 | 0 | not_started |  | roofing.underlayment FS, windows.install FS, checkpoint.subpanel_arrived FS, plumbing.rough_in SS 1 |
| hvac.minisplit_rough | rough_trades | rough_hvac | hvac | Mini-split line set rough | hvac | work | 0.5 | 1 |  | 0 | hvac 4G, minisplit Mini-split line set — 0.5d/1 person. Parallel with electrical. | 2026-11-16 | 2026-11-16 | 2026-11-16 | 2026-11-18 | 1.5 | not_started |  | roofing.underlayment FS, windows.install FS, electrical.rough_in SS 1 |
| inspect.rough_bundled | rough_inspections | rough_inspections | framing | Bundled rough MEP + framing inspection | inspector | inspection | 0.5 | 1 |  | 1 | framing 4C Bundled — one inspector, one day, covers rough MEPs + framing. | 2026-11-19 | 2026-11-19 | 2026-11-19 | 2026-11-19 | 0 | not_started |  | electrical.rough_in FS 1, plumbing.rough_in FS 1, hvac.minisplit_rough FS 1 |
| buffer.post_rough_inspection | rough_inspections | rough_inspections | framing | Post-inspection punch buffer | general | lead_time | 0 | 0 |  | 0 | framing 4D 2-day buffer for trades to punch list before insulation. | 2026-11-20 | 2026-11-23 | 2026-11-20 | 2026-11-20 | 0 | not_started | 2 | inspect.rough_bundled FS |

| id | phase_id | component_id | section_id | name | trade | kind | duration_days | crew_size | lead_up_working_days | derived_from | scheduled_start | scheduled_end | earliest_start | latest_start | float_days | status | depends_on |
| --- | --- | --- | --- | --- | --- | --- | --- | --- | --- | --- | --- | --- | --- | --- | --- | --- | --- |
| insulation.install | insulation_and_drywall | insulation | insulation_air_sealing | Insulation + air sealing | insulation | work | 1.5 | 2 | 1 | insulation_air_sealing insulation Batts + air sealing for addition. | 2026-11-24 | 2026-11-25 | 2026-11-24 | 2026-11-24 | 0 | not_started | buffer.post_rough_inspection FS |
| inspect.insulation | insulation_and_drywall | insulation | insulation_air_sealing | Insulation inspection | inspector | inspection | 0.5 | 1 | 1 | insulation_air_sealing inspections Insulation inspection before drywall. | 2026-11-30 | 2026-11-30 | 2026-11-30 | 2026-11-30 | 0 | not_started | insulation.install FS 1 |
| drywall.consolidated | insulation_and_drywall | drywall | drywall | Drywall hang + tape + sand + prime (addition + hall bath retrofit) | drywall | work | 6 | 3 | 2 | drywall drywall-consolidate Consolidated hang/tape/sand block covering addition + existing bedroom + hall bath patch. Retrofit drywall rolled into main block per rules. | 2026-12-01 | 2026-12-08 | 2026-12-01 | 2026-12-01 | 0 | not_started | inspect.insulation FS |
| paint.phase_1 | insulation_and_drywall | paint_phase1 | interior_finish | Paint phase 1: prime + ceiling finish coat | paint | work | 1 | 2 | 1 | interior_finish 4E 1d covers primer (walls + ceilings) AM + ceiling finish coat PM same day per Will's standard sequence. | 2026-12-09 | 2026-12-09 | 2026-12-09 | 2026-12-09 | 0 | not_started | drywall.consolidated FS, order.paint FS |
| tile.shower_substrate | interior_finishes | tile | master_bath | Master bath tile shower substrate + waterproofing | tile | work | 2 | 2 | 1 | master_bath 4L, tile Kerdi/Wedi waterproofing per TCR standard. | 2026-12-10 | 2026-12-11 | 2026-12-10 | 2026-12-10 | 0 | not_started | paint.phase_1 FS, checkpoint.tile_arrived FS |
| tile.shower_set | interior_finishes | tile | master_bath | Set master bath shower tile | tile | work | 3 | 2 | 0 | master_bath tile Wall + floor tile set. | 2026-12-14 | 2026-12-16 | 2026-12-14 | 2026-12-14 | 0 | not_started | tile.shower_substrate FS |
| tile.grout_seal | interior_finishes | tile | master_bath | Grout + seal tile | tile | work | 1 | 2 | 0 | master_bath tile Grout + seal after set cure. | 2026-12-18 | 2026-12-18 | 2026-12-18 | 2026-12-18 | 0 | not_started | tile.shower_set FS 1 |
| flooring.install | interior_finishes | flooring | interior_finish | Install LVP flooring | flooring | work | 2 | 2 | 1 | interior_finish 4L Flooring after paint phase 1 + wet-area substrate. | 2026-12-14 | 2026-12-15 | 2026-12-14 | 2026-12-16 | 2 | not_started | paint.phase_1 FS, tile.shower_substrate FS, checkpoint.flooring_arrived FS |
| trim.install | interior_finishes | trim | interior_finish | Trim carpentry (base + case) | trim_carpentry | work | 3 | 2 | 1 | interior_finish 4L Trim after flooring. | 2026-12-16 | 2026-12-18 | 2026-12-16 | 2026-12-18 | 2 | not_started | flooring.install FS |
| cabinets.install | interior_finishes | cabinets | master_bath | Install master bath vanity | cabinets | work | 0.5 | 2 | 0 | master_bath cabinets Vanity install 0.5d. | 2026-12-16 | 2026-12-16 | 2026-12-16 | 2026-12-18 | 2.5 | not_started | flooring.install FS, paint.phase_1 FS, checkpoint.vanity_arrived FS |
| retrofit.hall_bath_repaint | interior_finishes | hall_bath_mod | hall_bath_closeout | Existing hall bath finishes + repaint | paint | work | 1 | 2 | 0 | hall_bath_closeout retrofit Retrofit work in existing hall bath — flagged via Signal B (existing) and Signal A (not in addition objective). Runs in own component. | 2026-12-09 | 2026-12-09 | 2026-12-09 | 2026-12-22 | 9 | not_started | drywall.consolidated FS |
| retrofit.hallway_switch_patch | interior_finishes | hall_bath_mod | electrical | Relocate existing hallway switch + drywall patch + paint | electrical | work | 1 | 2 | 0 | electrical retrofit Existing hallway switch relocation flagged as retrofit — Signal B. | 2026-12-09 | 2026-12-09 | 2026-12-09 | 2027-01-06 | 17.5 | not_started | drywall.consolidated FS |
| electrical.finish | finish_trades | finish_electrical | electrical | Electrical finish (recessed, vanity, fan, outlets, dimmers) | electrical | work | 2 | 2 | 1 | electrical 4L Electrical finish after paint phase 1. | 2026-12-10 | 2026-12-11 | 2026-12-10 | 2026-12-18 | 6 | not_started | paint.phase_1 FS |
| plumbing.finish | finish_trades | finish_plumbing | plumbing | Plumbing finish | plumbing | work | 2 | 2 | 1 | plumbing 4L Plumbing finish after cabinets + flooring + tile grout. | 2026-12-21 | 2026-12-22 | 2026-12-21 | 2026-12-21 | 0 | not_started | cabinets.install FS, flooring.install FS, tile.grout_seal FS, checkpoint.fixtures_arrived FS |
| hvac.minisplit_install | finish_trades | finish_hvac | hvac | Mini-split unit install | hvac | work | 1 | 1 | 0 | hvac 4N, minisplit Mini-split install 1d/1 person. Serialized AFTER electrical.finish per Rule 4N to preserve 2-trade interior cap. | 2026-12-14 | 2026-12-14 | 2026-12-14 | 2026-12-22 | 6 | not_started | paint.phase_1 FS, checkpoint.minisplit_arrived FS, electrical.finish FS |
| shower.glass_install | finish_trades | shower_glass | master_bath | Install custom shower glass | glazing | work | 0.5 | 2 | 0 | master_bath glass Glass install after tile complete. | 2026-12-21 | 2026-12-21 | 2026-12-21 | 2027-01-07 | 10 | not_started | tile.grout_seal FS, checkpoint.shower_glass_arrived FS |
| paint.phase_2 | interior_finishes | paint_phase2 | interior_finish | Paint phase 2: final wall coat + touch-ups | paint | work | 1 | 2 | 0 | interior_finish 4F Paint phase 2 is LAST work task. Gates on every finish trade + retrofit paint. | 2026-12-23 | 2026-12-23 | 2026-12-23 | 2026-12-23 | 0 | not_started | trim.install FS, flooring.install FS, cabinets.install FS, tile.grout_seal FS, plumbing.finish FS, electrical.finish FS, hvac.minisplit_install FS, retrofit.hall_bath_repaint FS |
| milestone.substantial_completion | interior_finishes | paint_phase2 | interior_finish | Substantial completion | general | milestone | 0 | 0 | 0 | interior_finish 4F Substantial completion = paint phase 2 finishing. | 2026-12-28 | 2026-12-28 | 2026-12-28 | 2026-12-28 | 0 | not_started | paint.phase_2 FS |
| closeout.pm_walkthrough | closeout | punch_and_close | hall_bath_closeout | PM walkthrough with customer (produce punch list) | pm | work | 0.5 | 1 | 1 | hall_bath_closeout closeout Walkthrough produces punch list. | 2026-12-28 | 2026-12-28 | 2026-12-28 | 2026-12-28 | 0 | not_started | milestone.substantial_completion FS |
| closeout.punch_list | closeout | punch_and_close | hall_bath_closeout | Punch-list work (multi-trade returns) | general | work | 2 | 2 | 0 | hall_bath_closeout closeout 1-3 day punch. Section total negative = credit; keep close-out lean. | 2026-12-28 | 2026-12-30 | 2026-12-28 | 2026-12-28 | 0 | not_started | closeout.pm_walkthrough FS |
| closeout.final_clean | closeout | punch_and_close | hall_bath_closeout | Final clean | cleanup | work | 1 | 2 | 0 | hall_bath_closeout closeout Final clean before final inspection. | 2026-12-30 | 2026-12-31 | 2026-12-30 | 2026-12-30 | 0 | not_started | closeout.punch_list FS |
| inspect.final_bundled | closeout | punch_and_close | hall_bath_closeout | Bundled final E/P/M + final building inspection | inspector | inspection | 0.5 | 1 | 1 | hall_bath_closeout 4M All finals bundled — one inspector, one day. | 2027-01-05 | 2027-01-05 | 2027-01-05 | 2027-01-05 | 0 | not_started | closeout.final_clean FS 2 |
| closeout.wills_walkthrough | closeout | punch_and_close | hall_bath_closeout | Will's final walkthrough with customer | general | work | 0.5 | 1 | 0 | hall_bath_closeout wills-walkthrough Will's personal customer handoff — last task on schedule. | 2027-01-07 | 2027-01-07 | 2027-01-07 | 2027-01-07 | 0 | not_started | inspect.final_bundled FS 1 |
