| id | phase_id | component_id | section_id | name | trade | kind | duration_days | crew_size | pre_construction_offset_working_days | lead_up_working_days | derived_from | scheduled_start | scheduled_end | earliest_start | latest_start | float_days | status | lead_time_days | binding_successors_of_this | depends_on | binding_predecessors |
| --- | --- | --- | --- | --- | --- | --- | --- | --- | --- | --- | --- | --- | --- | --- | --- | --- | --- | --- | --- | --- | --- |
| general.permitting | pre_construction | permits_and_planning | general_conditions | Building permit walk-in | general | work | 1 | 1 | 15 | 2 | general_conditions 4A, 4S 1-day walk-in permit task 3 weeks before on-site start. Will typically gets permits same-day. | 2026-09-21 | 2026-09-21 | 2026-09-21 | 2026-10-14 | 17 | not_started |  |  |  |  |
| permit.tdec_septic | pre_construction | tdec_septic | general_conditions | TDEC septic permit process | general | lead_time | 0 | 0 | 30 | 0 | general_conditions addition.tdec Scope explicitly requires TDEC septic inspection pre-construction. 6-week lead. Anchored via pre_construction_offset_working_days: 30 per addition rules. | 2026-08-28 | 2026-10-09 | 2026-08-28 | 2026-09-04 | 5 | not_started | 42 |  |  |  |
| prep.amperage_check | pre_construction | amperage_check | electrical | Existing service amperage check | general | work | 0.5 | 1 | 15 | 1 | electrical addition.amperage Subpanel in scope; verify existing main service capacity before signed contract. | 2026-09-21 | 2026-09-21 | 2026-09-21 | 2027-01-25 | 85.5 | not_started |  |  |  |  |
| checkpoint.selections_finalized | pre_construction | checkpoints | general_conditions | Customer selections finalized | general | milestone | 0 | 0 | 15 | 5 | general_conditions 4P PM confirms tile, paint, vanity, fixture, LVP selections locked 3 weeks before on-site. | 2026-09-21 | 2026-09-21 | 2026-09-21 | 2026-12-09 | 55.5 | not_started |  | order.lvp FS 0 2026-10-12 2026-10-12, order.paint FS 0 2026-10-12 2026-10-12, order.tile FS 0 2026-10-12 2026-10-12, order.vanity_fixtures FS 0 2026-10-12 2026-10-12 |  |  |
| checkpoint.equipment_confirmed_demo | pre_construction | checkpoints | demolition_site_work | Demo equipment confirmed | general | milestone | 0 | 0 | 10 | 2 | demolition_site_work 4O PM confirms dumpster, mini-ex, saw reserved 2 weeks before demo. | 2026-09-28 | 2026-09-28 | 2026-09-28 | 2027-01-26 | 81 | not_started |  |  |  |  |
| checkpoint.equipment_confirmed_drywall | pre_construction | checkpoints | drywall | Drywall equipment confirmed | general | milestone | 0 | 0 | 10 | 2 | drywall 4O PM confirms drywall lift & second dumpster reserved 2 weeks out. | 2026-09-28 | 2026-09-28 | 2026-09-28 | 2027-01-26 | 81 | not_started |  |  |  |  |
| customer.call_ben | pre_construction | customer_touchpoints | general_conditions | Call Ben (owner's brother) — 2 days before start | pm | work | 1 | 1 | 2 | 0 | general_conditions pm_notes PM notes: Ben (John Simons' brother) is to be called 2 days before job starts. Whole-day event per rule 11. | 2026-10-08 | 2026-10-08 | 2026-10-08 | 2027-01-25 | 72 | not_started |  |  |  |  |
| order.windows | procurement_long_leads | procurement_windows | windows_doors_weatherproofing | Order windows + exterior door | general | work | 0.5 | 1 |  | 2 | windows_doors_weatherproofing 4R, addition.windows PM places windows/door order. 3-task pattern. | 2026-10-12 | 2026-10-12 | 2026-10-12 | 2026-10-28 | 12.5 | not_started |  | wait.windows FS 0 2026-10-13 2026-11-02 |  |  |
| wait.windows | procurement_long_leads | procurement_windows | windows_doors_weatherproofing | Windows delivery window | general | lead_time | 0 | 0 |  | 0 | windows_doors_weatherproofing 4R 21 calendar day supplier lead for stock windows. | 2026-10-13 | 2026-11-02 | 2026-10-13 | 2026-10-29 | 12 | not_started | 21 | checkpoint.windows_arrived FS 0 2026-11-03 2026-11-03 | order.windows FS | order.windows FS 0 |
| checkpoint.windows_arrived | procurement_long_leads | procurement_windows | windows_doors_weatherproofing | Windows delivered | general | milestone | 0 | 0 |  | 0 | windows_doors_weatherproofing 4R Windows on site. Gates windows.install. | 2026-11-03 | 2026-11-03 | 2026-11-03 | 2026-11-19 | 12 | not_started |  |  | wait.windows FS | wait.windows FS 0 |
| order.lvl | procurement_long_leads | procurement_lvl | structural_modifications | Order LVL beam | general | work | 0.5 | 1 |  | 2 | structural_modifications 4R, addition.lvl 3-ply 14" LVL beam, defaulting to 14-day supplier lead for safety. | 2026-10-12 | 2026-10-12 | 2026-10-12 | 2026-11-10 | 21.5 | not_started |  | wait.lvl FS 0 2026-10-13 2026-10-26 |  |  |
| wait.lvl | procurement_long_leads | procurement_lvl | structural_modifications | LVL delivery window | general | lead_time | 0 | 0 |  | 0 | structural_modifications 4R 14-day standard LVL lead. | 2026-10-13 | 2026-10-26 | 2026-10-13 | 2026-11-11 | 21 | not_started | 14 | checkpoint.lvl_arrived FS 0 2026-10-27 2026-10-27 | order.lvl FS | order.lvl FS 0 |
| checkpoint.lvl_arrived | procurement_long_leads | procurement_lvl | structural_modifications | LVL delivered | general | milestone | 0 | 0 |  | 0 | structural_modifications 4R Gates structural.install_lvl. | 2026-10-27 | 2026-10-27 | 2026-10-27 | 2026-11-25 | 21 | not_started |  | structural.install_lvl FS 0 2026-10-27 2026-10-28 | wait.lvl FS | wait.lvl FS 0 |
| order.subpanel | procurement_long_leads | procurement_subpanel | electrical | Order 100A subpanel | general | work | 0.5 | 1 |  | 2 | electrical 4R 100A subpanel order. | 2026-10-12 | 2026-10-12 | 2026-10-12 | 2026-11-12 | 23 | not_started |  | wait.subpanel FS 0 2026-10-13 2026-10-22 |  |  |
| wait.subpanel | procurement_long_leads | procurement_subpanel | electrical | Subpanel delivery window | general | lead_time | 0 | 0 |  | 0 | electrical 4R 7-14 day panel lead. | 2026-10-13 | 2026-10-22 | 2026-10-13 | 2026-11-12 | 22.5 | not_started | 10 | checkpoint.subpanel_arrived FS 0 2026-10-23 2026-10-23 | order.subpanel FS | order.subpanel FS 0 |
| checkpoint.subpanel_arrived | procurement_long_leads | procurement_subpanel | electrical | Subpanel delivered | general | milestone | 0 | 0 |  | 0 | electrical 4R Gates electrical.rough_in. | 2026-10-23 | 2026-10-23 | 2026-10-23 | 2026-11-24 | 22.5 | not_started |  |  | wait.subpanel FS | wait.subpanel FS 0 |
| order.minisplit | procurement_long_leads | procurement_minisplit | hvac | Order mini-split unit | general | work | 0.5 | 1 |  | 2 | hvac 4R Mini-split unit. | 2026-10-12 | 2026-10-12 | 2026-10-12 | 2026-12-28 | 51.5 | not_started |  | wait.minisplit FS 0 2026-10-13 2026-10-22 |  |  |
| wait.minisplit | procurement_long_leads | procurement_minisplit | hvac | Mini-split delivery window | general | lead_time | 0 | 0 |  | 0 | hvac 4R 7-14 day lead. | 2026-10-13 | 2026-10-22 | 2026-10-13 | 2026-12-29 | 51 | not_started | 10 | checkpoint.minisplit_arrived FS 0 2026-10-23 2026-10-23 | order.minisplit FS | order.minisplit FS 0 |
| checkpoint.minisplit_arrived | procurement_long_leads | procurement_minisplit | hvac | Mini-split delivered | general | milestone | 0 | 0 |  | 0 | hvac 4R Gates hvac.minisplit_install. | 2026-10-23 | 2026-10-23 | 2026-10-23 | 2027-01-11 | 51 | not_started |  |  | wait.minisplit FS | wait.minisplit FS 0 |
| order.tankless | procurement_long_leads | procurement_tankless | hvac | Order tankless water heater | general | work | 0.5 | 1 |  | 2 | hvac 4R Tankless WH order. | 2026-10-12 | 2026-10-12 | 2026-10-12 | 2026-11-10 | 21.5 | not_started |  | wait.tankless FS 0 2026-10-13 2026-10-22 |  |  |
| wait.tankless | procurement_long_leads | procurement_tankless | hvac | Tankless WH delivery window | general | lead_time | 0 | 0 |  | 0 | hvac 4R 7-14 day lead. | 2026-10-13 | 2026-10-22 | 2026-10-13 | 2026-11-11 | 21 | not_started | 10 | checkpoint.tankless_arrived FS 0 2026-10-23 2026-10-23 | order.tankless FS | order.tankless FS 0 |
| checkpoint.tankless_arrived | procurement_long_leads | procurement_tankless | hvac | Tankless WH delivered | general | milestone | 0 | 0 |  | 0 | hvac 4R Gates plumbing.tank_set. | 2026-10-23 | 2026-10-23 | 2026-10-23 | 2026-11-23 | 21 | not_started |  |  | wait.tankless FS | wait.tankless FS 0 |
| order.tile | procurement_long_leads | procurement_tile | master_bath | Order tile | general | work | 0.5 | 1 |  | 2 | master_bath 4R Tile order after selections locked. | 2026-10-12 | 2026-10-12 | 2026-10-12 | 2026-12-09 | 40.5 | not_started |  | wait.tile FS 0 2026-10-13 2026-10-26 | checkpoint.selections_finalized FS | checkpoint.selections_finalized FS 0 |
| wait.tile | procurement_long_leads | procurement_tile | master_bath | Tile delivery window | general | lead_time | 0 | 0 |  | 0 | master_bath 4R 14-day supplier lead. | 2026-10-13 | 2026-10-26 | 2026-10-13 | 2026-12-10 | 40 | not_started | 14 | checkpoint.tile_arrived FS 0 2026-10-27 2026-10-27 | order.tile FS | order.tile FS 0 |
| checkpoint.tile_arrived | procurement_long_leads | procurement_tile | master_bath | Tile delivered | general | milestone | 0 | 0 |  | 0 | master_bath 4R Gates tile install. | 2026-10-27 | 2026-10-27 | 2026-10-27 | 2026-12-28 | 40 | not_started |  |  | wait.tile FS | wait.tile FS 0 |
| order.shower_glass | procurement_long_leads | procurement_shower_glass | master_bath | Order shower glass (after template) | general | work | 0.5 | 1 |  | 2 | master_bath 4R Shower glass templated after tile complete. | 2027-01-08 | 2027-01-08 | 2027-01-08 | 2027-01-13 | 3 | not_started |  | wait.shower_glass FS 0 2027-01-11 2027-01-20 | tile.grout_seal FS | tile.grout_seal FS 0 |
| wait.shower_glass | procurement_long_leads | procurement_shower_glass | master_bath | Shower glass fabrication | general | lead_time | 0 | 0 |  | 0 | master_bath 4R 7-14 day fab. | 2027-01-11 | 2027-01-20 | 2027-01-11 | 2027-01-13 | 2.5 | not_started | 10 | checkpoint.shower_glass_arrived FS 0 2027-01-21 2027-01-21 | order.shower_glass FS | order.shower_glass FS 0 |
| checkpoint.shower_glass_arrived | procurement_long_leads | procurement_shower_glass | master_bath | Shower glass delivered | general | milestone | 0 | 0 |  | 0 | master_bath 4R Gates shower glass install. | 2027-01-21 | 2027-01-21 | 2027-01-21 | 2027-01-25 | 2.5 | not_started |  | glazing.shower_glass FS 0 2027-01-21 2027-01-21 | wait.shower_glass FS | wait.shower_glass FS 0 |
| order.lvp | procurement_long_leads | procurement_lvp | interior_finish | Order LVP flooring | general | work | 0.5 | 1 |  | 2 | interior_finish 4R LVP order after selections locked. | 2026-10-12 | 2026-10-12 | 2026-10-12 | 2026-12-16 | 45.5 | not_started |  | wait.lvp FS 0 2026-10-13 2026-10-22 | checkpoint.selections_finalized FS | checkpoint.selections_finalized FS 0 |
| wait.lvp | procurement_long_leads | procurement_lvp | interior_finish | LVP delivery window | general | lead_time | 0 | 0 |  | 0 | interior_finish 4R Standard LVP lead. | 2026-10-13 | 2026-10-22 | 2026-10-13 | 2026-12-17 | 45 | not_started | 10 | checkpoint.lvp_arrived FS 0 2026-10-23 2026-10-23 | order.lvp FS | order.lvp FS 0 |
| checkpoint.lvp_arrived | procurement_long_leads | procurement_lvp | interior_finish | LVP delivered | general | milestone | 0 | 0 |  | 0 | interior_finish 4R Gates flooring.install. | 2026-10-23 | 2026-10-23 | 2026-10-23 | 2026-12-31 | 45 | not_started |  |  | wait.lvp FS | wait.lvp FS 0 |
| order.vanity_fixtures | procurement_long_leads | procurement_vanity | master_bath | Order vanity, fixtures, mirror | general | work | 0.5 | 1 |  | 2 | master_bath 4R Bath fixtures order. | 2026-10-12 | 2026-10-12 | 2026-10-12 | 2026-12-22 | 49.5 | not_started |  | wait.vanity_fixtures FS 0 2026-10-13 2026-10-22 | checkpoint.selections_finalized FS | checkpoint.selections_finalized FS 0 |
| wait.vanity_fixtures | procurement_long_leads | procurement_vanity | master_bath | Vanity/fixtures delivery | general | lead_time | 0 | 0 |  | 0 | master_bath 4R Standard fixture lead. | 2026-10-13 | 2026-10-22 | 2026-10-13 | 2026-12-23 | 49 | not_started | 10 | checkpoint.vanity_fixtures_arrived FS 0 2026-10-23 2026-10-23 | order.vanity_fixtures FS | order.vanity_fixtures FS 0 |
| checkpoint.vanity_fixtures_arrived | procurement_long_leads | procurement_vanity | master_bath | Vanity/fixtures delivered | general | milestone | 0 | 0 |  | 0 | master_bath 4R Gates cabinets/plumbing finish. | 2026-10-23 | 2026-10-23 | 2026-10-23 | 2027-01-07 | 49 | not_started |  |  | wait.vanity_fixtures FS | wait.vanity_fixtures FS 0 |
| order.paint | procurement_long_leads | procurement_paint | interior_finish | Order paint | general | work | 1 | 1 |  | 0 | interior_finish 4R Paint is short-lead — collapsed to a single 1-day order task about 1 week before use. | 2026-10-12 | 2026-10-12 | 2026-10-12 | 2026-12-22 | 49 | not_started |  |  | checkpoint.selections_finalized FS | checkpoint.selections_finalized FS 0 |
| general.site_setup | site_prep | site_setup | general_conditions | Site setup & protection | general | work | 1 | 2 |  | 2 | general_conditions site_prep On-site day 1 — site protection, staging. | 2026-10-12 | 2026-10-12 | 2026-10-12 | 2026-10-13 | 1 | not_started |  | equipment.dumpster_arrive FS 0 2026-10-13 2026-10-13, equipment.miniex_arrive FS 0 2026-10-13 2026-10-13, prep.electrical_disconnect_relocate FS 0 2026-10-13 2026-10-13, prep.heat_pump_relocate FS 0 2026-10-13 2026-10-13 |  |  |
| equipment.dumpster_arrive | site_prep | site_setup | demolition_site_work | Dumpster arrives | general | work | 0.5 | 1 |  | 0 | demolition_site_work 4O Dumpster lands day before demo. | 2026-10-13 | 2026-10-13 | 2026-10-13 | 2026-10-14 | 1.5 | not_started |  |  | general.site_setup FS | general.site_setup FS 0 |
| equipment.miniex_arrive | site_prep | site_setup | excavation_foundation | Mini-ex delivered | general | work | 0.5 | 1 |  | 0 | excavation_foundation 4O Mini-ex delivered day before excavation. | 2026-10-13 | 2026-10-13 | 2026-10-13 | 2026-10-16 | 3.5 | not_started |  |  | general.site_setup FS | general.site_setup FS 0 |
| prep.heat_pump_relocate | site_prep | prep_work_before_demo | demolition_site_work | Relocate existing heat pump | hvac | work | 1 | 2 |  | 1 | demolition_site_work 4K, addition.heatpump Scope names heat pump relocation. Must land BEFORE demo main phase — sits in site_prep, not demo. | 2026-10-13 | 2026-10-13 | 2026-10-13 | 2026-10-14 | 1 | not_started |  | demo.sawcut_walkway FS 0 2026-10-14 2026-10-14 | general.site_setup FS | general.site_setup FS 0 |
| prep.electrical_disconnect_relocate | site_prep | prep_work_before_demo | demolition_site_work | Relocate electrical disconnect | electrical | work | 0.5 | 1 |  | 1 | demolition_site_work addition.heatpump Scope names electrical disconnect relocation. Runs alongside heat pump prep. | 2026-10-13 | 2026-10-13 | 2026-10-13 | 2026-10-14 | 1.5 | not_started |  |  | general.site_setup FS | general.site_setup FS 0 |
| demo.sawcut_walkway | demo_and_protection | demo_main | demolition_site_work | Saw cut & remove walkway + site obstructions | demo | work | 1 | 3 |  | 2 | demolition_site_work demo Saw cut concrete + remove railroad ties, prep footprint. | 2026-10-14 | 2026-10-14 | 2026-10-14 | 2026-10-15 | 1 | not_started |  | demo.haul_out FS 0 2026-10-15 2026-10-15 | equipment.dumpster_arrive FS, prep.heat_pump_relocate FS, prep.electrical_disconnect_relocate FS, general.permitting FS | prep.heat_pump_relocate FS 0 |
| demo.haul_out | demo_and_protection | demo_main | demolition_site_work | Demo haul-out | demo | work | 1 | 3 |  | 0 | demolition_site_work demo Debris haul-out. | 2026-10-15 | 2026-10-15 | 2026-10-15 | 2026-10-16 | 1 | not_started |  | demo.expose_bearing_wall FS 0 2026-10-16 2026-10-16, excavation.dig FS 0 2026-10-16 2026-10-19 | demo.sawcut_walkway FS | demo.sawcut_walkway FS 0 |
| excavation.dig | structural_and_shell | foundation | excavation_foundation | Excavate for footings & slab | excavation | work | 2 | 2 |  | 1 | excavation_foundation excavation, addition.tdec Excavation gated on TDEC permit-in-hand and demo complete. | 2026-10-16 | 2026-10-19 | 2026-10-16 | 2026-10-19 | 1 | not_started |  | foundation.form_and_prep FS 0 2026-10-20 2026-10-21 | demo.haul_out FS, equipment.miniex_arrive FS, permit.tdec_septic FS | demo.haul_out FS 0 |
| foundation.form_and_prep | structural_and_shell | foundation | excavation_foundation | Form footings + gravel + vapor + rebar | concrete | work | 2 | 4 |  | 1 | excavation_foundation 4B Combined prep task — footings + gravel + vapor + rebar in one block per monolithic pattern. | 2026-10-20 | 2026-10-21 | 2026-10-20 | 2026-10-21 | 1 | not_started |  | inspect.footing FS 1 2026-10-23 2026-10-23 | excavation.dig FS | excavation.dig FS 0 |
| inspect.footing | structural_and_shell | foundation | excavation_foundation | Footing inspection | inspector | inspection | 1 | 1 |  | 1 | excavation_foundation 4B, inspections Single footing inspection covers both footing and slab prep — monolithic pattern. | 2026-10-23 | 2026-10-23 | 2026-10-23 | 2026-10-26 | 1 | not_started |  | foundation.monolithic_pour FS 0 2026-10-26 2026-10-26 | foundation.form_and_prep FS 1 | foundation.form_and_prep FS 1 |
| foundation.monolithic_pour | structural_and_shell | foundation | excavation_foundation | Monolithic pour (footings + slab) | concrete | work | 1 | 4 |  | 1 | excavation_foundation 4B Monolithic pour — footings and 4" slab in one day. | 2026-10-26 | 2026-10-26 | 2026-10-26 | 2026-10-27 | 1 | not_started |  | foundation.cure FS 0 2026-10-27 2026-10-28 | inspect.footing FS | inspect.footing FS 0 |
| foundation.cure | structural_and_shell | foundation | excavation_foundation | Concrete cure | general | lead_time | 0 | 0 |  | 0 | excavation_foundation 4B 2-day cure before framing loads applied. | 2026-10-27 | 2026-10-28 | 2026-10-27 | 2026-10-28 | 1 | not_started | 2 | framing.floor_system FS 0 2026-10-29 2026-11-02 | foundation.monolithic_pour FS | foundation.monolithic_pour FS 0 |
| framing.floor_system | structural_and_shell | framing | framing | Floor system + subfloor | framing | work | 3 | 3 |  | 2 | framing framing Floor system + glued/fastened subfloor. | 2026-10-29 | 2026-11-02 | 2026-10-29 | 2026-10-30 | 1 | not_started |  | framing.basement_walls FS 0 2026-11-03 2026-11-04 | foundation.cure FS | foundation.cure FS 0 |
| framing.basement_walls | structural_and_shell | framing | framing | Basement walls (2x4 @ 16" OC) | framing | work | 2 | 3 |  | 0 | framing framing Basement wall framing. | 2026-11-03 | 2026-11-04 | 2026-11-03 | 2026-11-04 | 1 | not_started |  | framing.exterior_walls FS 0 2026-11-05 2026-11-10 | framing.floor_system FS | framing.floor_system FS 0 |
| framing.exterior_walls | structural_and_shell | framing | framing | Exterior & interior walls incl. elevator shaft framing | framing | work | 4 | 3 |  | 0 | framing framing Includes 4x4 elevator shaft framed for future install per scope. | 2026-11-05 | 2026-11-10 | 2026-11-05 | 2026-11-06 | 1 | not_started |  | framing.roof FS 0 2026-11-11 2026-11-16 | framing.basement_walls FS | framing.basement_walls FS 0 |
| demo.expose_bearing_wall | structural_and_shell | lvl_subchain | structural_modifications | Expose existing load-bearing wall | demo | work | 1 | 2 |  | 1 | structural_modifications addition.lvl Expose the existing load-bearing wall for LVL retrofit — independent from new-build framing chain. | 2026-10-16 | 2026-10-16 | 2026-10-16 | 2026-11-23 | 26 | not_started |  | structural.temp_shoring FS 0 2026-10-19 2026-10-19 | demo.haul_out FS | demo.haul_out FS 0 |
| structural.temp_shoring | structural_and_shell | lvl_subchain | structural_modifications | Temporary shoring | framing | work | 1 | 2 |  | 0 | structural_modifications addition.lvl Temporary shoring per scope. | 2026-10-19 | 2026-10-19 | 2026-10-19 | 2026-11-24 | 26 | not_started |  |  | demo.expose_bearing_wall FS | demo.expose_bearing_wall FS 0 |
| structural.install_lvl | structural_and_shell | lvl_subchain | structural_modifications | Install 3-ply 14" LVL beam | framing | work | 2 | 2 |  | 0 | structural_modifications addition.lvl Install LVL over 15'6" span. | 2026-10-27 | 2026-10-28 | 2026-10-27 | 2026-11-25 | 21 | not_started |  | structural.remove_temp_shoring FS 0 2026-10-29 2026-10-29 | structural.temp_shoring FS, checkpoint.lvl_arrived FS | checkpoint.lvl_arrived FS 0 |
| structural.remove_temp_shoring | structural_and_shell | lvl_subchain | structural_modifications | Remove temporary shoring | framing | work | 0.5 | 2 |  | 0 | structural_modifications addition.lvl Load transfer to LVL, remove shoring. Covered by bundled framing inspection. | 2026-10-29 | 2026-10-29 | 2026-10-29 | 2026-12-01 | 21 | not_started |  |  | structural.install_lvl FS | structural.install_lvl FS 0 |
| framing.roof | structural_and_shell | roof_tie_in | roof_framing_roofing | Roof framing (stick frame) + tie-in to existing | framing | work | 4 | 3 |  | 1 | roof_framing_roofing addition.trusses, framing Small addition (~300 sqft roof plate, <24' span) — stick-framed per addition rule default. No procurement.trusses. Includes tie-in to existing 6/12 roof. | 2026-11-11 | 2026-11-16 | 2026-11-11 | 2026-11-12 | 1 | not_started |  | framing.sheathing FS 0 2026-11-17 2026-11-18, roof.concealed_buffer SS 1 2026-11-12 2026-11-16, windows.install FS 0 2026-11-17 2026-11-18 | framing.exterior_walls FS | framing.exterior_walls FS 0 |
| roof.concealed_buffer | structural_and_shell | roof_tie_in | roof_framing_roofing | Concealed roof tie-in buffer | general | lead_time | 0 | 0 |  | 0 | roof_framing_roofing addition.roof_tie_in 3-day buffer for concealed existing rafter conditions during tie-in. | 2026-11-12 | 2026-11-16 | 2026-11-12 | 2027-01-21 | 45 | not_started | 3 |  | framing.roof SS 1 | framing.roof SS 1 |
| framing.sheathing | structural_and_shell | roof_tie_in | roof_framing_roofing | Roof & wall sheathing + WRB | framing | work | 2 | 3 |  | 0 | roof_framing_roofing framing Roof deck sheathing + exterior wall sheathing/WRB. | 2026-11-17 | 2026-11-18 | 2026-11-17 | 2026-11-18 | 1 | not_started |  | roofing.underlayment FS 0 2026-11-19 2026-11-19 | framing.roof FS | framing.roof FS 0 |
| roofing.underlayment | structural_and_shell | roof_tie_in | roof_framing_roofing | Roof underlayment + drip edge | roofing | work | 1 | 3 |  | 1 | roof_framing_roofing addition.mep_gate Synthetic underlayment + drip edge. Gates MEPs (weatherproof). | 2026-11-19 | 2026-11-19 | 2026-11-19 | 2026-11-20 | 1 | not_started |  | roofing.shingles FS 0 2026-11-20 2026-11-20, plumbing.tank_set FS 0 2026-11-20 2026-11-20 | framing.sheathing FS | framing.sheathing FS 0 |
| roofing.shingles | structural_and_shell | roof_tie_in | roof_framing_roofing | Architectural shingles + flashing + ridge vent | roofing | work | 1 | 3 |  | 0 | roof_framing_roofing roofing Small residential roof — 1 day per baseline. | 2026-11-20 | 2026-11-20 | 2026-11-20 | 2027-01-19 | 37 | not_started |  | siding.install FS 0 2026-11-23 2026-11-30 | roofing.underlayment FS | roofing.underlayment FS 0 |
| windows.install | structural_and_shell | envelope | windows_doors_weatherproofing | Install (4) windows + exterior door | windows_doors | work | 2 | 2 |  | 1 | windows_doors_weatherproofing addition.windows, 4J Windows install IMMEDIATELY after roof framed — parallel with roofing.underlayment. Per addition rules. | 2026-11-17 | 2026-11-18 | 2026-11-17 | 2026-11-19 | 2 | not_started |  |  | framing.roof FS, checkpoint.windows_arrived FS | framing.roof FS 0 |
| siding.install | structural_and_shell | envelope | exterior_finishes | Vinyl siding + trim + gutters + fascia/soffit | siding | work | 4 | 3 |  | 1 | exterior_finishes exterior.same_crew TCR siding crew also does trim & gutters — single continuous exterior block. | 2026-11-23 | 2026-11-30 | 2026-11-23 | 2027-01-20 | 37 | not_started |  |  | windows.install FS, roofing.shingles FS | roofing.shingles FS 0 |
| plumbing.tank_set | rough_trades | rough_plumbing | hvac | Set tankless water heater | plumbing | work | 0.5 | 2 |  | 1 | hvac 4H Tank set BEFORE plumbing rough-in per rule 4H. Tankless WH installed and vent extended per scope. | 2026-11-20 | 2026-11-20 | 2026-11-20 | 2026-11-23 | 1 | not_started |  | plumbing.rough_in FS 0 2026-11-23 2026-11-25 | checkpoint.tankless_arrived FS, roofing.underlayment FS, windows.install FS | roofing.underlayment FS 0 |
| plumbing.rough_in | rough_trades | rough_plumbing | plumbing | Rough plumbing (master bath + W/D relocation) | plumbing | work | 3 | 2 |  | 1 | plumbing 4H, addition.mep_gate Rough-in stubs into already-set tank. | 2026-11-23 | 2026-11-25 | 2026-11-23 | 2026-11-23 | 0.5 | not_started |  | electrical.rough_in SS 1 2026-11-24 2026-11-30 | plumbing.tank_set FS | plumbing.tank_set FS 0 |
| electrical.rough_in | rough_trades | rough_electrical | electrical | Rough electrical incl. 100A subpanel | electrical | work | 3 | 2 |  | 1 | electrical 4G, addition.mep_gate Mini-split job → order plumbing → electrical → mini-split. Electrical SS after plumbing starts. Includes subpanel install (1d, 1 crew per rule) rolled into rough. | 2026-11-24 | 2026-11-30 | 2026-11-24 | 2026-11-24 | 0.5 | not_started |  | hvac.minisplit_rough SS 1 2026-11-25 2026-11-25, inspect.rough_bundled FS 1 2026-12-02 2026-12-02 | roofing.underlayment FS, windows.install FS, checkpoint.subpanel_arrived FS, plumbing.rough_in SS 1 | plumbing.rough_in SS 1 |
| hvac.minisplit_rough | rough_trades | rough_hvac | hvac | Mini-split line set rough-in | hvac | work | 0.5 | 1 |  | 1 | hvac 4G, addition.hvac Mini-split line set — 0.5d, 1 person per rule. | 2026-11-25 | 2026-11-25 | 2026-11-25 | 2026-12-01 | 2 | not_started |  |  | electrical.rough_in SS 1, roofing.underlayment FS, windows.install FS | electrical.rough_in SS 1 |
| inspect.rough_bundled | rough_inspections | rough_inspection_bundle | framing | Bundled rough MEP + framing inspection | inspector | inspection | 1 | 1 |  | 1 | framing 4C ONE inspector, ONE day: electrical rough, plumbing rough, HVAC rough, framing (incl. LVL retrofit). | 2026-12-02 | 2026-12-02 | 2026-12-02 | 2026-12-02 | 0.5 | not_started |  | buffer.post_rough_inspection FS 0 2026-12-03 2026-12-04 | electrical.rough_in FS 1, plumbing.rough_in FS 1, hvac.minisplit_rough FS 1, structural.remove_temp_shoring FS 1 | electrical.rough_in FS 1 |
| buffer.post_rough_inspection | rough_inspections | rough_inspection_bundle | framing | Post-rough-inspection punch buffer | general | lead_time | 0 | 0 |  | 0 | framing 4D Standard 2-day punch buffer before insulation. | 2026-12-03 | 2026-12-04 | 2026-12-03 | 2026-12-03 | 0.5 | not_started | 2 | insulation.install FS 0 2026-12-07 2026-12-07 | inspect.rough_bundled FS | inspect.rough_bundled FS 0 |
| insulation.install | insulation_and_drywall | insulation | insulation_air_sealing | Insulation & air sealing | insulation | work | 1 | 2 |  | 1 | insulation_air_sealing insulation Typical addition insulation — 1 day per rule. | 2026-12-07 | 2026-12-07 | 2026-12-07 | 2026-12-07 | 0.5 | not_started |  | inspect.insulation FS 1 2026-12-09 2026-12-09 | buffer.post_rough_inspection FS | buffer.post_rough_inspection FS 0 |
| inspect.insulation | insulation_and_drywall | insulation | insulation_air_sealing | Insulation inspection | inspector | inspection | 1 | 1 |  | 1 | insulation_air_sealing inspections Insulation inspection separate visit before drywall. | 2026-12-09 | 2026-12-09 | 2026-12-09 | 2026-12-09 | 0.5 | not_started |  | equipment.drywall_arrive FS 0 2026-12-10 2026-12-10 | insulation.install FS 1 | insulation.install FS 1 |
| equipment.drywall_arrive | insulation_and_drywall | drywall_consolidated | drywall | Drywall equipment & material staging | general | work | 0.5 | 1 |  | 0 | drywall 4O Drywall lift + material lands the day before hang begins. | 2026-12-10 | 2026-12-10 | 2026-12-10 | 2026-12-10 | 0.5 | not_started |  | drywall.consolidated FS 0 2026-12-11 2026-12-22 | inspect.insulation FS | inspect.insulation FS 0 |

| id | phase_id | component_id | section_id | name | trade | kind | duration_days | crew_size | lead_up_working_days | derived_from | scheduled_start | scheduled_end | earliest_start | latest_start | float_days | status | binding_successors_of_this | depends_on | binding_predecessors |
| --- | --- | --- | --- | --- | --- | --- | --- | --- | --- | --- | --- | --- | --- | --- | --- | --- | --- | --- | --- |
| drywall.consolidated | insulation_and_drywall | drywall_consolidated | drywall | Drywall hang, tape, sand (addition + retrofit + hall bath patch) | drywall | work | 8 | 3 | 2 | drywall drywall.consolidate Consolidated hang/tape/sand for addition + existing bedroom + hall bath patch — one continuous crew visit. | 2026-12-11 | 2026-12-22 | 2026-12-11 | 2026-12-11 | 0 | not_started | paint.phase_1 FS 0 2026-12-23 2026-12-23, retrofit.hall_bath_mod FS 0 2026-12-23 2026-12-28 | equipment.drywall_arrive FS | equipment.drywall_arrive FS 0 |
| paint.phase_1 | insulation_and_drywall | paint_phase1 | interior_finish | Paint phase 1 — primer + ceiling finish | paint | work | 1 | 2 | 0 | interior_finish 4E 1d covers primer (walls + ceilings) AM + ceiling finish coat PM same day per Will's standard sequence. | 2026-12-23 | 2026-12-23 | 2026-12-23 | 2026-12-23 | 0 | not_started | tile.shower_substrate FS 0 2026-12-28 2026-12-29 | drywall.consolidated FS, order.paint FS | drywall.consolidated FS 0 |
| tile.shower_substrate | interior_finishes | tile_and_flooring | master_bath | Shower substrate + Kerdi/Wedi waterproofing | tile | work | 2 | 2 | 1 | master_bath tile.waterproofing Kerdi/Wedi substrate — non-compromise waterproofing per TCR standard. | 2026-12-28 | 2026-12-29 | 2026-12-28 | 2026-12-28 | 0 | not_started | flooring.install FS 0 2026-12-30 2027-01-04, tile.install FS 0 2026-12-30 2027-01-05 | paint.phase_1 FS, checkpoint.tile_arrived FS | paint.phase_1 FS 0 |
| tile.install | interior_finishes | tile_and_flooring | master_bath | Tile install (shower + bath floor) | tile | work | 4 | 2 | 0 | master_bath tile Wall + floor tile in master bath. | 2026-12-30 | 2027-01-05 | 2026-12-30 | 2026-12-30 | 0 | not_started | tile.grout_seal FS 1 2027-01-07 2027-01-07 | tile.shower_substrate FS | tile.shower_substrate FS 0 |
| tile.grout_seal | interior_finishes | tile_and_flooring | master_bath | Grout + seal | tile | work | 1 | 2 | 0 | master_bath tile Grout & seal after 1-day thinset cure. | 2027-01-07 | 2027-01-07 | 2027-01-07 | 2027-01-07 | 0 | not_started | order.shower_glass FS 0 2027-01-08 2027-01-08, plumbing.finish FS 0 2027-01-08 2027-01-11 | tile.install FS 1 | tile.install FS 1 |
| flooring.install | interior_finishes | tile_and_flooring | interior_finish | LVP flooring install | flooring | work | 3 | 2 | 1 | interior_finish 4L LVP after paint phase 1 & wet-area substrate down. | 2026-12-30 | 2027-01-04 | 2026-12-30 | 2026-12-31 | 1 | not_started | cabinets.install FS 0 2027-01-05 2027-01-05, electrical.finish FS 0 2027-01-05 2027-01-07, trim.install FS 0 2027-01-05 2027-01-07 | paint.phase_1 FS, tile.shower_substrate FS, checkpoint.lvp_arrived FS | tile.shower_substrate FS 0 |
| cabinets.install | interior_finishes | trim_and_cabinets | master_bath | Vanity install | cabinets | work | 1 | 2 | 1 | master_bath cabinets Vanity install after flooring. | 2027-01-05 | 2027-01-05 | 2027-01-05 | 2027-01-07 | 2 | not_started |  | flooring.install FS, checkpoint.vanity_fixtures_arrived FS | flooring.install FS 0 |
| trim.install | interior_finishes | trim_and_cabinets | interior_finish | Trim carpentry (base, case, doors) | trim_carpentry | work | 3 | 2 | 1 | interior_finish 4L Trim after flooring, before paint phase 2. | 2027-01-05 | 2027-01-07 | 2027-01-05 | 2027-01-07 | 2 | not_started |  | flooring.install FS | flooring.install FS 0 |
| retrofit.hall_bath_mod | interior_finishes | hall_bath_mod | closeout | Hall bath modification (patch, prime, paint) | general | work | 2 | 2 | 1 | closeout retrofit.detection Retrofit: existing hall bath switch relocation with patch/prime/paint per scope. Runs parallel with new-construction interior finishes. | 2026-12-23 | 2026-12-28 | 2026-12-23 | 2027-01-08 | 9 | not_started |  | drywall.consolidated FS | drywall.consolidated FS 0 |
| paint.phase_2 | interior_finishes | paint_phase2 | interior_finish | Paint phase 2 — final wall coat | paint | work | 2 | 2 | 1 | interior_finish 4F Paint phase 2 gates on every finish trade — substantial completion fires when home is truly usable. | 2027-01-12 | 2027-01-13 | 2027-01-12 | 2027-01-12 | 0 | not_started | milestone.substantial_completion FS 0 2027-01-14 2027-01-14 | trim.install FS, flooring.install FS, cabinets.install FS, tile.grout_seal FS, plumbing.finish FS, electrical.finish FS, hvac.minisplit_install FS, retrofit.hall_bath_mod FS | plumbing.finish FS 0 |
| electrical.finish | finish_trades | finish_electrical | electrical | Electrical finish (recessed lights, vanity lights, fan, dimmers, GFCI/AFCI) | electrical | work | 3 | 2 | 1 | electrical 4L Electrical finish after paint 1. Includes 12 recessed lights, vanity, fan/light, dimmers, GFCI/AFCI. | 2027-01-05 | 2027-01-07 | 2027-01-05 | 2027-01-06 | 1 | not_started | hvac.minisplit_install FS 0 2027-01-08 2027-01-08 | paint.phase_1 FS, flooring.install FS | flooring.install FS 0 |
| plumbing.finish | finish_trades | finish_plumbing | plumbing | Plumbing finish (fixtures, W/D hookup) | plumbing | work | 2 | 2 | 1 | plumbing 4L Plumbing finish after cabinets, flooring, and grout seal. | 2027-01-08 | 2027-01-11 | 2027-01-08 | 2027-01-08 | 0 | not_started | paint.phase_2 FS 0 2027-01-12 2027-01-13 | cabinets.install FS, flooring.install FS, tile.grout_seal FS | tile.grout_seal FS 0 |
| hvac.minisplit_install | finish_trades | finish_hvac | hvac | Mini-split unit install | hvac | work | 1 | 1 | 1 | hvac 4N, addition.hvac Mini-split day-of-install — 1d, 1 person. Staggered AFTER electrical.finish per 4N to keep interior trades to 2 concurrent. | 2027-01-08 | 2027-01-08 | 2027-01-08 | 2027-01-11 | 1 | not_started |  | paint.phase_1 FS, checkpoint.minisplit_arrived FS, electrical.finish FS | electrical.finish FS 0 |
| glazing.shower_glass | finish_trades | finish_plumbing | master_bath | Shower glass install | glazing | work | 0.5 | 2 | 1 | master_bath glazing Shower glass install after tile complete and glass fabricated. | 2027-01-21 | 2027-01-21 | 2027-01-21 | 2027-01-25 | 2.5 | not_started |  | checkpoint.shower_glass_arrived FS, tile.grout_seal FS | checkpoint.shower_glass_arrived FS 0 |
| milestone.substantial_completion | interior_finishes | paint_phase2 | interior_finish | Substantial completion | general | milestone | 0 | 0 | 0 | interior_finish 4F Substantial completion fires when paint phase 2 ends. All finish trades funnel through paint 2. | 2027-01-14 | 2027-01-14 | 2027-01-14 | 2027-01-14 | 0 | not_started | closeout.walkthrough FS 0 2027-01-14 2027-01-14 | paint.phase_2 FS | paint.phase_2 FS 0 |
| closeout.walkthrough | closeout | closeout_main | closeout | PM walkthrough with client — punch list | pm | work | 1 | 1 | 1 | closeout closeout PM walkthrough produces punch list. | 2027-01-14 | 2027-01-14 | 2027-01-14 | 2027-01-14 | 0 | not_started | closeout.punch_list FS 0 2027-01-15 2027-01-18 | milestone.substantial_completion FS | milestone.substantial_completion FS 0 |
| closeout.punch_list | closeout | closeout_main | closeout | Punch-list return work | general | work | 2 | 2 | 1 | closeout closeout Multiple trades returning for punch items. | 2027-01-15 | 2027-01-18 | 2027-01-15 | 2027-01-15 | 0 | not_started | closeout.final_clean FS 0 2027-01-19 2027-01-19 | closeout.walkthrough FS | closeout.walkthrough FS 0 |
| closeout.final_clean | closeout | closeout_main | closeout | Final clean | cleanup | work | 1 | 2 | 0 | closeout cleanup Whole-home final clean. | 2027-01-19 | 2027-01-19 | 2027-01-19 | 2027-01-19 | 0 | not_started | inspect.final_bundled FS 1 2027-01-21 2027-01-21 | closeout.punch_list FS | closeout.punch_list FS 0 |
| inspect.final_bundled | closeout | closeout_main | closeout | Bundled final inspections (E/P/M + building) | inspector | inspection | 1 | 1 | 1 | closeout 4M ONE inspector, ONE day — all finals bundled. | 2027-01-21 | 2027-01-21 | 2027-01-21 | 2027-01-21 | 0 | not_started | closeout.wills_walkthrough FS 1 2027-01-25 2027-01-25 | closeout.final_clean FS 1 | closeout.final_clean FS 1 |
| closeout.wills_walkthrough | closeout | closeout_main | closeout | Will's final walkthrough with customer | general | work | 1 | 1 | 1 | closeout addition.wills_walkthrough Will's personal final walkthrough with the customer — last touchpoint per addition rules. | 2027-01-25 | 2027-01-25 | 2027-01-25 | 2027-01-25 | 0 | not_started |  | inspect.final_bundled FS 1 | inspect.final_bundled FS 1 |
