| id | phase_id | component_id | section_id | name | trade | kind | duration_days | crew_size | pre_construction_offset_working_days | lead_up_working_days | derived_from | scheduled_start | scheduled_end | earliest_start | latest_start | float_days | status | lead_time_days | binding_successors_of_this | depends_on | binding_predecessors |
| --- | --- | --- | --- | --- | --- | --- | --- | --- | --- | --- | --- | --- | --- | --- | --- | --- | --- | --- | --- | --- | --- |
| general.permitting | pre_construction | permits_and_planning | general_conditions | Permit walk-in | general | work | 1 | 1 | 15 | 2 | general_conditions 4A 1-day work task, PM walks permits in ~3 weeks before on-site start. | 2026-09-21 | 2026-09-21 | 2026-09-21 | 2026-10-13 | 16 | not_started |  |  |  |  |
| general.pre_construction_walkthrough | pre_construction | permits_and_planning | general_conditions | Pre-construction walkthrough with owner | general | work | 1 | 1 | 10 | 1 | general_conditions editor.customer_norms PM walkthrough with customer 2 weeks before on-site start. | 2026-09-28 | 2026-09-28 | 2026-09-28 | 2027-01-20 | 77 | not_started |  |  |  |  |
| permit.tdec_septic | pre_construction | tdec_septic | general_conditions | TDEC septic permit process | general | lead_time | 0 | 0 | 30 | 2 | general_conditions additions.tdec Scope names septic evaluation with TDEC. 6-week lead per Will's number. Anchored 30 working days before on-site start. | 2026-08-28 | 2026-10-09 | 2026-08-28 | 2026-09-11 | 9.5 | not_started | 42 |  |  |  |
| prep.amperage_check | pre_construction | amperage_check | electrical | Existing service amperage check | general | work | 0.5 | 1 | 15 | 1 | electrical additions.amperage_check Scope adds 100A subpanel; verify existing main service capacity before contract. | 2026-09-21 | 2026-09-21 | 2026-09-21 | 2027-01-20 | 82.5 | not_started |  |  |  |  |
| checkpoint.selections_finalized | pre_construction | checkpoints | general_conditions | Customer selections finalized | general | milestone | 0 | 0 | 15 | 5 | general_conditions 4P Anchor for finish material orders; PM confirms tile/paint/fixtures locked 3 weeks before on-site. | 2026-09-21 | 2026-09-21 | 2026-09-21 | 2026-11-30 | 48.5 | not_started |  | order.flooring FS 0 2026-10-12 2026-10-12, order.paint FS 0 2026-10-12 2026-10-12, order.tile FS 0 2026-10-12 2026-10-12, order.vanity_fixtures FS 0 2026-10-12 2026-10-12 |  |  |
| checkpoint.equipment_confirmed_demo | pre_construction | checkpoints | demolition_site_work | Equipment confirmed for demo | general | milestone | 0 | 0 | 10 | 2 | demolition_site_work 4O PM confirms dumpster, mini-ex, saw reserved 2 weeks before demo. | 2026-09-28 | 2026-09-28 | 2026-09-28 | 2026-10-13 | 11.5 | not_started |  | equipment.dumpster_arrive FS 0 2026-10-12 2026-10-12 |  |  |
| order.windows | procurement_long_leads | procurement_windows | windows_doors_weatherproofing | Order windows | general | work | 0.5 | 1 |  | 2 | windows_doors_weatherproofing 4R PM places windows order (3-task pattern step 1). | 2026-10-12 | 2026-10-12 | 2026-10-12 | 2026-10-29 | 13 | not_started |  | wait.windows FS 0 2026-10-13 2026-11-02 |  |  |
| wait.windows | procurement_long_leads | procurement_windows | windows_doors_weatherproofing | Windows supplier delivery | general | lead_time | 0 | 0 |  | 0 | windows_doors_weatherproofing editor.leadtimes Stock windows 21-day delivery. | 2026-10-13 | 2026-11-02 | 2026-10-13 | 2026-10-29 | 12.5 | not_started | 21 | checkpoint.windows_arrived FS 0 2026-11-03 2026-11-03 | order.windows FS | order.windows FS 0 |
| checkpoint.windows_arrived | procurement_long_leads | procurement_windows | windows_doors_weatherproofing | Windows arrived on site | general | milestone | 0 | 0 |  | 0 | windows_doors_weatherproofing 4R Gates windows.install. | 2026-11-03 | 2026-11-03 | 2026-11-03 | 2026-11-19 | 12.5 | not_started |  |  | wait.windows FS | wait.windows FS 0 |
| order.ext_door | procurement_long_leads | procurement_ext_door | windows_doors_weatherproofing | Order exterior door | general | work | 0.5 | 1 |  | 2 | windows_doors_weatherproofing 4R PM places exterior door order. | 2026-10-12 | 2026-10-12 | 2026-10-12 | 2026-10-29 | 13 | not_started |  | wait.ext_door FS 0 2026-10-13 2026-11-02 |  |  |
| wait.ext_door | procurement_long_leads | procurement_ext_door | windows_doors_weatherproofing | Exterior door supplier delivery | general | lead_time | 0 | 0 |  | 0 | windows_doors_weatherproofing editor.leadtimes Exterior door 21-day delivery. | 2026-10-13 | 2026-11-02 | 2026-10-13 | 2026-10-29 | 12.5 | not_started | 21 | checkpoint.ext_door_arrived FS 0 2026-11-03 2026-11-03 | order.ext_door FS | order.ext_door FS 0 |
| checkpoint.ext_door_arrived | procurement_long_leads | procurement_ext_door | windows_doors_weatherproofing | Exterior door arrived on site | general | milestone | 0 | 0 |  | 0 | windows_doors_weatherproofing 4R Gates door install. | 2026-11-03 | 2026-11-03 | 2026-11-03 | 2026-11-19 | 12.5 | not_started |  |  | wait.ext_door FS | wait.ext_door FS 0 |
| order.lvl | procurement_long_leads | procurement_lvl | structural_modifications | Order LVL beam | general | work | 0.5 | 1 |  | 2 | structural_modifications additions.lvl 3-ply 14" LVL, safety-buffered 2-week supplier wait. | 2026-10-12 | 2026-10-12 | 2026-10-12 | 2026-11-11 | 22 | not_started |  | wait.lvl FS 0 2026-10-13 2026-10-26 |  |  |
| wait.lvl | procurement_long_leads | procurement_lvl | structural_modifications | LVL supplier delivery | general | lead_time | 0 | 0 |  | 0 | structural_modifications additions.lvl Safety-buffered LVL lead. | 2026-10-13 | 2026-10-26 | 2026-10-13 | 2026-11-11 | 21.5 | not_started | 14 | checkpoint.lvl_arrived FS 0 2026-10-27 2026-10-27 | order.lvl FS | order.lvl FS 0 |
| checkpoint.lvl_arrived | procurement_long_leads | procurement_lvl | structural_modifications | LVL arrived on site | general | milestone | 0 | 0 |  | 0 | structural_modifications 4R Gates LVL install. | 2026-10-27 | 2026-10-27 | 2026-10-27 | 2026-11-25 | 21.5 | not_started |  | structural.install_lvl FS 0 2026-10-27 2026-10-28 | wait.lvl FS | wait.lvl FS 0 |
| order.subpanel | procurement_long_leads | procurement_subpanel | electrical | Order 100A subpanel | general | work | 0.5 | 1 |  | 2 | electrical editor.leadtimes 100A subpanel 7-14 day lead. | 2026-10-12 | 2026-10-12 | 2026-10-12 | 2026-11-12 | 23.5 | not_started |  | wait.subpanel FS 0 2026-10-13 2026-10-22 |  |  |
| wait.subpanel | procurement_long_leads | procurement_subpanel | electrical | Subpanel supplier delivery | general | lead_time | 0 | 0 |  | 0 | electrical editor.leadtimes 10-day delivery. | 2026-10-13 | 2026-10-22 | 2026-10-13 | 2026-11-13 | 23 | not_started | 10 | checkpoint.subpanel_arrived FS 0 2026-10-23 2026-10-23 | order.subpanel FS | order.subpanel FS 0 |
| checkpoint.subpanel_arrived | procurement_long_leads | procurement_subpanel | electrical | Subpanel arrived on site | general | milestone | 0 | 0 |  | 0 | electrical 4R Gates rough electrical. | 2026-10-23 | 2026-10-23 | 2026-10-23 | 2026-11-25 | 23 | not_started |  |  | wait.subpanel FS | wait.subpanel FS 0 |
| order.minisplit | procurement_long_leads | procurement_minisplit | hvac | Order mini-split unit | general | work | 0.5 | 1 |  | 2 | hvac editor.leadtimes Mini-split 7-14 day lead. | 2026-10-12 | 2026-10-12 | 2026-10-12 | 2026-12-21 | 48.5 | not_started |  | wait.minisplit FS 0 2026-10-13 2026-10-22 |  |  |
| wait.minisplit | procurement_long_leads | procurement_minisplit | hvac | Mini-split delivery | general | lead_time | 0 | 0 |  | 0 | hvac editor.leadtimes 10-day delivery. | 2026-10-13 | 2026-10-22 | 2026-10-13 | 2026-12-22 | 48 | not_started | 10 | checkpoint.minisplit_arrived FS 0 2026-10-23 2026-10-23 | order.minisplit FS | order.minisplit FS 0 |
| checkpoint.minisplit_arrived | procurement_long_leads | procurement_minisplit | hvac | Mini-split arrived on site | general | milestone | 0 | 0 |  | 0 | hvac 4R Gates mini-split install. | 2026-10-23 | 2026-10-23 | 2026-10-23 | 2027-01-06 | 48 | not_started |  |  | wait.minisplit FS | wait.minisplit FS 0 |
| order.tankless | procurement_long_leads | procurement_tankless | hvac | Order tankless water heater | general | work | 0.5 | 1 |  | 2 | hvac editor.leadtimes Tankless 7-14 day lead. | 2026-10-12 | 2026-10-12 | 2026-10-12 | 2026-11-11 | 22 | not_started |  | wait.tankless FS 0 2026-10-13 2026-10-22 |  |  |
| wait.tankless | procurement_long_leads | procurement_tankless | hvac | Tankless WH delivery | general | lead_time | 0 | 0 |  | 0 | hvac editor.leadtimes 10-day delivery. | 2026-10-13 | 2026-10-22 | 2026-10-13 | 2026-11-11 | 21.5 | not_started | 10 | checkpoint.tankless_arrived FS 0 2026-10-23 2026-10-23 | order.tankless FS | order.tankless FS 0 |
| checkpoint.tankless_arrived | procurement_long_leads | procurement_tankless | hvac | Tankless WH arrived on site | general | milestone | 0 | 0 |  | 0 | hvac 4R Gates plumbing.tank_set. | 2026-10-23 | 2026-10-23 | 2026-10-23 | 2026-11-23 | 21.5 | not_started |  |  | wait.tankless FS | wait.tankless FS 0 |
| order.tile | procurement_long_leads | procurement_tile | master_bath | Order tile | general | work | 0.5 | 1 |  | 2 | master_bath editor.leadtimes PM orders tile after selections locked. | 2026-10-12 | 2026-10-12 | 2026-10-12 | 2026-11-30 | 33.5 | not_started |  | wait.tile FS 0 2026-10-13 2026-11-02 | checkpoint.selections_finalized FS | checkpoint.selections_finalized FS 0 |
| wait.tile | procurement_long_leads | procurement_tile | master_bath | Tile delivery | general | lead_time | 0 | 0 |  | 0 | master_bath editor.leadtimes Custom tile 14-21 day lead. | 2026-10-13 | 2026-11-02 | 2026-10-13 | 2026-12-01 | 33 | not_started | 21 | checkpoint.tile_arrived FS 0 2026-11-03 2026-11-03 | order.tile FS | order.tile FS 0 |
| checkpoint.tile_arrived | procurement_long_leads | procurement_tile | master_bath | Tile arrived on site | general | milestone | 0 | 0 |  | 0 | master_bath 4R Gates tile install. | 2026-11-03 | 2026-11-03 | 2026-11-03 | 2026-12-22 | 33 | not_started |  |  | wait.tile FS | wait.tile FS 0 |
| order.flooring | procurement_long_leads | procurement_flooring | interior_finish | Order flooring | general | work | 0.5 | 1 |  | 2 | interior_finish editor.material_ordering Flooring ordered after selections finalized. | 2026-10-12 | 2026-10-12 | 2026-10-12 | 2026-12-15 | 44.5 | not_started |  | wait.flooring FS 0 2026-10-13 2026-10-22 | checkpoint.selections_finalized FS | checkpoint.selections_finalized FS 0 |
| wait.flooring | procurement_long_leads | procurement_flooring | interior_finish | Flooring delivery | general | lead_time | 0 | 0 |  | 0 | interior_finish editor.leadtimes Standard LVP/hardwood lead. | 2026-10-13 | 2026-10-22 | 2026-10-13 | 2026-12-16 | 44 | not_started | 10 | checkpoint.flooring_arrived FS 0 2026-10-23 2026-10-23 | order.flooring FS | order.flooring FS 0 |
| checkpoint.flooring_arrived | procurement_long_leads | procurement_flooring | interior_finish | Flooring arrived on site | general | milestone | 0 | 0 |  | 0 | interior_finish 4R Gates flooring install. | 2026-10-23 | 2026-10-23 | 2026-10-23 | 2026-12-30 | 44 | not_started |  |  | wait.flooring FS | wait.flooring FS 0 |
| order.paint | procurement_long_leads | procurement_paint | interior_finish | Order paint | general | work | 1 | 1 |  | 0 | interior_finish 4R Paint <7 day lead — collapsed to single-order pattern per Rule 4R exception. | 2026-10-12 | 2026-10-12 | 2026-10-12 | 2026-12-18 | 47 | not_started |  |  | checkpoint.selections_finalized FS | checkpoint.selections_finalized FS 0 |
| order.vanity_fixtures | procurement_long_leads | procurement_vanity | master_bath | Order vanity and fixtures | general | work | 0.5 | 1 |  | 2 | master_bath editor.leadtimes Vanity + master bath fixtures ordered after selections. | 2026-10-12 | 2026-10-12 | 2026-10-12 | 2026-12-15 | 44.5 | not_started |  | wait.vanity_fixtures FS 0 2026-10-13 2026-10-26 | checkpoint.selections_finalized FS | checkpoint.selections_finalized FS 0 |
| wait.vanity_fixtures | procurement_long_leads | procurement_vanity | master_bath | Vanity/fixtures delivery | general | lead_time | 0 | 0 |  | 0 | master_bath editor.leadtimes 2-week lead. | 2026-10-13 | 2026-10-26 | 2026-10-13 | 2026-12-16 | 44 | not_started | 14 | checkpoint.vanity_fixtures_arrived FS 0 2026-10-27 2026-10-27 | order.vanity_fixtures FS | order.vanity_fixtures FS 0 |
| checkpoint.vanity_fixtures_arrived | procurement_long_leads | procurement_vanity | master_bath | Vanity/fixtures arrived on site | general | milestone | 0 | 0 |  | 0 | master_bath 4R Gates vanity install and plumbing finish. | 2026-10-27 | 2026-10-27 | 2026-10-27 | 2027-01-04 | 44 | not_started |  |  | wait.vanity_fixtures FS | wait.vanity_fixtures FS 0 |
| equipment.dumpster_arrive | site_prep | site_setup | demolition_site_work | Dumpster arrives | general | work | 0.5 | 1 |  | 0 | demolition_site_work 4O Dumpster lands day before demo. | 2026-10-12 | 2026-10-12 | 2026-10-12 | 2026-10-13 | 1.5 | not_started |  | general.site_setup FS 0 2026-10-13 2026-10-13 | checkpoint.equipment_confirmed_demo FS | checkpoint.equipment_confirmed_demo FS 0 |
| general.site_setup | site_prep | site_setup | general_conditions | Site setup and protection | general | work | 1 | 2 |  | 2 | general_conditions editor.site_prep Day 1 on-site — site protection, plans posted. | 2026-10-13 | 2026-10-13 | 2026-10-13 | 2026-10-14 | 1 | not_started |  | prep.electrical_disconnect_relocate FS 0 2026-10-14 2026-10-14, prep.heat_pump_relocate FS 0 2026-10-14 2026-10-14 | general.permitting FS, equipment.dumpster_arrive FS | equipment.dumpster_arrive FS 0 |
| prep.heat_pump_relocate | site_prep | prep_work_before_demo | demolition_site_work | Relocate existing heat pump | hvac | work | 1 | 2 |  | 1 | demolition_site_work 4K, additions.heat_pump Must relocate BEFORE main demo begins — 3 working days before demo. | 2026-10-14 | 2026-10-14 | 2026-10-14 | 2026-10-15 | 1 | not_started |  | demo.sawcut_walkway FS 2 2026-10-19 2026-10-19 | general.site_setup FS | general.site_setup FS 0 |
| prep.electrical_disconnect_relocate | site_prep | prep_work_before_demo | demolition_site_work | Relocate electrical disconnect | electrical | work | 0.5 | 1 |  | 1 | demolition_site_work 4K Electrical disconnect relocated before demo. | 2026-10-14 | 2026-10-14 | 2026-10-14 | 2026-10-15 | 1.5 | not_started |  |  | general.site_setup FS | general.site_setup FS 0 |
| demo.sawcut_walkway | demo_and_protection | main_demo | demolition_site_work | Sawcut and remove concrete walkway | demo | work | 1 | 3 |  | 2 | demolition_site_work editor.demo Concrete sawcut + walkway removal, subbed demo crew of 3. | 2026-10-19 | 2026-10-19 | 2026-10-19 | 2026-10-20 | 1 | not_started |  | demo.railroad_ties_obstructions FS 0 2026-10-20 2026-10-20 | prep.heat_pump_relocate FS 2, prep.electrical_disconnect_relocate FS 2 | prep.heat_pump_relocate FS 2 |
| demo.railroad_ties_obstructions | demo_and_protection | main_demo | demolition_site_work | Remove railroad ties and site obstructions | demo | work | 1 | 3 |  | 0 | demolition_site_work editor.demo Clear site of railroad ties and obstructions. | 2026-10-20 | 2026-10-20 | 2026-10-20 | 2026-10-21 | 1 | not_started |  | demo.expose_bearing_wall FS 0 2026-10-21 2026-10-21, demo.gas_wh_vent_extend FS 0 2026-10-21 2026-10-21 | demo.sawcut_walkway FS | demo.sawcut_walkway FS 0 |
| demo.gas_wh_vent_extend | demo_and_protection | main_demo | demolition_site_work | Extend gas WH vent through new roof (prep) | plumbing | work | 0.5 | 1 |  | 1 | demolition_site_work editor.plumbing Vent extension prep — existing WH stays per scope (venting change only). | 2026-10-21 | 2026-10-21 | 2026-10-21 | 2026-10-22 | 1 | not_started |  | demo.haul_out FS 0 2026-10-22 2026-10-22 | demo.railroad_ties_obstructions FS | demo.railroad_ties_obstructions FS 0 |
| demo.expose_bearing_wall | demo_and_protection | main_demo | structural_modifications | Expose load-bearing wall for LVL | demo | work | 1 | 3 |  | 1 | structural_modifications additions.lvl_subchain Expose the wall so LVL sub-chain can start; independent of exterior framing. | 2026-10-21 | 2026-10-21 | 2026-10-21 | 2026-11-23 | 23.5 | not_started |  | structural.temp_shoring FS 0 2026-10-22 2026-10-22 | demo.railroad_ties_obstructions FS | demo.railroad_ties_obstructions FS 0 |
| demo.haul_out | demo_and_protection | main_demo | demolition_site_work | Debris haul-out | demo | work | 1 | 3 |  | 0 | demolition_site_work editor.demo Whole-day haul-out (rounded per Rule 13). | 2026-10-22 | 2026-10-22 | 2026-10-22 | 2026-10-22 | 0.5 | not_started |  | excavation.dig FS 0 2026-10-23 2026-10-26 | demo.railroad_ties_obstructions FS, demo.gas_wh_vent_extend FS | demo.gas_wh_vent_extend FS 0 |
| excavation.dig | structural_and_shell | foundation | excavation_foundation | Excavate footings and slab | excavation | work | 2 | 2 |  | 1 | excavation_foundation editor.excavation 789 sqft footprint; excavation for 12x12 footings + slab. Gated on TDEC permit. | 2026-10-23 | 2026-10-26 | 2026-10-23 | 2026-10-23 | 0.5 | not_started |  | foundation.form_and_prep FS 0 2026-10-27 2026-10-28 | demo.haul_out FS, permit.tdec_septic FS | demo.haul_out FS 0 |
| foundation.form_and_prep | structural_and_shell | foundation | excavation_foundation | Form footings, gravel, vapor, rebar | concrete | work | 2 | 4 |  | 1 | excavation_foundation 4B Monolithic prep — footings + gravel + vapor + rebar in one task. | 2026-10-27 | 2026-10-28 | 2026-10-27 | 2026-10-27 | 0.5 | not_started |  | inspect.footing FS 1 2026-10-30 2026-10-30 | excavation.dig FS | excavation.dig FS 0 |
| inspect.footing | structural_and_shell | foundation | excavation_foundation | Footing inspection | inspector | inspection | 1 | 1 |  | 1 | excavation_foundation editor.inspections, 4B Combined footing + slab-prep inspection (monolithic). | 2026-10-30 | 2026-10-30 | 2026-10-30 | 2026-10-30 | 0.5 | not_started |  | foundation.monolithic_pour FS 0 2026-11-02 2026-11-02 | foundation.form_and_prep FS 1 | foundation.form_and_prep FS 1 |
| foundation.monolithic_pour | structural_and_shell | foundation | excavation_foundation | Monolithic pour — footings + slab | concrete | work | 1 | 4 |  | 1 | excavation_foundation 4B Monolithic footing + 4" slab in one pour. | 2026-11-02 | 2026-11-02 | 2026-11-02 | 2026-11-02 | 0.5 | not_started |  | foundation.cure FS 0 2026-11-03 2026-11-04 | inspect.footing FS | inspect.footing FS 0 |
| foundation.cure | structural_and_shell | foundation | excavation_foundation | Foundation cure | general | lead_time | 0 | 0 |  | 0 | excavation_foundation 4B 2-day cure before framing. | 2026-11-03 | 2026-11-04 | 2026-11-03 | 2026-11-03 | 0.5 | not_started | 2 | framing.basement_walls FS 0 2026-11-05 2026-11-06 | foundation.monolithic_pour FS | foundation.monolithic_pour FS 0 |
| framing.basement_walls | structural_and_shell | framing | framing | Frame basement walls | framing | work | 2 | 3 |  | 1 | framing editor.framing 2x4 @ 16 OC basement perimeter walls. | 2026-11-05 | 2026-11-06 | 2026-11-05 | 2026-11-05 | 0.5 | not_started |  | framing.floor_system FS 0 2026-11-09 2026-11-10 | foundation.cure FS | foundation.cure FS 0 |
| framing.floor_system | structural_and_shell | framing | framing | Frame floor system + subfloor | framing | work | 2 | 3 |  | 0 | framing editor.framing Dimensional or engineered floor system + glued/fastened subfloor. Independent of LVL retrofit. | 2026-11-09 | 2026-11-10 | 2026-11-09 | 2026-11-09 | 0.5 | not_started |  | framing.exterior_walls FS 0 2026-11-11 2026-11-13 | framing.basement_walls FS | framing.basement_walls FS 0 |
| framing.exterior_walls | structural_and_shell | framing | framing | Frame exterior and interior walls + elevator shaft | framing | work | 3 | 3 |  | 0 | framing editor.framing 2x4 exterior + interior walls, plus 4x4 elevator shaft frame. | 2026-11-11 | 2026-11-13 | 2026-11-11 | 2026-11-11 | 0.5 | not_started |  | exterior.sheathing_wrb FS 0 2026-11-16 2026-11-16, framing.roof FS 0 2026-11-16 2026-11-18 | framing.floor_system FS | framing.floor_system FS 0 |
| structural.temp_shoring | structural_and_shell | lvl_subchain | structural_modifications | Temporary shoring for LVL | framing | work | 1 | 2 |  | 1 | structural_modifications additions.lvl_subchain Temp shoring for load-bearing wall opening. | 2026-10-22 | 2026-10-22 | 2026-10-22 | 2026-11-24 | 23.5 | not_started |  |  | demo.expose_bearing_wall FS | demo.expose_bearing_wall FS 0 |
| structural.install_lvl | structural_and_shell | lvl_subchain | structural_modifications | Install LVL beam | framing | work | 2 | 2 |  | 0 | structural_modifications additions.lvl_subchain 3-ply 14" LVL, 15'-6" span. | 2026-10-27 | 2026-10-28 | 2026-10-27 | 2026-11-25 | 21.5 | not_started |  | structural.remove_temp_shoring FS 0 2026-10-29 2026-10-29 | structural.temp_shoring FS, checkpoint.lvl_arrived FS | checkpoint.lvl_arrived FS 0 |
| structural.remove_temp_shoring | structural_and_shell | lvl_subchain | structural_modifications | Remove temporary shoring | framing | work | 0.5 | 2 |  | 0 | structural_modifications additions.lvl_subchain Remove shoring after LVL bears load. | 2026-10-29 | 2026-10-29 | 2026-10-29 | 2026-12-01 | 21.5 | not_started |  |  | structural.install_lvl FS | structural.install_lvl FS 0 |
| framing.roof | structural_and_shell | framing | roof_framing_roofing | Frame roof (stick-frame gable) | framing | work | 3 | 3 |  | 1 | roof_framing_roofing additions.trusses Stick-frame default per additions rule — small addition (300 sqft roof), scope ambiguous truss/rafter. | 2026-11-16 | 2026-11-18 | 2026-11-16 | 2026-11-16 | 0.5 | not_started |  | framing.sheathing FS 0 2026-11-19 2026-11-19, roof.concealed_buffer SS 1 2026-11-17 2026-11-19, windows.install FS 0 2026-11-19 2026-11-20 | framing.exterior_walls FS | framing.exterior_walls FS 0 |
| framing.sheathing | structural_and_shell | framing | roof_framing_roofing | Roof sheathing | framing | work | 1 | 3 |  | 0 | roof_framing_roofing editor.framing Sheath roof deck. | 2026-11-19 | 2026-11-19 | 2026-11-19 | 2026-11-19 | 0.5 | not_started |  | roofing.underlayment FS 0 2026-11-20 2026-11-20 | framing.roof FS | framing.roof FS 0 |
| roof.concealed_buffer | structural_and_shell | roof_tie_in | roof_framing_roofing | Concealed roof tie-in discovery buffer | framing | lead_time | 0 | 0 |  | 0 | roof_framing_roofing additions.concealed_roof 2-3 day buffer for concealed rafter conditions; runs concurrent with framing.roof. | 2026-11-17 | 2026-11-19 | 2026-11-17 | 2027-01-18 | 39 | not_started | 3 |  | framing.roof SS 1 | framing.roof SS 1 |
| roofing.underlayment | structural_and_shell | roofing | roof_framing_roofing | Roof underlayment + drip edge + flashing | roofing | work | 1 | 3 |  | 1 | roof_framing_roofing additions.mep_gate Synthetic underlayment, drip edge — building weatherproof once done. | 2026-11-20 | 2026-11-20 | 2026-11-20 | 2026-11-20 | 0.5 | not_started |  | roofing.shingles FS 0 2026-11-23 2026-11-23, plumbing.tank_set FS 0 2026-11-23 2026-11-23 | framing.sheathing FS | framing.sheathing FS 0 |
| windows.install | structural_and_shell | envelope | windows_doors_weatherproofing | Install windows and exterior door | windows_doors | work | 2 | 2 |  | 1 | windows_doors_weatherproofing additions.windows_install, 4J Windows install AS SOON AS roof framed — in parallel with underlayment. NOT after dried-in milestone. 4 windows + 1 exterior door. | 2026-11-19 | 2026-11-20 | 2026-11-19 | 2026-11-19 | 0.5 | not_started |  | plumbing.tank_set FS 0 2026-11-23 2026-11-23 | framing.roof FS, checkpoint.windows_arrived FS, checkpoint.ext_door_arrived FS | framing.roof FS 0 |
| roofing.shingles | structural_and_shell | roofing | roof_framing_roofing | Install architectural shingles + ridge vent | roofing | work | 1 | 3 |  | 0 | roof_framing_roofing editor.roofing ~300 sqft addition roof — 1 day per Will's TCR baseline. | 2026-11-23 | 2026-11-23 | 2026-11-23 | 2027-01-15 | 34 | not_started |  | milestone.dried_in FS 0 2026-11-24 2026-11-24 | roofing.underlayment FS | roofing.underlayment FS 0 |
| exterior.sheathing_wrb | structural_and_shell | exterior_finishes | exterior_finishes | Exterior sheathing and WRB | framing | work | 1 | 3 |  | 0 | exterior_finishes editor.exterior Sheathing + WRB on 300 sqft exterior wall. | 2026-11-16 | 2026-11-16 | 2026-11-16 | 2027-01-15 | 39 | not_started |  |  | framing.exterior_walls FS | framing.exterior_walls FS 0 |
| milestone.dried_in | structural_and_shell | envelope | roof_framing_roofing | Building dried-in | general | milestone | 0 | 0 |  | 0 | roof_framing_roofing editor.milestones Full dried-in milestone gates siding/gutters. | 2026-11-24 | 2026-11-24 | 2026-11-24 | 2027-01-18 | 34 | not_started |  | exterior.siding_trim_gutters FS 0 2026-11-24 2026-11-30 | roofing.shingles FS, windows.install FS, exterior.sheathing_wrb FS | roofing.shingles FS 0 |
| exterior.siding_trim_gutters | structural_and_shell | exterior_finishes | exterior_finishes | Vinyl siding + trim + soffit + fascia + gutters | siding | work | 3 | 3 |  | 1 | exterior_finishes editor.same_crew_exterior Same-crew continuous block: siding + trim/fascia/soffit + seamless gutters. | 2026-11-24 | 2026-11-30 | 2026-11-24 | 2027-01-18 | 34 | not_started |  |  | milestone.dried_in FS | milestone.dried_in FS 0 |
| plumbing.tank_set | rough_trades | rough_plumbing | hvac | Set tankless water heater | plumbing | work | 0.5 | 2 |  | 0 | hvac 4H Tankless set BEFORE rough-in stubs into it. | 2026-11-23 | 2026-11-23 | 2026-11-23 | 2026-11-23 | 0.5 | not_started |  | plumbing.rough_in FS 0 2026-11-24 2026-11-30 | checkpoint.tankless_arrived FS, roofing.underlayment FS, windows.install FS | roofing.underlayment FS 0, windows.install FS 0 |
| plumbing.rough_in | rough_trades | rough_plumbing | plumbing | Plumbing rough-in (master bath + W/D) | plumbing | work | 3 | 2 |  | 1 | plumbing 4H, additions.mep_gate Master bath rough + W/D relocation supply/DWV. | 2026-11-24 | 2026-11-30 | 2026-11-24 | 2026-11-24 | 0 | not_started |  | electrical.rough_in SS 1 2026-11-25 2026-12-01 | plumbing.tank_set FS | plumbing.tank_set FS 0 |
| electrical.rough_in | rough_trades | rough_electrical | electrical | Electrical rough-in + subpanel | electrical | work | 3 | 2 |  | 1 | electrical additions.mep_gate, editor.overlap Rough electrical starts 1 day after plumbing (SS lag 1) — mini-split job so order is plumbing→electrical→mini-split rough. | 2026-11-25 | 2026-12-01 | 2026-11-25 | 2026-11-25 | 0 | not_started |  | hvac.minisplit_rough SS 1 2026-11-30 2026-11-30, inspect.rough_bundled FS 1 2026-12-03 2026-12-03 | roofing.underlayment FS, windows.install FS, checkpoint.subpanel_arrived FS, plumbing.rough_in SS 1 | plumbing.rough_in SS 1 |
| hvac.minisplit_rough | rough_trades | rough_hvac | hvac | Mini-split line set rough-in | hvac | work | 0.5 | 1 |  | 0 | hvac 4G, editor.hvac Mini-split rough = line set only, 0.5d/1 person. | 2026-11-30 | 2026-11-30 | 2026-11-30 | 2026-12-01 | 1.5 | not_started |  |  | electrical.rough_in SS 1 | electrical.rough_in SS 1 |
| inspect.rough_bundled | rough_inspections | rough_inspections | framing | Bundled rough inspection (E/P/HVAC + framing) | inspector | inspection | 1 | 1 |  | 1 | framing 4C One inspector, one day — bundles all rough MEP + framing including LVL retrofit. | 2026-12-03 | 2026-12-03 | 2026-12-03 | 2026-12-03 | 0 | not_started |  | buffer.post_rough_inspection FS 0 2026-12-04 2026-12-07 | electrical.rough_in FS 1, plumbing.rough_in FS 1, hvac.minisplit_rough FS 1, structural.remove_temp_shoring FS 1 | electrical.rough_in FS 1 |
| buffer.post_rough_inspection | rough_inspections | rough_inspections | framing | Post-rough-inspection punch buffer | general | lead_time | 0 | 0 |  | 0 | framing 4D 2-day punch buffer between rough inspection and insulation. | 2026-12-04 | 2026-12-07 | 2026-12-04 | 2026-12-04 | 0 | not_started | 2 | insulation.air_seal FS 0 2026-12-08 2026-12-08 | inspect.rough_bundled FS | inspect.rough_bundled FS 0 |
| insulation.air_seal | insulation_and_drywall | insulation | insulation_air_sealing | Insulation + air sealing | insulation | work | 1 | 2 |  | 1 | insulation_air_sealing editor.insulation ~800 sqft — 1 day per Will's TCR baseline. | 2026-12-08 | 2026-12-08 | 2026-12-08 | 2026-12-08 | 0 | not_started |  | inspect.insulation FS 1 2026-12-10 2026-12-10 | buffer.post_rough_inspection FS | buffer.post_rough_inspection FS 0 |

| id | phase_id | component_id | section_id | name | trade | kind | duration_days | crew_size | lead_up_working_days | derived_from | scheduled_start | scheduled_end | earliest_start | latest_start | float_days | status | binding_successors_of_this | depends_on | binding_predecessors |
| --- | --- | --- | --- | --- | --- | --- | --- | --- | --- | --- | --- | --- | --- | --- | --- | --- | --- | --- | --- |
| inspect.insulation | insulation_and_drywall | insulation | insulation_air_sealing | Insulation inspection | inspector | inspection | 1 | 1 | 1 | insulation_air_sealing editor.inspections Separate insulation inspection before drywall. | 2026-12-10 | 2026-12-10 | 2026-12-10 | 2026-12-10 | 0 | not_started | drywall.consolidated FS 0 2026-12-11 2026-12-18 | insulation.air_seal FS 1 | insulation.air_seal FS 1 |
| drywall.consolidated | insulation_and_drywall | drywall | drywall | Drywall hang, tape, sand (consolidated addition + retrofit) | drywall | work | 6 | 3 | 2 | drywall editor.drywall_consolidation Consolidated hang/tape/sand block covering new addition + existing bedroom + hall bath retrofit patch. Includes internal cure waits. | 2026-12-11 | 2026-12-18 | 2026-12-11 | 2026-12-11 | 0 | not_started | paint.phase_1 FS 0 2026-12-21 2026-12-21, retrofit.hall_bath_repaint FS 0 2026-12-21 2026-12-21 | inspect.insulation FS | inspect.insulation FS 0 |
| paint.phase_1 | insulation_and_drywall | paint_phase1 | interior_finish | Paint phase 1 — prime + ceiling finish | paint | work | 1 | 2 | 0 | interior_finish 4E 1d covers primer (walls + ceilings) AM + ceiling finish coat PM same day per Will's standard sequence. | 2026-12-21 | 2026-12-21 | 2026-12-21 | 2026-12-21 | 0 | not_started | electrical.finish FS 0 2026-12-22 2026-12-23, tile.shower_substrate FS 0 2026-12-22 2026-12-23 | drywall.consolidated FS, order.paint FS | drywall.consolidated FS 0 |
| tile.shower_substrate | interior_finishes | tile | master_bath | Tile shower waterproofing + substrate | tile | work | 2 | 2 | 1 | master_bath editor.waterproofing Kerdi/Wedi substrate + pan — Will's non-negotiable waterproofing standard. | 2026-12-22 | 2026-12-23 | 2026-12-22 | 2026-12-22 | 0 | not_started | flooring.install FS 0 2026-12-28 2026-12-29, tile.install FS 0 2026-12-28 2026-12-30 | paint.phase_1 FS, checkpoint.tile_arrived FS | paint.phase_1 FS 0 |
| tile.install | interior_finishes | tile | master_bath | Tile install (shower walls + floor) | tile | work | 3 | 2 | 0 | master_bath editor.tile Wall + floor tile in master shower. | 2026-12-28 | 2026-12-30 | 2026-12-28 | 2026-12-28 | 0 | not_started | tile.grout_seal FS 1 2027-01-04 2027-01-04 | tile.shower_substrate FS | tile.shower_substrate FS 0 |
| tile.grout_seal | interior_finishes | tile | master_bath | Tile grout and seal | tile | work | 1 | 2 | 0 | master_bath editor.tile Grout + seal after tile set. | 2027-01-04 | 2027-01-04 | 2027-01-04 | 2027-01-04 | 0 | not_started | plumbing.finish FS 0 2027-01-05 2027-01-06 | tile.install FS 1 | tile.install FS 1 |
| flooring.install | interior_finishes | flooring | interior_finish | Flooring install | flooring | work | 2 | 2 | 1 | interior_finish 4L Flooring after paint.phase_1 (NOT phase 2) and shower substrate. | 2026-12-28 | 2026-12-29 | 2026-12-28 | 2026-12-30 | 2 | not_started | cabinets.vanity_install FS 0 2026-12-30 2026-12-30, trim.install FS 0 2026-12-30 2026-12-31 | paint.phase_1 FS, tile.shower_substrate FS, checkpoint.flooring_arrived FS | tile.shower_substrate FS 0 |
| trim.install | interior_finishes | trim | interior_finish | Trim / base / case install | trim_carpentry | work | 2 | 2 | 0 | interior_finish 4L Trim after flooring, NOT after paint. | 2026-12-30 | 2026-12-31 | 2026-12-30 | 2027-01-05 | 3 | not_started |  | flooring.install FS | flooring.install FS 0 |
| cabinets.vanity_install | interior_finishes | cabinets_vanity | master_bath | Vanity install | cabinets | work | 1 | 2 | 0 | master_bath editor.cabinets Vanity install after flooring and paint phase 1. | 2026-12-30 | 2026-12-30 | 2026-12-30 | 2027-01-04 | 2 | not_started |  | flooring.install FS, checkpoint.vanity_fixtures_arrived FS | flooring.install FS 0 |
| retrofit.hall_bath_repaint | interior_finishes | hall_bath_mod | closeout | Hall bath modification — patch/paint retrofit | paint | work | 1 | 2 | 0 | closeout additions.retrofit Existing hall bath modification (signal B: 'existing') — retrofit Component, independent of new-construction critical path. Runs parallel with paint phase 1. | 2026-12-21 | 2026-12-21 | 2026-12-21 | 2027-01-06 | 9 | not_started |  | drywall.consolidated FS | drywall.consolidated FS 0 |
| electrical.finish | finish_trades | finish_electrical | electrical | Electrical finish (recessed, vanity, fan, outlets, switches) | electrical | work | 2 | 2 | 1 | electrical 4L 12 recessed, vanity lights, fan/light, outlets, dimmers, GFCI/AFCI. | 2026-12-22 | 2026-12-23 | 2026-12-22 | 2027-01-04 | 6 | not_started | hvac.minisplit_install FS 0 2026-12-28 2026-12-28 | paint.phase_1 FS | paint.phase_1 FS 0 |
| plumbing.finish | finish_trades | finish_plumbing | plumbing | Plumbing finish | plumbing | work | 2 | 2 | 1 | plumbing 4L Master bath fixtures set after vanity, flooring, tile. | 2027-01-05 | 2027-01-06 | 2027-01-05 | 2027-01-05 | 0 | not_started | paint.phase_2 FS 0 2027-01-07 2027-01-07 | cabinets.vanity_install FS, flooring.install FS, tile.grout_seal FS | tile.grout_seal FS 0 |
| hvac.minisplit_install | finish_trades | finish_hvac | hvac | Mini-split unit install | hvac | work | 1 | 1 | 0 | hvac 4N, editor.hvac 1d/1 person mini-split install. Serialized after electrical.finish per 4N stagger rule to preserve 2-interior-trades cap. | 2026-12-28 | 2026-12-28 | 2026-12-28 | 2027-01-06 | 6 | not_started |  | paint.phase_1 FS, checkpoint.minisplit_arrived FS, electrical.finish FS | electrical.finish FS 0 |
| paint.phase_2 | interior_finishes | paint_phase2 | interior_finish | Paint phase 2 — final wall coat | paint | work | 1 | 2 | 0 | interior_finish 4F Paint phase 2 gates on EVERY finish trade — substantial completion fires here. | 2027-01-07 | 2027-01-07 | 2027-01-07 | 2027-01-07 | 0 | not_started | milestone.substantial_completion FS 0 2027-01-08 2027-01-08 | trim.install FS, flooring.install FS, cabinets.vanity_install FS, tile.grout_seal FS, plumbing.finish FS, electrical.finish FS, hvac.minisplit_install FS, retrofit.hall_bath_repaint FS | plumbing.finish FS 0 |
| milestone.substantial_completion | interior_finishes | paint_phase2 | interior_finish | Substantial completion | general | milestone | 0 | 0 | 0 | interior_finish 4F Fires when paint phase 2 completes. | 2027-01-08 | 2027-01-08 | 2027-01-08 | 2027-01-08 | 0 | not_started | closeout.pm_walkthrough FS 0 2027-01-08 2027-01-08 | paint.phase_2 FS | paint.phase_2 FS 0 |
| closeout.pm_walkthrough | closeout | punch | closeout | PM walkthrough with customer — punch list | pm | work | 1 | 1 | 1 | closeout editor.closeout PM walkthrough produces punch list. | 2027-01-08 | 2027-01-08 | 2027-01-08 | 2027-01-08 | 0 | not_started | closeout.punch_list_work FS 0 2027-01-11 2027-01-12 | milestone.substantial_completion FS | milestone.substantial_completion FS 0 |
| closeout.punch_list_work | closeout | punch | closeout | Punch-list work (trades return) | general | work | 2 | 2 | 1 | closeout editor.closeout Trades return briefly for punch items. | 2027-01-11 | 2027-01-12 | 2027-01-11 | 2027-01-11 | 0 | not_started | closeout.final_clean FS 0 2027-01-13 2027-01-13 | closeout.pm_walkthrough FS | closeout.pm_walkthrough FS 0 |
| closeout.final_clean | closeout | punch | closeout | Final clean | cleanup | work | 1 | 2 | 0 | closeout editor.closeout Whole-house final clean, ~1 day for addition scope. | 2027-01-13 | 2027-01-13 | 2027-01-13 | 2027-01-13 | 0 | not_started | inspect.final_bundled FS 2 2027-01-18 2027-01-18 | closeout.punch_list_work FS | closeout.punch_list_work FS 0 |
| inspect.final_bundled | closeout | punch | closeout | Bundled final inspection (E/P/M + building) | inspector | inspection | 1 | 1 | 1 | closeout 4M One inspector, one day for all finals + building. | 2027-01-18 | 2027-01-18 | 2027-01-18 | 2027-01-18 | 0 | not_started | closeout.wills_walkthrough FS 1 2027-01-20 2027-01-20 | closeout.final_clean FS 2 | closeout.final_clean FS 2 |
| closeout.wills_walkthrough | closeout | punch | closeout | Will's final walkthrough with customer | general | work | 1 | 1 | 1 | closeout additions.wills_walkthrough Will's personal walkthrough — last task per additions rules. | 2027-01-20 | 2027-01-20 | 2027-01-20 | 2027-01-20 | 0 | not_started | milestone.co_handoff FS 0 2027-01-21 2027-01-21 | inspect.final_bundled FS 1 | inspect.final_bundled FS 1 |
| milestone.co_handoff | closeout | punch | closeout | CO + handoff | general | milestone | 0 | 0 | 0 | closeout editor.closeout CO issued after final inspection + Will's walkthrough. | 2027-01-21 | 2027-01-21 | 2027-01-21 | 2027-01-21 | 0 | not_started |  | closeout.wills_walkthrough FS | closeout.wills_walkthrough FS 0 |
