| id | section_id | name | trade | kind | duration_days | crew_size | derived_from | phase_id | scheduled_start | scheduled_end | earliest_start | latest_start | float_days | status | depends_on | lead_time_days | binding_successors_of_this | binding_predecessors | component_id |
| --- | --- | --- | --- | --- | --- | --- | --- | --- | --- | --- | --- | --- | --- | --- | --- | --- | --- | --- | --- |
| proc_building_permit.order | pre_construction | Order: Building permit | general | work | 0.5 | 2 | pre_construction | pre_construction | 2026-10-19 | 2026-10-19 | 2026-10-19 | 2026-10-19 | 0.5 | not_started |  |  |  |  |  |
| proc_building_permit.wait | pre_construction | Building permit — supplier lead | general | lead_time | 0 | 0 | pre_construction | pre_construction | 2026-10-20 | 2026-11-02 | 2026-10-20 | 2026-10-20 | 0 | not_started | proc_building_permit.order FS | 14 |  |  |  |
| proc_building_permit.delivered | pre_construction | Building permit delivered | general | milestone | 0 | 0 | pre_construction | pre_construction | 2026-11-03 | 2026-11-03 | 2026-11-03 | 2026-11-03 | 0 | not_started | proc_building_permit.wait FS |  | demo_main FS 0 2026-11-03 2026-11-04 |  |  |
| proc_tdec_septic.order | pre_construction | Order: TDEC septic permit | general | work | 0.5 | 2 | pre_construction | pre_construction | 2026-08-24 | 2026-08-24 | 2026-08-24 | 2026-08-24 | 0.5 | not_started |  |  |  |  |  |
| proc_tdec_septic.wait | pre_construction | TDEC septic permit — supplier lead | general | lead_time | 0 | 0 | pre_construction | pre_construction | 2026-08-25 | 2026-11-03 | 2026-08-25 | 2026-08-25 | 0 | not_started | proc_tdec_septic.order FS | 70 |  |  |  |
| proc_tdec_septic.delivered | pre_construction | TDEC septic permit delivered | general | milestone | 0 | 0 | pre_construction | pre_construction | 2026-11-04 | 2026-11-04 | 2026-11-04 | 2026-11-04 | 0 | not_started | proc_tdec_septic.wait FS |  | excavation FS 0 2026-11-04 2026-11-05 |  |  |
| proc_windows_doors.order | pre_construction | Order: Windows & exterior doors | general | work | 0.5 | 2 | pre_construction | pre_construction | 2026-11-12 | 2026-11-12 | 2026-11-12 | 2026-11-12 | 0.5 | not_started |  |  |  |  |  |
| proc_windows_doors.wait | pre_construction | Windows & exterior doors — supplier lead | general | lead_time | 0 | 0 | pre_construction | pre_construction | 2026-11-13 | 2026-12-07 | 2026-11-13 | 2026-11-13 | 0 | not_started | proc_windows_doors.order FS | 21 |  |  |  |
| proc_windows_doors.delivered | pre_construction | Windows & exterior doors delivered | general | milestone | 0 | 0 | pre_construction | pre_construction | 2026-12-08 | 2026-12-08 | 2026-12-08 | 2026-12-08 | 0 | not_started | proc_windows_doors.wait FS |  | ext_windows_doors FS 0 2026-12-08 2026-12-09 |  |  |
| proc_lvl.order | pre_construction | Order: LVL / engineered beams | general | work | 0.5 | 2 | pre_construction | pre_construction | 2026-11-04 | 2026-11-04 | 2026-11-04 | 2026-11-04 | 0.5 | not_started |  |  |  |  |  |
| proc_lvl.wait | pre_construction | LVL / engineered beams — supplier lead | general | lead_time | 0 | 0 | pre_construction | pre_construction | 2026-11-05 | 2026-11-18 | 2026-11-05 | 2026-11-05 | 0 | not_started | proc_lvl.order FS | 14 |  |  |  |
| proc_lvl.delivered | pre_construction | LVL / engineered beams delivered | general | milestone | 0 | 0 | pre_construction | pre_construction | 2026-11-19 | 2026-11-19 | 2026-11-19 | 2026-11-19 | 0 | not_started | proc_lvl.wait FS |  | framing FS 0 2026-11-19 2026-12-07 |  |  |
| proc_subpanel.order | pre_construction | Order: Subpanel / service equipment | general | work | 0.5 | 2 | pre_construction | pre_construction | 2026-12-07 | 2026-12-07 | 2026-12-07 | 2026-12-07 | 0.5 | not_started |  |  |  |  |  |
| proc_subpanel.wait | pre_construction | Subpanel / service equipment — supplier lead | general | lead_time | 0 | 0 | pre_construction | pre_construction | 2026-12-08 | 2026-12-17 | 2026-12-08 | 2026-12-08 | 0 | not_started | proc_subpanel.order FS | 10 |  |  |  |
| proc_subpanel.delivered | pre_construction | Subpanel / service equipment delivered | general | milestone | 0 | 0 | pre_construction | pre_construction | 2026-12-18 | 2026-12-18 | 2026-12-18 | 2026-12-18 | 0 | not_started | proc_subpanel.wait FS |  | electrical_rough FS 0 2026-12-18 2026-12-23 |  |  |
| proc_hvac_equipment.order | pre_construction | Order: HVAC equipment (mini-split / system) | general | work | 0.5 | 2 | pre_construction | pre_construction | 2026-12-03 | 2026-12-03 | 2026-12-03 | 2026-12-03 | 0.5 | not_started |  |  |  |  |  |
| proc_hvac_equipment.wait | pre_construction | HVAC equipment (mini-split / system) — supplier lead | general | lead_time | 0 | 0 | pre_construction | pre_construction | 2026-12-04 | 2026-12-17 | 2026-12-04 | 2026-12-04 | 0 | not_started | proc_hvac_equipment.order FS | 14 |  |  |  |
| proc_hvac_equipment.delivered | pre_construction | HVAC equipment (mini-split / system) delivered | general | milestone | 0 | 0 | pre_construction | pre_construction | 2026-12-18 | 2026-12-18 | 2026-12-18 | 2026-12-18 | 0 | not_started | proc_hvac_equipment.wait FS |  | hvac_rough FS 0 2026-12-18 2026-12-18 |  |  |
| proc_tile.order | pre_construction | Order: Tile & setting materials | general | work | 0.5 | 2 | pre_construction | pre_construction | 2026-12-29 | 2026-12-29 | 2026-12-29 | 2026-12-29 | 0.5 | not_started |  |  |  |  |  |
| proc_tile.wait | pre_construction | Tile & setting materials — supplier lead | general | lead_time | 0 | 0 | pre_construction | pre_construction | 2026-12-30 | 2027-01-20 | 2026-12-30 | 2026-12-30 | 0 | not_started | proc_tile.order FS | 21 |  |  |  |
| proc_tile.delivered | pre_construction | Tile & setting materials delivered | general | milestone | 0 | 0 | pre_construction | pre_construction | 2027-01-21 | 2027-01-21 | 2027-01-21 | 2027-01-21 | 0 | not_started | proc_tile.wait FS |  | shower_work FS 0 2027-01-21 2027-01-26 |  |  |
| proc_flooring.order | pre_construction | Order: Hard flooring | general | work | 0.5 | 2 | pre_construction | pre_construction | 2027-01-11 | 2027-01-11 | 2027-01-11 | 2027-01-11 | 0.5 | not_started |  |  |  |  |  |
| proc_flooring.wait | pre_construction | Hard flooring — supplier lead | general | lead_time | 0 | 0 | pre_construction | pre_construction | 2027-01-12 | 2027-01-25 | 2027-01-12 | 2027-01-12 | 0 | not_started | proc_flooring.order FS | 14 |  |  |  |
| proc_flooring.delivered | pre_construction | Hard flooring delivered | general | milestone | 0 | 0 | pre_construction | pre_construction | 2027-01-26 | 2027-01-26 | 2027-01-26 | 2027-01-26 | 0 | not_started | proc_flooring.wait FS |  | flooring_hard FS 0 2027-01-26 2027-01-28 |  |  |
| proc_cabinets.order | pre_construction | Order: Cabinets / vanities | general | work | 0.5 | 2 | pre_construction | pre_construction | 2026-12-30 | 2026-12-30 | 2026-12-30 | 2026-12-30 | 0.5 | not_started |  |  |  |  |  |
| proc_cabinets.wait | pre_construction | Cabinets / vanities — supplier lead | general | lead_time | 0 | 0 | pre_construction | pre_construction | 2026-12-31 | 2027-01-28 | 2026-12-31 | 2026-12-31 | 0 | not_started | proc_cabinets.order FS | 28 |  |  |  |
| proc_cabinets.delivered | pre_construction | Cabinets / vanities delivered | general | milestone | 0 | 0 | pre_construction | pre_construction | 2027-01-29 | 2027-01-29 | 2027-01-29 | 2027-01-29 | 0 | not_started | proc_cabinets.wait FS |  | fixtures_cabinets FS 0 2027-01-29 2027-02-01 |  |  |
| proc_paint.order | pre_construction | Order: Paint | general | work | 0.5 | 2 | pre_construction | pre_construction | 2027-01-11 | 2027-01-11 | 2027-01-11 | 2027-01-11 | 0.5 | not_started |  |  |  |  |  |
| proc_paint.wait | pre_construction | Paint — supplier lead | general | lead_time | 0 | 0 | pre_construction | pre_construction | 2027-01-12 | 2027-01-18 | 2027-01-12 | 2027-01-12 | 0 | not_started | proc_paint.order FS | 7 |  |  |  |
| proc_paint.delivered | pre_construction | Paint delivered | general | milestone | 0 | 0 | pre_construction | pre_construction | 2027-01-19 | 2027-01-19 | 2027-01-19 | 2027-01-19 | 0 | not_started | proc_paint.wait FS |  | paint_1 FS 0 2027-01-19 2027-01-20 |  |  |
| retro.start | retro | Retrofit (pre-addition work) — start | general | milestone | 0 | 0 | retro | retro | 2026-10-12 | 2026-10-12 | 2026-10-12 | 2026-10-12 | 0 | not_started |  |  | retro_work.start FS 0 2026-10-12 2026-10-12 |  |  |
| retro_work.start | retro | Retrofit Work — start | general | milestone | 0 | 0 | retro | retro | 2026-10-12 | 2026-10-12 | 2026-10-12 | 2026-10-12 | 0 | not_started | retro.start FS |  | retro_relocations FS 0 2026-10-12 2026-10-14 | retro.start FS 0 |  |
| retro_relocations | retro | Utility & equipment relocations (heat pump, disconnect, lines) | general | work | 3 | 2 | retro | retro | 2026-10-12 | 2026-10-14 | 2026-10-12 | 2026-10-12 | 0 | not_started | retro_work.start FS |  | retro_demo FS 0 2026-10-15 2026-10-15 | retro_work.start FS 0 | retro_work |
| retro_demo | retro | Retrofit demolition (interior areas outside the addition) | demo | work | 1 | 3 | retro | retro | 2026-10-15 | 2026-10-15 | 2026-10-15 | 2026-10-15 | 0 | not_started | retro_relocations FS |  | retro_rough_meps FS 0 2026-10-16 2026-10-19 | retro_relocations FS 0 | retro_work |
| retro_rough_meps | retro | Retrofit rough MEPs | plumbing | work | 2 | 2 | retro | retro | 2026-10-16 | 2026-10-19 | 2026-10-16 | 2026-10-16 | 0 | not_started | retro_demo FS |  | retro_inspection FS 1 2026-10-21 2026-10-21 | retro_demo FS 0 | retro_work |
| retro_inspection | retro | Retrofit rough inspection | inspector | inspection | 1 | 1 | retro | retro | 2026-10-21 | 2026-10-21 | 2026-10-21 | 2026-10-21 | 0 | not_started | retro_rough_meps FS 1 |  | retro_drywall FS 0 2026-10-22 2026-10-26 | retro_rough_meps FS 1 | retro_work |
| retro_drywall | retro | Retrofit drywall & patching | drywall | work | 3 | 3 | retro | retro | 2026-10-22 | 2026-10-26 | 2026-10-22 | 2026-10-22 | 0 | not_started | retro_inspection FS |  | retro_finishes FS 0 2026-10-27 2026-11-02 | retro_inspection FS 0 | retro_work |
| retro_finishes | retro | Retrofit finishes (paint, tile, flooring, fixtures) | general | work | 5 | 2 | retro | retro | 2026-10-27 | 2026-11-02 | 2026-10-27 | 2026-10-27 | 0 | not_started | retro_drywall FS |  | retro.end FS 0 2026-11-03 2026-11-03 | retro_drywall FS 0 | retro_work |
| retro.end | retro | Retrofit (pre-addition work) — complete | general | milestone | 0 | 0 | retro | retro | 2026-11-03 | 2026-11-03 | 2026-11-03 | 2026-11-03 | 0 | not_started | retro_relocations FS, retro_demo FS, retro_rough_meps FS, retro_inspection FS, retro_drywall FS, retro_finishes FS, retro.start FS |  | demo.start FS 0 2026-11-03 2026-11-03 | retro_finishes FS 0 |  |
| demo.start | demo | Demolition — start | general | milestone | 0 | 0 | demo | demo | 2026-11-03 | 2026-11-03 | 2026-11-03 | 2026-11-03 | 0 | not_started | retro.end FS |  | main_demo.start FS 0 2026-11-03 2026-11-03 | retro.end FS 0 |  |
| main_demo.start | demo | Main Demolition — start | general | milestone | 0 | 0 | demo | demo | 2026-11-03 | 2026-11-03 | 2026-11-03 | 2026-11-03 | 0 | not_started | demo.start FS |  | demo_main FS 0 2026-11-03 2026-11-04 | demo.start FS 0 |  |
| demo_main | demo | Demolition (site + structure at addition footprint) | demo | work | 2 | 3 | demo | demo | 2026-11-03 | 2026-11-04 | 2026-11-03 | 2026-11-03 | 0 | not_started | main_demo.start FS, proc_building_permit.delivered FS |  | site_prep FS -1 2026-11-04 2026-11-04 | main_demo.start FS 0, proc_building_permit.delivered FS 0 | main_demo |
| site_prep | site_foundation | Site prep (protection, staging, access) | general | work | 1 | 2 | site_foundation | site_foundation | 2026-11-04 | 2026-11-04 | 2026-11-04 | 2026-11-04 | 0 | not_started | demo_main FS -1 |  | excavation SS 0 2026-11-04 2026-11-05 | demo_main FS -1 | groundwork |
| excavation | site_foundation | Excavation (footings, slab, access) | excavation | work | 2 | 2 | site_foundation | site_foundation | 2026-11-04 | 2026-11-05 | 2026-11-04 | 2026-11-04 | 0 | not_started | site_prep SS, proc_tdec_septic.delivered FS |  | foundation FS 0 2026-11-06 2026-11-11 | site_prep SS 0, proc_tdec_septic.delivered FS 0 | groundwork |
| foundation | site_foundation | Foundation (form, inspect, pour) | concrete | work | 4 | 3 | site_foundation | site_foundation | 2026-11-06 | 2026-11-11 | 2026-11-06 | 2026-11-06 | 0 | not_started | excavation FS |  | framing FS 5 2026-11-19 2026-12-07 | excavation FS 0 | groundwork |
| framing | framing_shell | Framing (floor, walls, roof structure, sheathing) | framing | work | 11 | 3 | framing_shell | framing_shell | 2026-11-19 | 2026-12-07 | 2026-11-19 | 2026-11-19 | 0 | not_started | foundation FS 5, proc_lvl.delivered FS |  | ext_windows_doors FS 0 2026-12-08 2026-12-09 | foundation FS 5, proc_lvl.delivered FS 0 | structure_frame |
| ext_windows_doors | framing_shell | Exterior windows & doors install | windows_doors | work | 2 | 2 | framing_shell | framing_shell | 2026-12-08 | 2026-12-09 | 2026-12-08 | 2026-12-08 | 0 | not_started | framing FS, proc_windows_doors.delivered FS |  | exterior_finish.start FS 0 2026-12-10 2026-12-10 | framing FS 0, proc_windows_doors.delivered FS 0 | structure_frame |
| exterior_finish.start | exterior_finish | Exterior Finishes — start | general | milestone | 0 | 0 | exterior_finish | exterior_finish | 2026-12-10 | 2026-12-10 | 2026-12-10 | 2026-12-10 | 0 | not_started | ext_windows_doors FS |  | exterior_cladding.start FS 0 2026-12-10 2026-12-10 | ext_windows_doors FS 0 |  |
| exterior_cladding.start | exterior_finish | Cladding & Roof — start | general | milestone | 0 | 0 | exterior_finish | exterior_finish | 2026-12-10 | 2026-12-10 | 2026-12-10 | 2026-12-10 | 0 | not_started | exterior_finish.start FS |  | fascia_soffit_gutters FS 0 2026-12-10 2026-12-11, roofing FS 0 2026-12-10 2026-12-14, siding FS 0 2026-12-10 2026-12-15 | exterior_finish.start FS 0 |  |
| roofing | exterior_finish | Roofing (underlayment, shingles, flashing, tie-in blend) | roofing | work | 3 | 3 | exterior_finish | exterior_finish | 2026-12-10 | 2026-12-14 | 2026-12-10 | 2026-12-11 | 1 | not_started | exterior_cladding.start FS |  |  | exterior_cladding.start FS 0 | exterior_cladding |
| siding | exterior_finish | Siding (WRB, siding, tie-in blend) | siding | work | 4 | 3 | exterior_finish | exterior_finish | 2026-12-10 | 2026-12-15 | 2026-12-10 | 2026-12-10 | 0 | not_started | exterior_cladding.start FS |  | exterior_finish.end FS 0 2026-12-16 2026-12-16 | exterior_cladding.start FS 0 | exterior_cladding |
| fascia_soffit_gutters | exterior_finish | Fascia, soffit & gutters | siding | work | 2 | 3 | exterior_finish | exterior_finish | 2026-12-10 | 2026-12-11 | 2026-12-10 | 2026-12-14 | 2 | not_started | exterior_cladding.start FS |  |  | exterior_cladding.start FS 0 | exterior_cladding |
| exterior_finish.end | exterior_finish | Exterior Finishes — complete | general | milestone | 0 | 0 | exterior_finish | exterior_finish | 2026-12-16 | 2026-12-16 | 2026-12-16 | 2026-12-16 | 0 | not_started | roofing FS, siding FS, fascia_soffit_gutters FS, exterior_finish.start FS |  | rough_trades.start FS 0 2026-12-16 2026-12-16 | siding FS 0 |  |
| rough_trades.start | rough_trades | Rough Trades (MEPs) — start | general | milestone | 0 | 0 | rough_trades | rough_trades | 2026-12-16 | 2026-12-16 | 2026-12-16 | 2026-12-16 | 0 | not_started | exterior_finish.end FS |  | rough_meps.start FS 0 2026-12-16 2026-12-16 | exterior_finish.end FS 0 |  |
| rough_meps.start | rough_trades | Rough MEPs — start | general | milestone | 0 | 0 | rough_trades | rough_trades | 2026-12-16 | 2026-12-16 | 2026-12-16 | 2026-12-16 | 0 | not_started | rough_trades.start FS |  | plumbing_rough FS 0 2026-12-16 2026-12-18 | rough_trades.start FS 0 |  |
| plumbing_rough | rough_trades | Rough plumbing | plumbing | work | 3 | 2 | rough_trades | rough_trades | 2026-12-16 | 2026-12-18 | 2026-12-16 | 2026-12-16 | 0 | not_started | rough_meps.start FS |  | hvac_rough FS -1 2026-12-18 2026-12-18 | rough_meps.start FS 0 | rough_meps |
| hvac_rough | rough_trades | Rough HVAC (line set / duct extension) | hvac | work | 1 | 2 | rough_trades | rough_trades | 2026-12-18 | 2026-12-18 | 2026-12-18 | 2026-12-18 | 0 | not_started | plumbing_rough FS -1, proc_hvac_equipment.delivered FS |  | electrical_rough FS -1 2026-12-18 2026-12-23 | plumbing_rough FS -1, proc_hvac_equipment.delivered FS 0 | rough_meps |
| electrical_rough | rough_trades | Rough electrical (circuits, subpanel, boxes) | electrical | work | 4 | 2 | rough_trades | rough_trades | 2026-12-18 | 2026-12-23 | 2026-12-18 | 2026-12-18 | 0 | not_started | hvac_rough FS -1, proc_subpanel.delivered FS |  | rough_trades.end FS 0 2026-12-28 2026-12-28 | hvac_rough FS -1, proc_subpanel.delivered FS 0 | rough_meps |
| rough_trades.end | rough_trades | Rough Trades (MEPs) — complete | general | milestone | 0 | 0 | rough_trades | rough_trades | 2026-12-28 | 2026-12-28 | 2026-12-28 | 2026-12-28 | 0 | not_started | plumbing_rough FS, hvac_rough FS, electrical_rough FS, rough_trades.start FS |  | rough_inspections FS 0 2026-12-28 2026-12-29 | electrical_rough FS 0 |  |
| rough_inspections | inspections | Rough inspections (MEPs then framing, bundled) | inspector | inspection | 2 | 1 | inspections | inspections | 2026-12-28 | 2026-12-29 | 2026-12-28 | 2026-12-28 | 0 | not_started | rough_trades.end FS |  | inspections.end FS 0 2026-12-30 2026-12-30 | rough_trades.end FS 0 | rough_inspection |
| inspections.end | inspections | Rough Inspections — complete | general | milestone | 0 | 0 | inspections | inspections | 2026-12-30 | 2026-12-30 | 2026-12-30 | 2026-12-30 | 0 | not_started | rough_inspections FS |  | insulation FS 5 2027-01-07 2027-01-07 | rough_inspections FS 0 |  |
| insulation | insulation_drywall | Insulation & air sealing | insulation | work | 1 | 2 | insulation_drywall | insulation_drywall | 2027-01-07 | 2027-01-07 | 2027-01-07 | 2027-01-07 | 0 | not_started | inspections.end FS 5 |  | insulation_inspection FS 0 2027-01-08 2027-01-08 | inspections.end FS 5 | envelope_close |
| insulation_inspection | insulation_drywall | Insulation inspection | inspector | inspection | 1 | 1 | insulation_drywall | insulation_drywall | 2027-01-08 | 2027-01-08 | 2027-01-08 | 2027-01-08 | 0 | not_started | insulation FS |  | drywall FS 0 2027-01-11 2027-01-18 | insulation FS 0 | envelope_close |
| drywall | insulation_drywall | Drywall (hang, tape, sand) | drywall | work | 6 | 3 | insulation_drywall | insulation_drywall | 2027-01-11 | 2027-01-18 | 2027-01-11 | 2027-01-11 | 0 | not_started | insulation_inspection FS |  | paint_1 FS 0 2027-01-19 2027-01-20 | insulation_inspection FS 0 | envelope_close |
| paint_1 | insulation_drywall | Paint phase 1 (prime + wall prep + ceilings) | paint | work | 2 | 2 | insulation_drywall | insulation_drywall | 2027-01-19 | 2027-01-20 | 2027-01-19 | 2027-01-19 | 0 | not_started | drywall FS, proc_paint.delivered FS |  | insulation_drywall.end FS 0 2027-01-21 2027-01-21 | drywall FS 0, proc_paint.delivered FS 0 | envelope_close |
| insulation_drywall.end | insulation_drywall | Insulation & Drywall — complete | general | milestone | 0 | 0 | insulation_drywall | insulation_drywall | 2027-01-21 | 2027-01-21 | 2027-01-21 | 2027-01-21 | 0 | not_started | insulation FS, insulation_inspection FS, drywall FS, paint_1 FS |  | interior_finish.start FS 0 2027-01-21 2027-01-21 | paint_1 FS 0 |  |
| interior_finish.start | interior_finish | Interior Finishes — start | general | milestone | 0 | 0 | interior_finish | interior_finish | 2027-01-21 | 2027-01-21 | 2027-01-21 | 2027-01-21 | 0 | not_started | insulation_drywall.end FS |  | interior_installs.start FS 0 2027-01-21 2027-01-21 | insulation_drywall.end FS 0 |  |
| interior_installs.start | interior_finish | Interior Installs — start | general | milestone | 0 | 0 | interior_finish | interior_finish | 2027-01-21 | 2027-01-21 | 2027-01-21 | 2027-01-21 | 0 | not_started | interior_finish.start FS |  | shower_work FS 0 2027-01-21 2027-01-26 | interior_finish.start FS 0 |  |
| shower_work | interior_finish | Shower work (waterproofing, tile, grout) | tile | work | 4 | 2 | interior_finish | interior_finish | 2027-01-21 | 2027-01-26 | 2027-01-21 | 2027-01-21 | 0 | not_started | interior_installs.start FS, proc_tile.delivered FS |  | flooring_hard FS -1 2027-01-26 2027-01-28 | interior_installs.start FS 0, proc_tile.delivered FS 0 | interior_installs |
| flooring_hard | interior_finish | Hard flooring install (LVP, hardwood, tile floors) | flooring | work | 3 | 2 | interior_finish | interior_finish | 2027-01-26 | 2027-01-28 | 2027-01-26 | 2027-01-26 | 0 | not_started | shower_work FS -1, proc_flooring.delivered FS |  | fixtures_cabinets FS 0 2027-01-29 2027-02-01 | shower_work FS -1, proc_flooring.delivered FS 0 | interior_installs |

| id | section_id | name | trade | kind | duration_days | crew_size | derived_from | phase_id | scheduled_start | scheduled_end | earliest_start | latest_start | float_days | status | depends_on | binding_successors_of_this | binding_predecessors | component_id |
| --- | --- | --- | --- | --- | --- | --- | --- | --- | --- | --- | --- | --- | --- | --- | --- | --- | --- | --- |
| fixtures_cabinets | interior_finish | Cabinets, counters, vanities & fixed items | cabinets | work | 2 | 2 | interior_finish | interior_finish | 2027-01-29 | 2027-02-01 | 2027-01-29 | 2027-01-29 | 0 | not_started | flooring_hard FS, proc_cabinets.delivered FS | interior_installs.end FS 0 2027-02-02 2027-02-02 | flooring_hard FS 0, proc_cabinets.delivered FS 0 | interior_installs |
| interior_installs.end | interior_finish | Interior Installs — complete | general | milestone | 0 | 0 | interior_finish | interior_finish | 2027-02-02 | 2027-02-02 | 2027-02-02 | 2027-02-02 | 0 | not_started | shower_work FS, flooring_hard FS, fixtures_cabinets FS, interior_installs.start FS | final_finish.start FS 0 2027-02-02 2027-02-02 | fixtures_cabinets FS 0 |  |
| final_finish.start | interior_finish | Final Trades & Paint 2 — start | general | milestone | 0 | 0 | interior_finish | interior_finish | 2027-02-02 | 2027-02-02 | 2027-02-02 | 2027-02-02 | 0 | not_started | interior_installs.end FS | final_trades FS 0 2027-02-02 2027-02-05 | interior_installs.end FS 0 |  |
| final_trades | interior_finish | Final trades (trim, interior doors, final E/P/M) | trim_carpentry | work | 4 | 2 | interior_finish | interior_finish | 2027-02-02 | 2027-02-05 | 2027-02-02 | 2027-02-02 | 0 | not_started | final_finish.start FS | stairs FS 0 2027-02-08 2027-02-09 | final_finish.start FS 0 | final_finish |
| stairs | interior_finish | Stairs (build/finish) | trim_carpentry | work | 2 | 2 | interior_finish | interior_finish | 2027-02-08 | 2027-02-09 | 2027-02-08 | 2027-02-08 | 0 | not_started | final_trades FS | paint_2 FS 0 2027-02-10 2027-02-11 | final_trades FS 0 | final_finish |
| paint_2 | interior_finish | Paint phase 2 (final coats) | paint | work | 2 | 2 | interior_finish | interior_finish | 2027-02-10 | 2027-02-11 | 2027-02-10 | 2027-02-10 | 0 | not_started | stairs FS | sitework.start FS 0 2027-02-12 2027-02-12, substantial_completion FS 0 2027-02-12 2027-02-12 | stairs FS 0 | final_finish |
| substantial_completion | interior_finish | Substantial completion | general | milestone | 0 | 0 | interior_finish | interior_finish | 2027-02-12 | 2027-02-12 | 2027-02-12 | 2027-02-12 | 0 | not_started | paint_2 FS | closeout.start FS 2 2027-02-16 2027-02-16 | paint_2 FS 0 | final_finish |
| sitework.start | sitework | Concrete & Landscaping — start | general | milestone | 0 | 0 | sitework | sitework | 2027-02-12 | 2027-02-12 | 2027-02-12 | 2027-02-17 | 3 | not_started | paint_2 FS | exterior_sitework.start FS 0 2027-02-12 2027-02-12 | paint_2 FS 0 |  |
| exterior_sitework.start | sitework | Concrete & Landscape — start | general | milestone | 0 | 0 | sitework | sitework | 2027-02-12 | 2027-02-12 | 2027-02-12 | 2027-02-17 | 3 | not_started | sitework.start FS | landscaping FS 0 2027-02-12 2027-02-15 | sitework.start FS 0 |  |
| landscaping | sitework | Landscaping & site restoration | landscaping | work | 2 | 2 | sitework | sitework | 2027-02-12 | 2027-02-15 | 2027-02-12 | 2027-02-17 | 3 | not_started | exterior_sitework.start FS |  | exterior_sitework.start FS 0 | exterior_sitework |
| closeout.start | closeout | Closeout — start | general | milestone | 0 | 0 | closeout | closeout | 2027-02-16 | 2027-02-16 | 2027-02-16 | 2027-02-16 | 0 | not_started | substantial_completion FS 2 | closeout_work.start FS 0 2027-02-16 2027-02-16 | substantial_completion FS 2 |  |
| closeout_work.start | closeout | Walkthrough & Final Inspection — start | general | milestone | 0 | 0 | closeout | closeout | 2027-02-16 | 2027-02-16 | 2027-02-16 | 2027-02-16 | 0 | not_started | closeout.start FS | walkthrough_closeout FS 0 2027-02-16 2027-02-16 | closeout.start FS 0 |  |
| walkthrough_closeout | closeout | Customer walkthrough & punch list | pm | work | 1 | 2 | closeout | closeout | 2027-02-16 | 2027-02-16 | 2027-02-16 | 2027-02-16 | 0 | not_started | closeout_work.start FS | final_inspection FS 0 2027-02-17 2027-02-17 | closeout_work.start FS 0 | closeout_work |
| final_inspection | closeout | Final inspections (building + E/P/M, bundled) | inspector | inspection | 1 | 1 | closeout | closeout | 2027-02-17 | 2027-02-17 | 2027-02-17 | 2027-02-17 | 0 | not_started | walkthrough_closeout FS | job_complete FS 1 2027-02-19 2027-02-19 | walkthrough_closeout FS 0 | closeout_work |
| job_complete | closeout | Job complete (owner walkthrough with customer) | general | milestone | 0 | 0 | closeout | closeout | 2027-02-19 | 2027-02-19 | 2027-02-19 | 2027-02-19 | 0 | not_started | final_inspection FS 1, landscaping FS |  | final_inspection FS 1 | closeout_work |
