| id | section_id | name | trade | kind | duration_days | crew_size | derived_from | phase_id | scheduled_start | scheduled_end | earliest_start | latest_start | float_days | status | depends_on | lead_time_days | binding_successors_of_this | component_id | binding_predecessors |
| --- | --- | --- | --- | --- | --- | --- | --- | --- | --- | --- | --- | --- | --- | --- | --- | --- | --- | --- | --- |
| proc_building_permit.order | pre_construction | Order: Building permit | general | work | 0.5 | 2 | pre_construction | pre_construction | 2026-10-21 | 2026-10-21 | 2026-10-21 | 2026-10-21 | 0.5 | not_started |  |  |  |  |  |
| proc_building_permit.wait | pre_construction | Building permit — supplier lead | general | lead_time | 0 | 0 | pre_construction | pre_construction | 2026-10-22 | 2026-11-04 | 2026-10-22 | 2026-10-22 | 0 | not_started | proc_building_permit.order FS | 14 |  |  |  |
| proc_building_permit.delivered | pre_construction | Building permit delivered | general | milestone | 0 | 0 | pre_construction | pre_construction | 2026-11-05 | 2026-11-05 | 2026-11-05 | 2026-11-05 | 0 | not_started | proc_building_permit.wait FS |  | demo_main FS 0 2026-11-05 2026-11-09 |  |  |
| proc_tdec_septic.order | pre_construction | Order: TDEC septic permit | general | work | 0.5 | 2 | pre_construction | pre_construction | 2026-08-27 | 2026-08-27 | 2026-08-27 | 2026-08-27 | 0.5 | not_started |  |  |  |  |  |
| proc_tdec_septic.wait | pre_construction | TDEC septic permit — supplier lead | general | lead_time | 0 | 0 | pre_construction | pre_construction | 2026-08-28 | 2026-11-06 | 2026-08-28 | 2026-08-28 | 0 | not_started | proc_tdec_septic.order FS | 70 |  |  |  |
| proc_tdec_septic.delivered | pre_construction | TDEC septic permit delivered | general | milestone | 0 | 0 | pre_construction | pre_construction | 2026-11-09 | 2026-11-09 | 2026-11-09 | 2026-11-09 | 0 | not_started | proc_tdec_septic.wait FS |  | excavation FS 0 2026-11-09 2026-11-11 |  |  |
| proc_windows_doors.order | pre_construction | Order: Windows & exterior doors | general | work | 0.5 | 2 | pre_construction | pre_construction | 2026-11-19 | 2026-11-19 | 2026-11-19 | 2026-11-19 | 0.5 | not_started |  |  |  |  |  |
| proc_windows_doors.wait | pre_construction | Windows & exterior doors — supplier lead | general | lead_time | 0 | 0 | pre_construction | pre_construction | 2026-11-20 | 2026-12-14 | 2026-11-20 | 2026-11-20 | 0 | not_started | proc_windows_doors.order FS | 21 |  |  |  |
| proc_windows_doors.delivered | pre_construction | Windows & exterior doors delivered | general | milestone | 0 | 0 | pre_construction | pre_construction | 2026-12-15 | 2026-12-15 | 2026-12-15 | 2026-12-15 | 0 | not_started | proc_windows_doors.wait FS |  | ext_windows_doors FS 0 2026-12-15 2026-12-16 |  |  |
| proc_lvl.order | pre_construction | Order: LVL / engineered beams | general | work | 0.5 | 2 | pre_construction | pre_construction | 2026-11-10 | 2026-11-10 | 2026-11-10 | 2026-11-10 | 0.5 | not_started |  |  |  |  |  |
| proc_lvl.wait | pre_construction | LVL / engineered beams — supplier lead | general | lead_time | 0 | 0 | pre_construction | pre_construction | 2026-11-11 | 2026-11-24 | 2026-11-11 | 2026-11-11 | 0 | not_started | proc_lvl.order FS | 14 |  |  |  |
| proc_lvl.delivered | pre_construction | LVL / engineered beams delivered | general | milestone | 0 | 0 | pre_construction | pre_construction | 2026-11-25 | 2026-11-25 | 2026-11-25 | 2026-11-25 | 0 | not_started | proc_lvl.wait FS |  | framing FS 0 2026-11-25 2026-12-14 |  |  |
| proc_subpanel.order | pre_construction | Order: Subpanel / service equipment | general | work | 0.5 | 2 | pre_construction | pre_construction | 2026-12-14 | 2026-12-14 | 2026-12-14 | 2026-12-14 | 0.5 | not_started |  |  |  |  |  |
| proc_subpanel.wait | pre_construction | Subpanel / service equipment — supplier lead | general | lead_time | 0 | 0 | pre_construction | pre_construction | 2026-12-15 | 2026-12-28 | 2026-12-15 | 2026-12-15 | 0 | not_started | proc_subpanel.order FS | 10 |  |  |  |
| proc_subpanel.delivered | pre_construction | Subpanel / service equipment delivered | general | milestone | 0 | 0 | pre_construction | pre_construction | 2026-12-29 | 2026-12-29 | 2026-12-29 | 2026-12-29 | 0 | not_started | proc_subpanel.wait FS |  | electrical_rough FS 0 2026-12-29 2026-12-31 |  |  |
| proc_hvac_equipment.order | pre_construction | Order: HVAC equipment (mini-split / system) | general | work | 0.5 | 2 | pre_construction | pre_construction | 2026-12-10 | 2026-12-10 | 2026-12-10 | 2026-12-10 | 0.5 | not_started |  |  |  |  |  |
| proc_hvac_equipment.wait | pre_construction | HVAC equipment (mini-split / system) — supplier lead | general | lead_time | 0 | 0 | pre_construction | pre_construction | 2026-12-11 | 2026-12-28 | 2026-12-11 | 2026-12-11 | 0 | not_started | proc_hvac_equipment.order FS | 14 |  |  |  |
| proc_hvac_equipment.delivered | pre_construction | HVAC equipment (mini-split / system) delivered | general | milestone | 0 | 0 | pre_construction | pre_construction | 2026-12-29 | 2026-12-29 | 2026-12-29 | 2026-12-29 | 0 | not_started | proc_hvac_equipment.wait FS |  | hvac_rough FS 0 2026-12-29 2026-12-29 |  |  |
| proc_tile.order | pre_construction | Order: Tile & setting materials | general | work | 0.5 | 2 | pre_construction | pre_construction | 2027-01-07 | 2027-01-07 | 2027-01-07 | 2027-01-07 | 0.5 | not_started |  |  |  |  |  |
| proc_tile.wait | pre_construction | Tile & setting materials — supplier lead | general | lead_time | 0 | 0 | pre_construction | pre_construction | 2027-01-08 | 2027-01-28 | 2027-01-08 | 2027-01-08 | 0 | not_started | proc_tile.order FS | 21 |  |  |  |
| proc_tile.delivered | pre_construction | Tile & setting materials delivered | general | milestone | 0 | 0 | pre_construction | pre_construction | 2027-01-29 | 2027-01-29 | 2027-01-29 | 2027-01-29 | 0 | not_started | proc_tile.wait FS |  | shower_work FS 0 2027-01-29 2027-02-03 |  |  |
| proc_flooring.order | pre_construction | Order: Hard flooring | general | work | 0.5 | 2 | pre_construction | pre_construction | 2027-01-19 | 2027-01-19 | 2027-01-19 | 2027-01-19 | 0.5 | not_started |  |  |  |  |  |
| proc_flooring.wait | pre_construction | Hard flooring — supplier lead | general | lead_time | 0 | 0 | pre_construction | pre_construction | 2027-01-20 | 2027-02-02 | 2027-01-20 | 2027-01-20 | 0 | not_started | proc_flooring.order FS | 14 |  |  |  |
| proc_flooring.delivered | pre_construction | Hard flooring delivered | general | milestone | 0 | 0 | pre_construction | pre_construction | 2027-02-03 | 2027-02-03 | 2027-02-03 | 2027-02-03 | 0 | not_started | proc_flooring.wait FS |  | flooring_hard FS 0 2027-02-03 2027-02-05 |  |  |
| proc_cabinets.order | pre_construction | Order: Cabinets / vanities | general | work | 0.5 | 2 | pre_construction | pre_construction | 2027-01-08 | 2027-01-08 | 2027-01-08 | 2027-01-08 | 0.5 | not_started |  |  |  |  |  |
| proc_cabinets.wait | pre_construction | Cabinets / vanities — supplier lead | general | lead_time | 0 | 0 | pre_construction | pre_construction | 2027-01-11 | 2027-02-05 | 2027-01-11 | 2027-01-11 | 0 | not_started | proc_cabinets.order FS | 28 |  |  |  |
| proc_cabinets.delivered | pre_construction | Cabinets / vanities delivered | general | milestone | 0 | 0 | pre_construction | pre_construction | 2027-02-08 | 2027-02-08 | 2027-02-08 | 2027-02-08 | 0 | not_started | proc_cabinets.wait FS |  | fixtures_cabinets FS 0 2027-02-08 2027-02-09 |  |  |
| proc_paint.order | pre_construction | Order: Paint | general | work | 0.5 | 2 | pre_construction | pre_construction | 2027-01-19 | 2027-01-19 | 2027-01-19 | 2027-01-19 | 0.5 | not_started |  |  |  |  |  |
| proc_paint.wait | pre_construction | Paint — supplier lead | general | lead_time | 0 | 0 | pre_construction | pre_construction | 2027-01-20 | 2027-01-26 | 2027-01-20 | 2027-01-20 | 0 | not_started | proc_paint.order FS | 7 |  |  |  |
| proc_paint.delivered | pre_construction | Paint delivered | general | milestone | 0 | 0 | pre_construction | pre_construction | 2027-01-27 | 2027-01-27 | 2027-01-27 | 2027-01-27 | 0 | not_started | proc_paint.wait FS |  | paint_1 FS 0 2027-01-27 2027-01-28 |  |  |
| retro_relocations | retro | Utility & equipment relocations (heat pump, disconnect, lines) | general | work | 2 | 2 | retro | retro | 2026-10-12 | 2026-10-13 | 2026-10-12 | 2026-10-12 | 0 | not_started |  |  | retro_demo FS 0 2026-10-14 2026-10-15 | retro_work |  |
| retro_demo | retro | Retrofit demolition (interior areas outside the addition) | demo | work | 2 | 3 | retro | retro | 2026-10-14 | 2026-10-15 | 2026-10-14 | 2026-10-14 | 0 | not_started | retro_relocations FS |  | retro_rough_meps FS 0 2026-10-16 2026-10-19 | retro_work | retro_relocations FS 0 |
| retro_rough_meps | retro | Retrofit rough MEPs | plumbing | work | 2 | 2 | retro | retro | 2026-10-16 | 2026-10-19 | 2026-10-16 | 2026-10-16 | 0 | not_started | retro_demo FS |  | retro_inspection FS 1 2026-10-21 2026-10-21 | retro_work | retro_demo FS 0 |
| retro_inspection | retro | Retrofit rough inspection | inspector | inspection | 1 | 1 | retro | retro | 2026-10-21 | 2026-10-21 | 2026-10-21 | 2026-10-21 | 0 | not_started | retro_rough_meps FS 1 |  | retro_drywall FS 0 2026-10-22 2026-10-27 | retro_work | retro_rough_meps FS 1 |
| retro_drywall | retro | Retrofit drywall & patching | drywall | work | 4 | 3 | retro | retro | 2026-10-22 | 2026-10-27 | 2026-10-22 | 2026-10-22 | 0 | not_started | retro_inspection FS |  | retro_finishes FS 0 2026-10-28 2026-11-04 | retro_work | retro_inspection FS 0 |
| retro_finishes | retro | Retrofit finishes (paint, tile, flooring, fixtures) | general | work | 6 | 2 | retro | retro | 2026-10-28 | 2026-11-04 | 2026-10-28 | 2026-10-28 | 0 | not_started | retro_drywall FS |  | retro.end FS 0 2026-11-05 2026-11-05 | retro_work | retro_drywall FS 0 |
| retro.end | retro | Retrofit (pre-addition work) — complete | general | milestone | 0 | 0 | retro | retro | 2026-11-05 | 2026-11-05 | 2026-11-05 | 2026-11-05 | 0 | not_started | retro_finishes FS |  | demo_main FS 0 2026-11-05 2026-11-09 |  | retro_finishes FS 0 |
| demo_main | demo | Demolition (site + structure at addition footprint) | demo | work | 3 | 3 | demo | demo | 2026-11-05 | 2026-11-09 | 2026-11-05 | 2026-11-05 | 0 | not_started | retro.end FS, proc_building_permit.delivered FS |  | site_prep FS -1 2026-11-09 2026-11-09 | main_demo | retro.end FS 0, proc_building_permit.delivered FS 0 |
| site_prep | site_foundation | Site prep (protection, staging, access) | general | work | 1 | 2 | site_foundation | site_foundation | 2026-11-09 | 2026-11-09 | 2026-11-09 | 2026-11-09 | 0 | not_started | demo_main FS -1 |  | excavation SS 0 2026-11-09 2026-11-11 | groundwork | demo_main FS -1 |
| excavation | site_foundation | Excavation (footings, slab, access) | excavation | work | 3 | 2 | site_foundation | site_foundation | 2026-11-09 | 2026-11-11 | 2026-11-09 | 2026-11-09 | 0 | not_started | site_prep SS, proc_tdec_septic.delivered FS |  | foundation FS 0 2026-11-12 2026-11-17 | groundwork | site_prep SS 0, proc_tdec_septic.delivered FS 0 |
| foundation | site_foundation | Foundation (form, inspect, pour) | concrete | work | 4 | 3 | site_foundation | site_foundation | 2026-11-12 | 2026-11-17 | 2026-11-12 | 2026-11-12 | 0 | not_started | excavation FS |  | framing FS 5 2026-11-25 2026-12-14 | groundwork | excavation FS 0 |
| framing | framing_shell | Framing (floor, walls, roof structure, sheathing) | framing | work | 12 | 3 | framing_shell | framing_shell | 2026-11-25 | 2026-12-14 | 2026-11-25 | 2026-11-25 | 0 | not_started | foundation FS 5, proc_lvl.delivered FS |  | deck.start SS 0 2026-11-25 2026-11-25, ext_windows_doors FS 0 2026-12-15 2026-12-16 | structure_frame | foundation FS 5, proc_lvl.delivered FS 0 |
| ext_windows_doors | framing_shell | Exterior windows & doors install | windows_doors | work | 2 | 2 | framing_shell | framing_shell | 2026-12-15 | 2026-12-16 | 2026-12-15 | 2026-12-15 | 0 | not_started | framing FS, proc_windows_doors.delivered FS |  | fascia_soffit_gutters FS 0 2026-12-17 2026-12-18, roofing FS 0 2026-12-17 2026-12-21, siding FS 0 2026-12-17 2026-12-22 | structure_frame | framing FS 0, proc_windows_doors.delivered FS 0 |
| deck.start | framing_shell | Deck — start | general | milestone | 0 | 0 | framing_shell | framing_shell | 2026-11-25 | 2026-11-25 | 2026-11-25 | 2027-02-22 | 58 | not_started | framing SS |  | deck_build FS 0 2026-11-25 2026-12-02 |  | framing SS 0 |
| deck_build | framing_shell | Deck build | framing | work | 4 | 3 | framing_shell | framing_shell | 2026-11-25 | 2026-12-02 | 2026-11-25 | 2027-02-22 | 58 | not_started | deck.start FS |  |  | deck | deck.start FS 0 |
| roofing | exterior_finish | Roofing (underlayment, shingles, flashing, tie-in blend) | roofing | work | 3 | 3 | exterior_finish | exterior_finish | 2026-12-17 | 2026-12-21 | 2026-12-17 | 2026-12-17 | 0.5 | not_started | ext_windows_doors FS |  | wh_vent_extension FS 0 2026-12-22 2026-12-22 | exterior_cladding | ext_windows_doors FS 0 |
| siding | exterior_finish | Siding (WRB, siding, tie-in blend) | siding | work | 4 | 3 | exterior_finish | exterior_finish | 2026-12-17 | 2026-12-22 | 2026-12-17 | 2026-12-17 | 0 | not_started | ext_windows_doors FS |  | exterior_finish.end FS 0 2026-12-23 2026-12-23 | exterior_cladding | ext_windows_doors FS 0 |
| fascia_soffit_gutters | exterior_finish | Fascia, soffit & gutters | siding | work | 2 | 3 | exterior_finish | exterior_finish | 2026-12-17 | 2026-12-18 | 2026-12-17 | 2026-12-21 | 2 | not_started | ext_windows_doors FS |  |  | exterior_cladding | ext_windows_doors FS 0 |
| wh_vent_extension | exterior_finish | Extend existing appliance vents through new roof | hvac | work | 0.5 | 2 | exterior_finish | exterior_finish | 2026-12-22 | 2026-12-22 | 2026-12-22 | 2026-12-22 | 0.5 | not_started | roofing FS |  |  | exterior_cladding | roofing FS 0 |
| exterior_finish.end | exterior_finish | Exterior Finishes — complete | general | milestone | 0 | 0 | exterior_finish | exterior_finish | 2026-12-23 | 2026-12-23 | 2026-12-23 | 2026-12-23 | 0 | not_started | siding FS, fascia_soffit_gutters FS, wh_vent_extension FS |  | plumbing_rough FS 0 2026-12-23 2026-12-29 |  | siding FS 0 |
| plumbing_rough | rough_trades | Rough plumbing | plumbing | work | 3 | 2 | rough_trades | rough_trades | 2026-12-23 | 2026-12-29 | 2026-12-23 | 2026-12-23 | 0 | not_started | exterior_finish.end FS |  | hvac_rough FS -1 2026-12-29 2026-12-29 | rough_meps | exterior_finish.end FS 0 |
| hvac_rough | rough_trades | Rough HVAC (line set / duct extension) | hvac | work | 1 | 2 | rough_trades | rough_trades | 2026-12-29 | 2026-12-29 | 2026-12-29 | 2026-12-29 | 0 | not_started | plumbing_rough FS -1, proc_hvac_equipment.delivered FS |  | electrical_rough FS -1 2026-12-29 2026-12-31 | rough_meps | plumbing_rough FS -1, proc_hvac_equipment.delivered FS 0 |
| electrical_rough | rough_trades | Rough electrical (circuits, subpanel, boxes) | electrical | work | 3 | 2 | rough_trades | rough_trades | 2026-12-29 | 2026-12-31 | 2026-12-29 | 2026-12-29 | 0 | not_started | hvac_rough FS -1, proc_subpanel.delivered FS |  | rough_trades.end FS 0 2027-01-04 2027-01-04 | rough_meps | hvac_rough FS -1, proc_subpanel.delivered FS 0 |
| rough_trades.end | rough_trades | Rough Trades (MEPs) — complete | general | milestone | 0 | 0 | rough_trades | rough_trades | 2027-01-04 | 2027-01-04 | 2027-01-04 | 2027-01-04 | 0 | not_started | plumbing_rough FS, hvac_rough FS, electrical_rough FS |  | rough_inspections FS 0 2027-01-04 2027-01-05 |  | electrical_rough FS 0 |
| rough_inspections | inspections | Rough inspections (MEPs then framing, bundled) | inspector | inspection | 2 | 1 | inspections | inspections | 2027-01-04 | 2027-01-05 | 2027-01-04 | 2027-01-04 | 0 | not_started | rough_trades.end FS |  | inspections.end FS 0 2027-01-06 2027-01-06 | rough_inspection | rough_trades.end FS 0 |
| inspections.end | inspections | Rough Inspections — complete | general | milestone | 0 | 0 | inspections | inspections | 2027-01-06 | 2027-01-06 | 2027-01-06 | 2027-01-06 | 0 | not_started | rough_inspections FS |  | insulation FS 5 2027-01-13 2027-01-14 |  | rough_inspections FS 0 |
| insulation | insulation_drywall | Insulation & air sealing | insulation | work | 2 | 2 | insulation_drywall | insulation_drywall | 2027-01-13 | 2027-01-14 | 2027-01-13 | 2027-01-13 | 0 | not_started | inspections.end FS 5 |  | insulation_inspection FS 0 2027-01-15 2027-01-15 | envelope_close | inspections.end FS 5 |
| insulation_inspection | insulation_drywall | Insulation inspection | inspector | inspection | 1 | 1 | insulation_drywall | insulation_drywall | 2027-01-15 | 2027-01-15 | 2027-01-15 | 2027-01-15 | 0 | not_started | insulation FS |  | drywall FS 0 2027-01-18 2027-01-26 | envelope_close | insulation FS 0 |
| drywall | insulation_drywall | Drywall (hang, tape, sand) | drywall | work | 7 | 3 | insulation_drywall | insulation_drywall | 2027-01-18 | 2027-01-26 | 2027-01-18 | 2027-01-18 | 0 | not_started | insulation_inspection FS |  | paint_1 FS 0 2027-01-27 2027-01-28 | envelope_close | insulation_inspection FS 0 |
| paint_1 | insulation_drywall | Paint phase 1 (prime + wall prep + ceilings) | paint | work | 2 | 2 | insulation_drywall | insulation_drywall | 2027-01-27 | 2027-01-28 | 2027-01-27 | 2027-01-27 | 0 | not_started | drywall FS, proc_paint.delivered FS |  | insulation_drywall.end FS 0 2027-01-29 2027-01-29 | envelope_close | drywall FS 0, proc_paint.delivered FS 0 |
| insulation_drywall.end | insulation_drywall | Insulation & Drywall — complete | general | milestone | 0 | 0 | insulation_drywall | insulation_drywall | 2027-01-29 | 2027-01-29 | 2027-01-29 | 2027-01-29 | 0 | not_started | paint_1 FS |  | shower_work FS 0 2027-01-29 2027-02-03 |  | paint_1 FS 0 |
| shower_work | interior_finish | Shower work (waterproofing, tile, grout) | tile | work | 4 | 2 | interior_finish | interior_finish | 2027-01-29 | 2027-02-03 | 2027-01-29 | 2027-01-29 | 0 | not_started | insulation_drywall.end FS, proc_tile.delivered FS |  | flooring_hard FS -1 2027-02-03 2027-02-05 | interior_installs | insulation_drywall.end FS 0, proc_tile.delivered FS 0 |
| flooring_hard | interior_finish | Hard flooring install (LVP, hardwood, tile floors) | flooring | work | 3 | 2 | interior_finish | interior_finish | 2027-02-03 | 2027-02-05 | 2027-02-03 | 2027-02-03 | 0 | not_started | shower_work FS -1, proc_flooring.delivered FS |  | fixtures_cabinets FS 0 2027-02-08 2027-02-09 | interior_installs | shower_work FS -1, proc_flooring.delivered FS 0 |
| fixtures_cabinets | interior_finish | Cabinets, counters, vanities & fixed items | cabinets | work | 2 | 2 | interior_finish | interior_finish | 2027-02-08 | 2027-02-09 | 2027-02-08 | 2027-02-08 | 0 | not_started | flooring_hard FS, proc_cabinets.delivered FS |  | interior_installs.end FS 0 2027-02-10 2027-02-10 | interior_installs | flooring_hard FS 0, proc_cabinets.delivered FS 0 |
| interior_installs.end | interior_finish | Interior Installs — complete | general | milestone | 0 | 0 | interior_finish | interior_finish | 2027-02-10 | 2027-02-10 | 2027-02-10 | 2027-02-10 | 0 | not_started | shower_work FS, fixtures_cabinets FS |  | final_trades FS 0 2027-02-10 2027-02-16 |  | fixtures_cabinets FS 0 |
| final_trades | interior_finish | Final trades (trim, interior doors, final E/P/M) | trim_carpentry | work | 5 | 2 | interior_finish | interior_finish | 2027-02-10 | 2027-02-16 | 2027-02-10 | 2027-02-10 | 0 | not_started | interior_installs.end FS |  | paint_2 FS 0 2027-02-17 2027-02-18 | final_finish | interior_installs.end FS 0 |
| paint_2 | interior_finish | Paint phase 2 (final coats) | paint | work | 2 | 2 | interior_finish | interior_finish | 2027-02-17 | 2027-02-18 | 2027-02-17 | 2027-02-17 | 0 | not_started | final_trades FS |  | concrete_flatwork FS 0 2027-02-19 2027-02-22, substantial_completion FS 0 2027-02-19 2027-02-19 | final_finish | final_trades FS 0 |
| substantial_completion | interior_finish | Substantial completion | general | milestone | 0 | 0 | interior_finish | interior_finish | 2027-02-19 | 2027-02-19 | 2027-02-19 | 2027-02-19 | 0 | not_started | paint_2 FS |  | closeout.start FS 2 2027-02-23 2027-02-23 | final_finish | paint_2 FS 0 |
| concrete_flatwork | sitework | Concrete flatwork (patios, driveways, walkways) | concrete | work | 2 | 3 | sitework | sitework | 2027-02-19 | 2027-02-22 | 2027-02-19 | 2027-02-22 | 1 | not_started | paint_2 FS |  | landscaping FS 0 2027-02-23 2027-02-24 | exterior_sitework | paint_2 FS 0 |
| landscaping | sitework | Landscaping & site restoration | landscaping | work | 2 | 2 | sitework | sitework | 2027-02-23 | 2027-02-24 | 2027-02-23 | 2027-02-24 | 1 | not_started | concrete_flatwork FS |  |  | exterior_sitework | concrete_flatwork FS 0 |

| id | section_id | name | trade | kind | duration_days | crew_size | derived_from | phase_id | scheduled_start | scheduled_end | earliest_start | latest_start | float_days | status | depends_on | binding_successors_of_this | component_id | binding_predecessors |
| --- | --- | --- | --- | --- | --- | --- | --- | --- | --- | --- | --- | --- | --- | --- | --- | --- | --- | --- |
| closeout.start | closeout | Closeout — start | general | milestone | 0 | 0 | closeout | closeout | 2027-02-23 | 2027-02-23 | 2027-02-23 | 2027-02-23 | 0 | not_started | substantial_completion FS 2 | walkthrough_closeout FS 0 2027-02-23 2027-02-23 |  | substantial_completion FS 2 |
| walkthrough_closeout | closeout | Customer walkthrough & punch list | pm | work | 1 | 2 | closeout | closeout | 2027-02-23 | 2027-02-23 | 2027-02-23 | 2027-02-23 | 0 | not_started | closeout.start FS | final_inspection FS 0 2027-02-24 2027-02-24 | closeout_work | closeout.start FS 0 |
| final_inspection | closeout | Final inspections (building + E/P/M, bundled) | inspector | inspection | 1 | 1 | closeout | closeout | 2027-02-24 | 2027-02-24 | 2027-02-24 | 2027-02-24 | 0 | not_started | walkthrough_closeout FS | job_complete FS 1 2027-02-26 2027-02-26 | closeout_work | walkthrough_closeout FS 0 |
| job_complete | closeout | Job complete (owner walkthrough with customer) | general | milestone | 0 | 0 | closeout | closeout | 2027-02-26 | 2027-02-26 | 2027-02-26 | 2027-02-26 | 0 | not_started | final_inspection FS 1, landscaping FS |  | closeout_work | final_inspection FS 1 |
