| id | section_id | name | trade | kind | duration_days | crew_size | derived_from | phase_id | component_id | scheduled_start | scheduled_end | earliest_start | latest_start | float_days | status | binding_successors_of_this | depends_on | binding_predecessors |
| --- | --- | --- | --- | --- | --- | --- | --- | --- | --- | --- | --- | --- | --- | --- | --- | --- | --- | --- |
| utility_relocations | retrofit | Utility & equipment relocations (heat pump, disconnect, lines) | general | work | 3 | 2 | retrofit | retrofit | retrofit_work | 2026-10-12 | 2026-10-14 | 2026-10-12 | 2026-10-12 | 0 | not_started | retrofit_demo FS 0 2026-10-15 2026-10-16 |  |  |
| retrofit_demo | retrofit | Retrofit demolition (interior areas outside the addition) | demo | work | 2 | 2 | retrofit | retrofit | retrofit_work | 2026-10-15 | 2026-10-16 | 2026-10-15 | 2026-10-15 | 0 | not_started | retrofit_rough_meps FS 0 2026-10-19 2026-10-20 | utility_relocations FS | utility_relocations FS 0 |
| retrofit_rough_meps | retrofit | Retrofit rough MEPs | plumbing | work | 2 | 2 | retrofit | retrofit | retrofit_work | 2026-10-19 | 2026-10-20 | 2026-10-19 | 2026-10-19 | 0 | not_started | retrofit_drywall FS 0 2026-10-21 2026-10-23 | retrofit_demo FS | retrofit_demo FS 0 |
| retrofit_drywall | retrofit | Retrofit drywall & patching | drywall | work | 3 | 2 | retrofit | retrofit | retrofit_work | 2026-10-21 | 2026-10-23 | 2026-10-21 | 2026-10-21 | 0 | not_started | retrofit_finishes FS 0 2026-10-26 2026-10-30 | retrofit_rough_meps FS | retrofit_rough_meps FS 0 |
| retrofit_finishes | retrofit | Retrofit finishes (paint, tile, flooring, fixtures) | general | work | 5 | 2 | retrofit | retrofit | retrofit_work | 2026-10-26 | 2026-10-30 | 2026-10-26 | 2026-10-26 | 0 | not_started | retrofit.end FS 0 2026-11-02 2026-11-02 | retrofit_drywall FS | retrofit_drywall FS 0 |
| retrofit.end | retrofit | Retrofit (pre-addition work) — complete | general | milestone | 0 | 0 | retrofit | retrofit |  | 2026-11-02 | 2026-11-02 | 2026-11-02 | 2026-11-02 | 0 | not_started | site_and_structure_demo FS 0 2026-11-02 2026-11-04 | retrofit_finishes FS | retrofit_finishes FS 0 |
| site_and_structure_demo | demolition | Demolition (site + structure at addition footprint) | demo | work | 3 | 3 | demolition | demolition | main_demolition | 2026-11-02 | 2026-11-04 | 2026-11-02 | 2026-11-02 | 0 | not_started | site_prep FS 0 2026-11-05 2026-11-06 | retrofit.end FS, permit_building FS | retrofit.end FS 0, permit_building FS 0 |
| site_prep | site_foundation | Site prep (protection, staging, access) | general | work | 2 | 2 | site_foundation | site_foundation | groundwork | 2026-11-05 | 2026-11-06 | 2026-11-05 | 2026-11-05 | 0 | not_started | excavation FS 0 2026-11-09 2026-11-11 | site_and_structure_demo FS | site_and_structure_demo FS 0 |
| excavation | site_foundation | Excavation (footings, slab, access) | excavation | work | 3 | 2 | site_foundation | site_foundation | groundwork | 2026-11-09 | 2026-11-11 | 2026-11-09 | 2026-11-09 | 0 | not_started | foundation FS 0 2026-11-12 2026-11-17 | site_prep FS, permit_tdec_septic FS | site_prep FS 0, permit_tdec_septic FS 0 |
| foundation | site_foundation | Foundation (form, inspect, pour) | concrete | work | 4 | 4 | site_foundation | site_foundation | groundwork | 2026-11-12 | 2026-11-17 | 2026-11-12 | 2026-11-12 | 0 | not_started | site_foundation.end FS 0 2026-11-18 2026-11-18 | excavation FS, proc_foundation_package FS 3 | excavation FS 0, proc_foundation_package FS 3 |
| site_foundation.end | site_foundation | Site Prep & Foundation — complete | general | milestone | 0 | 0 | site_foundation | site_foundation |  | 2026-11-18 | 2026-11-18 | 2026-11-18 | 2026-11-18 | 0 | not_started | framing_shell.start FS 5 2026-11-25 2026-11-25 | foundation FS | foundation FS 0 |
| framing_shell.start | framing_shell | Framing & Shell — start | general | milestone | 0 | 0 | framing_shell | framing_shell |  | 2026-11-25 | 2026-11-25 | 2026-11-25 | 2026-11-25 | 0 | not_started | framing FS 0 2026-11-25 2026-12-14 | site_foundation.end FS 5 | site_foundation.end FS 5 |
| framing | framing_shell | Framing (floor, walls, roof structure, sheathing) | framing | work | 12 | 4 | framing_shell | framing_shell | structural_framing | 2026-11-25 | 2026-12-14 | 2026-11-25 | 2026-11-25 | 0 | not_started | exterior_windows_doors FS 0 2026-12-15 2026-12-16 | framing_shell.start FS, proc_lvl FS 3, proc_framing_package FS 3 | framing_shell.start FS 0, proc_lvl FS 3, proc_framing_package FS 3 |
| exterior_windows_doors | framing_shell | Exterior windows & doors install | windows_doors | work | 2 | 2 | framing_shell | framing_shell | structural_framing | 2026-12-15 | 2026-12-16 | 2026-12-15 | 2026-12-15 | 0 | not_started | fascia_soffit_gutters FS 0 2026-12-17 2026-12-18, roofing FS 0 2026-12-17 2026-12-18, siding FS 0 2026-12-17 2026-12-23 | framing FS, proc_windows_doors FS 3 | framing FS 0, proc_windows_doors FS 3 |
| roofing | exterior_finishes | Roofing (underlayment, shingles, flashing, tie-in blend) | roofing | work | 2 | 4 | exterior_finishes | exterior_finishes | cladding_roof | 2026-12-17 | 2026-12-18 | 2026-12-17 | 2026-12-17 | 0 | not_started | appliance_vent_extension SS 0 2026-12-17 2026-12-17, rough_plumbing FS 0 2026-12-21 2026-12-22 | exterior_windows_doors FS | exterior_windows_doors FS 0 |
| siding | exterior_finishes | Siding (WRB, siding, tie-in blend) | siding | work | 5 | 3 | exterior_finishes | exterior_finishes | cladding_roof | 2026-12-17 | 2026-12-23 | 2026-12-17 | 2027-02-12 | 38 | not_started | exterior_finishes.end FS 0 2026-12-28 2026-12-28 | exterior_windows_doors FS | exterior_windows_doors FS 0 |
| fascia_soffit_gutters | exterior_finishes | Fascia, soffit & gutters | siding | work | 2 | 2 | exterior_finishes | exterior_finishes | cladding_roof | 2026-12-17 | 2026-12-18 | 2026-12-17 | 2027-02-17 | 41 | not_started |  | exterior_windows_doors FS | exterior_windows_doors FS 0 |
| appliance_vent_extension | exterior_finishes | Extend existing appliance vents through new roof | hvac_plumbing | work | 0.5 | 1 | exterior_finishes | exterior_finishes | cladding_roof | 2026-12-17 | 2026-12-17 | 2026-12-17 | 2027-02-18 | 42.5 | not_started |  | roofing SS | roofing SS 0 |
| exterior_finishes.end | exterior_finishes | Exterior Finishes — complete | general | milestone | 0 | 0 | exterior_finishes | exterior_finishes |  | 2026-12-28 | 2026-12-28 | 2026-12-28 | 2027-02-19 | 38 | not_started |  | roofing FS, siding FS, fascia_soffit_gutters FS, appliance_vent_extension FS | siding FS 0 |
| rough_plumbing | rough_trades | Rough plumbing | plumbing | work | 2 | 2 | rough_trades | rough_trades | rough_meps | 2026-12-21 | 2026-12-22 | 2026-12-21 | 2026-12-21 | 0 | not_started | rough_hvac FS -1 2026-12-22 2026-12-22 | roofing FS, permit_plumbing FS, proc_plumbing_package FS 3 | roofing FS 0, permit_plumbing FS 0, proc_plumbing_package FS 3 |
| rough_hvac | rough_trades | Rough HVAC (line set / duct extension) | hvac | work | 1 | 2 | rough_trades | rough_trades | rough_meps | 2026-12-22 | 2026-12-22 | 2026-12-22 | 2026-12-22 | 0 | not_started | rough_electrical FS -1 2026-12-22 2026-12-29 | rough_plumbing FS -1, permit_mechanical FS, proc_hvac_equipment FS 3 | rough_plumbing FS -1, permit_mechanical FS 0, proc_hvac_equipment FS 3 |
| rough_electrical | rough_trades | Rough electrical (circuits, subpanel, boxes) | electrical | work | 4 | 2 | rough_trades | rough_trades | rough_meps | 2026-12-22 | 2026-12-29 | 2026-12-22 | 2026-12-22 | 0 | not_started | rough_trades.end FS 0 2026-12-30 2026-12-30 | rough_hvac FS -1, proc_subpanel FS 3, proc_electrical_package FS 3 | rough_hvac FS -1, proc_subpanel FS 3, proc_electrical_package FS 3 |
| rough_trades.end | rough_trades | Rough Trades (MEPs) — complete | general | milestone | 0 | 0 | rough_trades | rough_trades |  | 2026-12-30 | 2026-12-30 | 2026-12-30 | 2026-12-30 | 0 | not_started | bundled_rough_inspections FS 0 2026-12-30 2026-12-31 | rough_plumbing FS, rough_hvac FS, rough_electrical FS | rough_electrical FS 0 |
| bundled_rough_inspections | rough_inspections | Rough inspections (MEPs then framing, bundled) | inspector | inspection | 2 | 1 | rough_inspections | rough_inspections | bundled_inspections | 2026-12-30 | 2026-12-31 | 2026-12-30 | 2026-12-30 | 0 | not_started | rough_inspections.end FS 0 2027-01-04 2027-01-04 | rough_trades.end FS | rough_trades.end FS 0 |
| rough_inspections.end | rough_inspections | Rough Inspections — complete | general | milestone | 0 | 0 | rough_inspections | rough_inspections |  | 2027-01-04 | 2027-01-04 | 2027-01-04 | 2027-01-04 | 0 | not_started | insulation_drywall.start FS 5 2027-01-11 2027-01-11 | bundled_rough_inspections FS | bundled_rough_inspections FS 0 |
| insulation_drywall.start | insulation_drywall | Insulation & Drywall — start | general | milestone | 0 | 0 | insulation_drywall | insulation_drywall |  | 2027-01-11 | 2027-01-11 | 2027-01-11 | 2027-01-11 | 0 | not_started | insulation FS 0 2027-01-11 2027-01-11 | rough_inspections.end FS 5 | rough_inspections.end FS 5 |
| insulation | insulation_drywall | Insulation & air sealing | insulation | work | 1 | 2 | insulation_drywall | insulation_drywall | insulation_drywall_prime | 2027-01-11 | 2027-01-11 | 2027-01-11 | 2027-01-11 | 0 | not_started | insulation_inspection FS 0 2027-01-12 2027-01-12 | insulation_drywall.start FS, proc_insulation FS 3 | insulation_drywall.start FS 0, proc_insulation FS 3 |
| insulation_inspection | insulation_drywall | Insulation inspection | inspector | inspection | 1 | 1 | insulation_drywall | insulation_drywall | insulation_drywall_prime | 2027-01-12 | 2027-01-12 | 2027-01-12 | 2027-01-12 | 0 | not_started | drywall FS 0 2027-01-13 2027-01-20 | insulation FS | insulation FS 0 |
| drywall | insulation_drywall | Drywall (hang, tape, sand) | drywall | work | 6 | 3 | insulation_drywall | insulation_drywall | insulation_drywall_prime | 2027-01-13 | 2027-01-20 | 2027-01-13 | 2027-01-13 | 0 | not_started | paint_phase_1 FS 0 2027-01-21 2027-01-22 | insulation_inspection FS, proc_drywall FS 3 | insulation_inspection FS 0, proc_drywall FS 3 |
| paint_phase_1 | insulation_drywall | Paint phase 1 (prime + wall prep + ceilings) | paint | work | 2 | 2 | insulation_drywall | insulation_drywall | insulation_drywall_prime | 2027-01-21 | 2027-01-22 | 2027-01-21 | 2027-01-21 | 0 | not_started | insulation_drywall.end FS 0 2027-01-25 2027-01-25 | drywall FS, proc_paint FS 3 | drywall FS 0, proc_paint FS 3 |
| insulation_drywall.end | insulation_drywall | Insulation & Drywall — complete | general | milestone | 0 | 0 | insulation_drywall | insulation_drywall |  | 2027-01-25 | 2027-01-25 | 2027-01-25 | 2027-01-25 | 0 | not_started | shower_work FS 0 2027-01-25 2027-01-28 | paint_phase_1 FS | paint_phase_1 FS 0 |
| shower_work | interior_finishes | Shower work (waterproofing, tile, grout) | tile | work | 4 | 1 | interior_finishes | interior_finishes | interior_installs | 2027-01-25 | 2027-01-28 | 2027-01-25 | 2027-01-25 | 0 | not_started | hard_flooring FS 0 2027-01-29 2027-02-01 | insulation_drywall.end FS, proc_tile FS 3 | insulation_drywall.end FS 0, proc_tile FS 3 |
| hard_flooring | interior_finishes | Hard flooring install (LVP, hardwood, tile floors) | flooring | work | 2 | 2 | interior_finishes | interior_finishes | interior_installs | 2027-01-29 | 2027-02-01 | 2027-01-29 | 2027-01-29 | 0 | not_started | cabinets_counters FS 0 2027-02-02 2027-02-02 | shower_work FS, proc_hard_flooring FS 3 | shower_work FS 0, proc_hard_flooring FS 3 |
| cabinets_counters | interior_finishes | Cabinets, counters, vanities & fixed items | cabinets | work | 1 | 2 | interior_finishes | interior_finishes | interior_installs | 2027-02-02 | 2027-02-02 | 2027-02-02 | 2027-02-02 | 0 | not_started | interior_installs.end FS 0 2027-02-03 2027-02-03 | hard_flooring FS, proc_cabinets FS 3, proc_countertops FS 3 | hard_flooring FS 0, proc_cabinets FS 3, proc_countertops FS 3 |
| interior_installs.end | interior_finishes | Interior Installs — complete | general | milestone | 0 | 0 | interior_finishes | interior_finishes |  | 2027-02-03 | 2027-02-03 | 2027-02-03 | 2027-02-03 | 0 | not_started | mep_fixture_install FS 0 2027-02-03 2027-02-04 | cabinets_counters FS | cabinets_counters FS 0 |
| mep_fixture_install | interior_finishes | Final Trades (fixture install for HVAC, Plumbing, and Electrical) | mep_finish | work | 2 | 3 | interior_finishes | interior_finishes | final_trades_paint_2 | 2027-02-03 | 2027-02-04 | 2027-02-03 | 2027-02-03 | 0 | not_started | finish_carpentry FS 0 2027-02-05 2027-02-09 | interior_installs.end FS, proc_plumbing_fixtures FS 3, proc_light_fixtures FS 3 | interior_installs.end FS 0, proc_plumbing_fixtures FS 3, proc_light_fixtures FS 3 |
| finish_carpentry | interior_finishes | Finish Carpentry | trim_carpentry | work | 3 | 2 | interior_finishes | interior_finishes | final_trades_paint_2 | 2027-02-05 | 2027-02-09 | 2027-02-05 | 2027-02-05 | 0 | not_started | paint_phase_2 FS 0 2027-02-10 2027-02-11 | mep_fixture_install FS, proc_doors_trim FS 3 | mep_fixture_install FS 0, proc_doors_trim FS 3 |
| paint_phase_2 | interior_finishes | Paint phase 2 (final coats) | paint | work | 2 | 2 | interior_finishes | interior_finishes | final_trades_paint_2 | 2027-02-10 | 2027-02-11 | 2027-02-10 | 2027-02-10 | 0 | not_started | substantial_completion FS 0 2027-02-12 2027-02-12 | finish_carpentry FS | finish_carpentry FS 0 |
| substantial_completion | interior_finishes | Substantial completion | general | milestone | 0 | 0 | interior_finishes | interior_finishes | final_trades_paint_2 | 2027-02-12 | 2027-02-12 | 2027-02-12 | 2027-02-12 | 0 | not_started | closeout.start FS 2 2027-02-16 2027-02-16 | paint_phase_2 FS | paint_phase_2 FS 0 |
| closeout.start | closeout | Closeout — start | general | milestone | 0 | 0 | closeout | closeout |  | 2027-02-16 | 2027-02-16 | 2027-02-16 | 2027-02-16 | 0 | not_started | customer_walkthrough FS 0 2027-02-16 2027-02-16 | substantial_completion FS 2 | substantial_completion FS 2 |
| customer_walkthrough | closeout | Customer walkthrough & punch list | pm | work | 1 | 1 | closeout | closeout | walkthrough_final_inspection | 2027-02-16 | 2027-02-16 | 2027-02-16 | 2027-02-16 | 0 | not_started | final_inspections FS 0 2027-02-17 2027-02-17 | closeout.start FS | closeout.start FS 0 |
| final_inspections | closeout | Final inspections (building + E/P/M, bundled) | inspector | inspection | 1 | 1 | closeout | closeout | walkthrough_final_inspection | 2027-02-17 | 2027-02-17 | 2027-02-17 | 2027-02-17 | 0 | not_started | job_complete FS 1 2027-02-19 2027-02-19 | customer_walkthrough FS | customer_walkthrough FS 0 |
| job_complete | closeout | Job complete (owner walkthrough with customer) | general | milestone | 0 | 0 | closeout | closeout | walkthrough_final_inspection | 2027-02-19 | 2027-02-19 | 2027-02-19 | 2027-02-19 | 0 | not_started |  | final_inspections FS 1, paint_phase_2 FS, exterior_finishes.end FS, framing FS | final_inspections FS 1 |
| permit_building | permits | Building permit | general | permit | 10 | 0 | permits | permits | permit_items | 2026-10-19 | 2026-10-30 | 2026-10-19 | 2026-10-19 | 0 | not_started | site_and_structure_demo FS 0 2026-11-02 2026-11-04 |  |  |
| permit_tdec_septic | permits | TDEC septic permit | general | permit | 30 | 0 | permits | permits | permit_items | 2026-09-28 | 2026-11-06 | 2026-09-28 | 2026-09-28 | 0 | not_started | excavation FS 0 2026-11-09 2026-11-11 |  |  |
| permit_plumbing | permits | Plumbing Permit | general | permit | 10 | 0 | permits | permits | permit_items | 2026-12-07 | 2026-12-18 | 2026-12-07 | 2026-12-07 | 0 | not_started | rough_plumbing FS 0 2026-12-21 2026-12-22 |  |  |
| permit_mechanical | permits | Mechanical Permit | general | permit | 10 | 0 | permits | permits | permit_items | 2026-12-08 | 2026-12-21 | 2026-12-08 | 2026-12-08 | 0 | not_started | rough_hvac FS 0 2026-12-22 2026-12-22 |  |  |
| proc_foundation_package | procurement | Foundation | general | procurement | 10 | 0 | procurement | procurement | procurement_items | 2026-10-26 | 2026-11-06 | 2026-10-26 | 2026-10-26 | 0 | not_started | foundation FS 3 2026-11-12 2026-11-17 |  |  |
| proc_windows_doors | procurement | Windows & exterior doors | general | procurement | 13 | 0 | procurement | procurement | procurement_items | 2026-11-19 | 2026-12-09 | 2026-11-19 | 2026-11-19 | 0 | not_started | exterior_windows_doors FS 3 2026-12-15 2026-12-16 |  |  |
| proc_lvl | procurement | LVL / engineered beams | general | procurement | 7 | 0 | procurement | procurement | procurement_items | 2026-11-11 | 2026-11-19 | 2026-11-11 | 2026-11-11 | 0 | not_started | framing FS 3 2026-11-25 2026-12-14 |  |  |
| proc_framing_package | procurement | Framing Package | general | procurement | 7 | 0 | procurement | procurement | procurement_items | 2026-11-11 | 2026-11-19 | 2026-11-11 | 2026-11-11 | 0 | not_started | framing FS 3 2026-11-25 2026-12-14 |  |  |
| proc_subpanel | procurement | Subpanel / service equipment | general | procurement | 4 | 0 | procurement | procurement | procurement_items | 2026-12-11 | 2026-12-16 | 2026-12-11 | 2026-12-11 | 0 | not_started | rough_electrical FS 3 2026-12-22 2026-12-29 |  |  |
| proc_hvac_equipment | procurement | HVAC equipment (mini-split / system) | general | procurement | 7 | 0 | procurement | procurement | procurement_items | 2026-12-08 | 2026-12-16 | 2026-12-08 | 2026-12-08 | 0 | not_started | rough_hvac FS 3 2026-12-22 2026-12-22 |  |  |
| proc_electrical_package | procurement | Electrical Package | general | procurement | 4 | 0 | procurement | procurement | procurement_items | 2026-12-11 | 2026-12-16 | 2026-12-11 | 2026-12-11 | 0 | not_started | rough_electrical FS 3 2026-12-22 2026-12-29 |  |  |
| proc_plumbing_package | procurement | Plumbing Package | general | procurement | 2 | 0 | procurement | procurement | procurement_items | 2026-12-14 | 2026-12-15 | 2026-12-14 | 2026-12-14 | 0 | not_started | rough_plumbing FS 3 2026-12-21 2026-12-22 |  |  |
| proc_tile | procurement | Tile & setting materials | general | procurement | 5 | 0 | procurement | procurement | procurement_items | 2027-01-13 | 2027-01-19 | 2027-01-13 | 2027-01-13 | 0 | not_started | shower_work FS 3 2027-01-25 2027-01-28 |  |  |
| proc_hard_flooring | procurement | Hard flooring | general | procurement | 10 | 0 | procurement | procurement | procurement_items | 2027-01-12 | 2027-01-25 | 2027-01-12 | 2027-01-12 | 0 | not_started | hard_flooring FS 3 2027-01-29 2027-02-01 |  |  |
| proc_insulation | procurement | Insulation | general | procurement | 1 | 0 | procurement | procurement | procurement_items | 2027-01-05 | 2027-01-05 | 2027-01-05 | 2027-01-05 | 0 | not_started | insulation FS 3 2027-01-11 2027-01-11 |  |  |
| proc_drywall | procurement | Drywall | general | procurement | 4 | 0 | procurement | procurement | procurement_items | 2027-01-04 | 2027-01-07 | 2027-01-04 | 2027-01-04 | 0 | not_started | drywall FS 3 2027-01-13 2027-01-20 |  |  |
| proc_cabinets | procurement | Cabinets / vanities | general | procurement | 15 | 0 | procurement | procurement | procurement_items | 2027-01-07 | 2027-01-27 | 2027-01-07 | 2027-01-07 | 0 | not_started | cabinets_counters FS 3 2027-02-02 2027-02-02 |  |  |
| proc_countertops | procurement | Countertops | general | procurement | 18 | 0 | procurement | procurement | procurement_items | 2027-01-04 | 2027-01-27 | 2027-01-04 | 2027-01-04 | 0 | not_started | cabinets_counters FS 3 2027-02-02 2027-02-02 |  |  |
| proc_paint | procurement | Paint + Primer | general | procurement | 1 | 0 | procurement | procurement | procurement_items | 2027-01-15 | 2027-01-15 | 2027-01-15 | 2027-01-15 | 0 | not_started | paint_phase_1 FS 3 2027-01-21 2027-01-22 |  |  |
| proc_doors_trim | procurement | Interior doors & trim package | general | procurement | 5 | 0 | procurement | procurement | procurement_items | 2027-01-26 | 2027-02-01 | 2027-01-26 | 2027-01-26 | 0 | not_started | finish_carpentry FS 3 2027-02-05 2027-02-09 |  |  |
| proc_plumbing_fixtures | procurement | Plumbing fixtures (faucets, sinks, commodes, shower trim) | general | procurement | 5 | 0 | procurement | procurement | procurement_items | 2027-01-22 | 2027-01-28 | 2027-01-22 | 2027-01-22 | 0 | not_started | mep_fixture_install FS 3 2027-02-03 2027-02-04 |  |  |
| proc_light_fixtures | procurement | Light fixtures & devices | general | procurement | 5 | 0 | procurement | procurement | procurement_items | 2027-01-22 | 2027-01-28 | 2027-01-22 | 2027-01-22 | 0 | not_started | mep_fixture_install FS 3 2027-02-03 2027-02-04 |  |  |
