| id | section_id | name | trade | kind | duration_days | crew_size | derived_from | phase_id | component_id | scheduled_start | scheduled_end | earliest_start | latest_start | float_days | status | binding_successors_of_this | depends_on | binding_predecessors |
| --- | --- | --- | --- | --- | --- | --- | --- | --- | --- | --- | --- | --- | --- | --- | --- | --- | --- | --- |
| proc_foundation_package | procurement | Foundation | general | procurement | 5 | 0 | procurement | procurement | procurement_items | 2027-02-22 | 2027-02-26 | 2027-02-22 | 2027-02-22 | 0 | not_started | foundation FS 3 2027-03-04 2027-03-05 |  |  |
| proc_windows_doors | procurement | Windows & exterior doors | general | procurement | 10 | 0 | procurement | procurement | procurement_items | 2027-03-09 | 2027-03-22 | 2027-03-09 | 2027-03-09 | 0 | not_started | exterior_windows_doors FS 3 2027-03-26 2027-03-26 |  |  |
| proc_framing_package | procurement | Framing Package | general | procurement | 7 | 0 | procurement | procurement | procurement_items | 2027-03-01 | 2027-03-09 | 2027-03-01 | 2027-03-01 | 0 | not_started | framing FS 3 2027-03-15 2027-03-25 |  |  |
| permit_building | permits | Building permit | general | permit | 10 | 0 | permits | permits | permit_items | 2027-02-15 | 2027-02-26 | 2027-02-15 | 2027-02-15 | 0 | not_started | site_and_structure_demo FS 0 2027-03-01 2027-03-01 |  |  |
| site_and_structure_demo | demolition | Demolition (site + structure at addition footprint) | demo | work | 1 | 3 | demolition | demolition | main_demolition | 2027-03-01 | 2027-03-01 | 2027-03-01 | 2027-03-01 | 0 | not_started | site_prep FS 0 2027-03-02 2027-03-02 | permit_building FS | permit_building FS 0 |
| site_prep | site_foundation | Site prep (protection, staging, access) | general | work | 1 | 2 | site_foundation | site_foundation | groundwork | 2027-03-02 | 2027-03-02 | 2027-03-02 | 2027-03-02 | 0 | not_started | excavation FS 0 2027-03-03 2027-03-03 | site_and_structure_demo FS | site_and_structure_demo FS 0 |
| excavation | site_foundation | Excavation (footings, slab, access) | excavation | work | 1 | 2 | site_foundation | site_foundation | groundwork | 2027-03-03 | 2027-03-03 | 2027-03-03 | 2027-03-03 | 0 | not_started | foundation FS 0 2027-03-04 2027-03-05 | site_prep FS | site_prep FS 0 |
| foundation | site_foundation | Foundation (form, inspect, pour) | concrete | work | 2 | 4 | site_foundation | site_foundation | groundwork | 2027-03-04 | 2027-03-05 | 2027-03-04 | 2027-03-04 | 0 | not_started | site_foundation.end FS 0 2027-03-08 2027-03-08 | excavation FS, proc_foundation_package FS 3 | excavation FS 0, proc_foundation_package FS 3 |
| site_foundation.end | site_foundation | Site Prep & Foundation — complete | general | milestone | 0 | 0 | site_foundation | site_foundation |  | 2027-03-08 | 2027-03-08 | 2027-03-08 | 2027-03-08 | 0 | not_started | framing_shell.start FS 5 2027-03-15 2027-03-15 | foundation FS | foundation FS 0 |
| framing_shell.start | framing_shell | Framing & Shell — start | general | milestone | 0 | 0 | framing_shell | framing_shell |  | 2027-03-15 | 2027-03-15 | 2027-03-15 | 2027-03-15 | 0 | not_started | framing FS 0 2027-03-15 2027-03-25 | site_foundation.end FS 5 | site_foundation.end FS 5 |
| framing | framing_shell | Framing (floor, walls, roof structure, sheathing) | framing | work | 9 | 3 | framing_shell | framing_shell | structural_framing | 2027-03-15 | 2027-03-25 | 2027-03-15 | 2027-03-15 | 0 | not_started | exterior_windows_doors FS 0 2027-03-26 2027-03-26 | framing_shell.start FS, proc_framing_package FS 3 | framing_shell.start FS 0, proc_framing_package FS 3 |
| exterior_windows_doors | framing_shell | Exterior windows & doors install | windows_doors | work | 1 | 2 | framing_shell | framing_shell | structural_framing | 2027-03-26 | 2027-03-26 | 2027-03-26 | 2027-03-26 | 0 | not_started | roofing FS 0 2027-03-29 2027-03-30, siding FS 0 2027-03-29 2027-03-30 | framing FS, proc_windows_doors FS 3 | framing FS 0, proc_windows_doors FS 3 |
| roofing | exterior_finishes | Roofing (underlayment, shingles, flashing, tie-in blend) | roofing | work | 2 | 3 | exterior_finishes | exterior_finishes | cladding_roof | 2027-03-29 | 2027-03-30 | 2027-03-29 | 2027-03-29 | 0 | not_started | bundled_rough_inspections FS 0 2027-03-31 2027-03-31, extra.1 FS 0 2027-03-31 2027-04-06, exterior_finishes.end FS 0 2027-03-31 2027-03-31 | exterior_windows_doors FS | exterior_windows_doors FS 0 |
| siding | exterior_finishes | Siding (WRB, siding, tie-in blend) | siding | work | 2 | 2 | exterior_finishes | exterior_finishes | cladding_roof | 2027-03-29 | 2027-03-30 | 2027-03-29 | 2027-04-01 | 3 | not_started | exterior_finishes.end FS 0 2027-03-31 2027-03-31, extra.2 FS 0 2027-03-31 2027-04-02 | exterior_windows_doors FS | exterior_windows_doors FS 0 |
| extra.1 | exterior_finishes | Fireplace firebox, Class A pipe, veneer, hearth & mantel | in-house carpentry/masonry | work | 5 | 2 | exterior_finishes flagged: review before trusting | exterior_finishes |  | 2027-03-31 | 2027-04-06 | 2027-03-31 | 2027-04-01 | 1 | not_started |  | roofing FS | roofing FS 0 |
| extra.2 | exterior_finishes | Site-built screen frames, screen & trim install | in-house carpentry | work | 3 | 2 | exterior_finishes flagged: review before trusting | exterior_finishes |  | 2027-03-31 | 2027-04-02 | 2027-03-31 | 2027-04-05 | 3 | not_started |  | siding FS | siding FS 0 |
| exterior_finishes.end | exterior_finishes | Exterior Finishes — complete | general | milestone | 0 | 0 | exterior_finishes | exterior_finishes |  | 2027-03-31 | 2027-03-31 | 2027-03-31 | 2027-04-08 | 6 | not_started |  | roofing FS, siding FS | roofing FS 0, siding FS 0 |
| bundled_rough_inspections | rough_inspections | Rough inspections (MEPs then framing, bundled) | inspector | inspection | 1 | 1 | rough_inspections | rough_inspections | bundled_inspections | 2027-03-31 | 2027-03-31 | 2027-03-31 | 2027-03-31 | 0 | not_started | rough_inspections.end FS 0 2027-04-01 2027-04-01 | roofing FS | roofing FS 0 |
| rough_inspections.end | rough_inspections | Rough Inspections — complete | general | milestone | 0 | 0 | rough_inspections | rough_inspections |  | 2027-04-01 | 2027-04-01 | 2027-04-01 | 2027-04-01 | 0 | not_started | closeout.start FS 2 2027-04-05 2027-04-05 | bundled_rough_inspections FS | bundled_rough_inspections FS 0 |
| closeout.start | closeout | Closeout — start | general | milestone | 0 | 0 | closeout | closeout |  | 2027-04-05 | 2027-04-05 | 2027-04-05 | 2027-04-05 | 0 | not_started | customer_walkthrough FS 0 2027-04-05 2027-04-05 | rough_inspections.end FS 2 | rough_inspections.end FS 2 |
| customer_walkthrough | closeout | Customer walkthrough & punch list | pm | work | 1 | 1 | closeout | closeout | walkthrough_final_inspection | 2027-04-05 | 2027-04-05 | 2027-04-05 | 2027-04-05 | 0 | not_started | final_inspections FS 0 2027-04-06 2027-04-06 | closeout.start FS | closeout.start FS 0 |
| final_inspections | closeout | Final inspections (building + E/P/M, bundled) | inspector | inspection | 1 | 1 | closeout | closeout | walkthrough_final_inspection | 2027-04-06 | 2027-04-06 | 2027-04-06 | 2027-04-06 | 0 | not_started | job_complete FS 1 2027-04-08 2027-04-08 | customer_walkthrough FS | customer_walkthrough FS 0 |
| job_complete | closeout | Job complete (owner walkthrough with customer) | general | milestone | 0 | 0 | closeout | closeout | walkthrough_final_inspection | 2027-04-08 | 2027-04-08 | 2027-04-08 | 2027-04-08 | 0 | not_started |  | final_inspections FS 1, rough_inspections.end FS, exterior_finishes.end FS, framing FS | final_inspections FS 1 |
