| id | section_id | name | trade | kind | duration_days | crew_size | derived_from | phase_id | component_id | scheduled_start | scheduled_end | earliest_start | latest_start | float_days | status | binding_successors_of_this | depends_on | binding_predecessors |
| --- | --- | --- | --- | --- | --- | --- | --- | --- | --- | --- | --- | --- | --- | --- | --- | --- | --- | --- |
| proc_foundation_package | procurement | Foundation | general | procurement | 5 | 0 | procurement | procurement | procurement_items | 2027-02-22 | 2027-02-26 | 2027-02-22 | 2027-02-22 | 0 | not_started | foundation_prep FS 3 2027-03-04 2027-03-05 |  |  |
| proc_windows_doors | procurement | Windows & exterior doors | general | procurement | 13 | 0 | procurement | procurement | procurement_items | 2027-02-26 | 2027-03-16 | 2027-02-26 | 2027-02-26 | 0 | not_started | exterior_windows_doors FS 3 2027-03-22 2027-03-22 |  |  |
| proc_framing_package | procurement | Framing Package | general | procurement | 7 | 0 | procurement | procurement | procurement_items | 2027-03-03 | 2027-03-11 | 2027-03-03 | 2027-03-03 | 0 | not_started | framing FS 3 2027-03-17 2027-03-19 |  |  |
| proc_fireplace_kit | procurement | Fireplace kit (firebox + Class A chimney) | general | procurement | 18 | 0 | procurement flagged: review before trusting | procurement | procurement_items | 2027-02-19 | 2027-03-16 | 2027-02-19 | 2027-02-23 | 2 | not_started | fireplace_chase_install FS 3 2027-03-22 2027-03-23 |  |  |
| permit_building | permits | Building permit | general | permit | 10 | 0 | permits | permits | permit_items | 2027-02-15 | 2027-02-26 | 2027-02-15 | 2027-02-15 | 0 | not_started | site_and_structure_demo FS 0 2027-03-01 2027-03-01 |  |  |
| site_and_structure_demo | demolition | Demolition (site + structure at addition footprint) | demo | work | 1 | 3 | demolition | demolition | main_demolition | 2027-03-01 | 2027-03-01 | 2027-03-01 | 2027-03-01 | 0 | not_started | site_prep FS 0 2027-03-02 2027-03-02 | permit_building FS | permit_building FS 0 |
| site_prep | site_foundation | Site prep (protection, staging, access) | general | work | 1 | 2 | site_foundation | site_foundation | groundwork | 2027-03-02 | 2027-03-02 | 2027-03-02 | 2027-03-02 | 0 | not_started | excavation FS 0 2027-03-03 2027-03-03 | site_and_structure_demo FS | site_and_structure_demo FS 0 |
| excavation | site_foundation | Excavation (footings, slab, access) | excavation | work | 1 | 2 | site_foundation | site_foundation | groundwork | 2027-03-03 | 2027-03-03 | 2027-03-03 | 2027-03-03 | 0 | not_started | foundation_prep FS 0 2027-03-04 2027-03-05 | site_prep FS | site_prep FS 0 |
| foundation_prep | site_foundation | Prepare Foundation | concrete | work | 2 | 3 | site_foundation | site_foundation | groundwork | 2027-03-04 | 2027-03-05 | 2027-03-04 | 2027-03-04 | 0 | not_started | foundation_inspection FS 0 2027-03-08 2027-03-08 | excavation FS, proc_foundation_package FS 3 | excavation FS 0, proc_foundation_package FS 3 |
| foundation_inspection | site_foundation | Foundation Inspection | concrete | work | 1 | 0 | site_foundation flagged: review before trusting | site_foundation | groundwork | 2027-03-08 | 2027-03-08 | 2027-03-08 | 2027-03-08 | 0 | not_started | foundation_pour FS 0 2027-03-09 2027-03-09 | foundation_prep FS | foundation_prep FS 0 |
| foundation_pour | site_foundation | Foundation Pour | concrete | work | 1 | 3 | site_foundation flagged: review before trusting | site_foundation | groundwork | 2027-03-09 | 2027-03-09 | 2027-03-09 | 2027-03-09 | 0 | not_started | site_foundation.end FS 0 2027-03-10 2027-03-10 | foundation_inspection FS | foundation_inspection FS 0 |
| site_foundation.end | site_foundation | Site Prep & Foundation — complete | general | milestone | 0 | 0 | site_foundation | site_foundation |  | 2027-03-10 | 2027-03-10 | 2027-03-10 | 2027-03-10 | 0 | not_started | framing_shell.start FS 5 2027-03-17 2027-03-17 | foundation_pour FS | foundation_pour FS 0 |
| framing_shell.start | framing_shell | Framing & Shell — start | general | milestone | 0 | 0 | framing_shell | framing_shell |  | 2027-03-17 | 2027-03-17 | 2027-03-17 | 2027-03-17 | 0 | not_started | framing FS 0 2027-03-17 2027-03-19 | site_foundation.end FS 5 | site_foundation.end FS 5 |
| framing | framing_shell | Framing (floor, walls, roof structure, sheathing) | framing | work | 3 | 3 | framing_shell | framing_shell | structural_framing | 2027-03-17 | 2027-03-19 | 2027-03-17 | 2027-03-17 | 0 | not_started | exterior_windows_doors FS 0 2027-03-22 2027-03-22, fireplace_chase_install FS 0 2027-03-22 2027-03-23 | framing_shell.start FS, proc_framing_package FS 3 | framing_shell.start FS 0, proc_framing_package FS 3 |
| exterior_windows_doors | framing_shell | Exterior windows & doors install | windows_doors | work | 1 | 2 | framing_shell | framing_shell | structural_framing | 2027-03-22 | 2027-03-22 | 2027-03-22 | 2027-03-22 | 0 | not_started | roofing FS 0 2027-03-23 2027-03-23, siding FS 0 2027-03-23 2027-03-23 | framing FS, proc_windows_doors FS 3 | framing FS 0, proc_windows_doors FS 3 |
| fireplace_chase_install | framing_shell | Fireplace chase, firebox set & Class A chimney | carpentry | work | 2 | 2 | framing_shell flagged: review before trusting | framing_shell | fireplace_structure | 2027-03-22 | 2027-03-23 | 2027-03-22 | 2027-03-24 | 2 | not_started | fireplace_chimney_inspection FS 0 2027-03-24 2027-03-24 | framing FS, proc_fireplace_kit FS 3 | framing FS 0, proc_fireplace_kit FS 3 |
| roofing | exterior_finishes | Roofing (underlayment, shingles, flashing, tie-in blend) | roofing | work | 1 | 3 | exterior_finishes | exterior_finishes | cladding_roof | 2027-03-23 | 2027-03-23 | 2027-03-23 | 2027-03-30 | 5 | not_started | bundled_rough_inspections FS 0 2027-03-24 2027-03-24 | exterior_windows_doors FS | exterior_windows_doors FS 0 |
| siding | exterior_finishes | Siding (WRB, siding, tie-in blend) | siding | work | 1 | 2 | exterior_finishes | exterior_finishes | cladding_roof | 2027-03-23 | 2027-03-23 | 2027-03-23 | 2027-03-23 | 0 | not_started | enclosure_finishes FS 0 2027-03-24 2027-03-25 | exterior_windows_doors FS | exterior_windows_doors FS 0 |
| fireplace_finish_work | exterior_finishes | Fireplace veneer, hearth & mantel | masonry | work | 3 | 2 | exterior_finishes flagged: review before trusting | exterior_finishes | fireplace_finish | 2027-03-25 | 2027-03-29 | 2027-03-25 | 2027-03-29 | 2 | not_started | exterior_finishes.end FS 0 2027-03-30 2027-03-30 | fireplace_chimney_inspection FS | fireplace_chimney_inspection FS 0 |
| exterior_finishes.end | exterior_finishes | Exterior Finishes — complete | general | milestone | 0 | 0 | exterior_finishes | exterior_finishes |  | 2027-03-30 | 2027-03-30 | 2027-03-30 | 2027-04-01 | 2 | not_started |  | roofing FS, siding FS, fireplace_finish_work FS | fireplace_finish_work FS 0 |
| bundled_rough_inspections | rough_inspections | Rough inspections (MEPs then framing, bundled) | inspector | inspection | 1 | 1 | rough_inspections | rough_inspections | bundled_inspections | 2027-03-24 | 2027-03-24 | 2027-03-24 | 2027-03-31 | 5 | not_started |  | roofing FS | roofing FS 0 |
| fireplace_chimney_inspection | rough_inspections | Fireplace/chimney inspection | inspector | inspection | 1 | 1 | rough_inspections flagged: review before trusting | rough_inspections | bundled_inspections | 2027-03-24 | 2027-03-24 | 2027-03-24 | 2027-03-26 | 2 | not_started | fireplace_finish_work FS 0 2027-03-25 2027-03-29 | fireplace_chase_install FS | fireplace_chase_install FS 0 |
| enclosure_finishes | interior_finishes | Enclosure finishes (screening, panel infill, interior cladding) | trim_carpentry | work | 2 | 2 | interior_finishes | interior_finishes | interior_installs | 2027-03-24 | 2027-03-25 | 2027-03-24 | 2027-03-24 | 0 | not_started | interior_installs.end FS 0 2027-03-26 2027-03-26 | siding FS | siding FS 0 |
| interior_installs.end | interior_finishes | Interior Installs — complete | general | milestone | 0 | 0 | interior_finishes | interior_finishes |  | 2027-03-26 | 2027-03-26 | 2027-03-26 | 2027-03-26 | 0 | not_started | closeout.start FS 2 2027-03-30 2027-03-30 | enclosure_finishes FS | enclosure_finishes FS 0 |
| closeout.start | closeout | Closeout — start | general | milestone | 0 | 0 | closeout | closeout |  | 2027-03-30 | 2027-03-30 | 2027-03-30 | 2027-03-30 | 0 | not_started | customer_walkthrough FS 0 2027-03-30 2027-03-30 | interior_installs.end FS 2 | interior_installs.end FS 2 |
| customer_walkthrough | closeout | Customer walkthrough & punch list | pm | work | 1 | 1 | closeout | closeout | walkthrough_final_inspection | 2027-03-30 | 2027-03-30 | 2027-03-30 | 2027-03-30 | 0 | not_started | final_inspections FS 0 2027-03-31 2027-03-31 | closeout.start FS | closeout.start FS 0 |
| final_inspections | closeout | Final inspections (building + E/P/M, bundled) | inspector | inspection | 1 | 1 | closeout | closeout | walkthrough_final_inspection | 2027-03-31 | 2027-03-31 | 2027-03-31 | 2027-03-31 | 0 | not_started | job_complete FS 0 2027-04-01 2027-04-01 | customer_walkthrough FS | customer_walkthrough FS 0 |
| job_complete | closeout | Job complete (owner walkthrough with customer) | general | milestone | 0 | 0 | closeout | closeout | walkthrough_final_inspection | 2027-04-01 | 2027-04-01 | 2027-04-01 | 2027-04-01 | 0 | not_started |  | final_inspections FS, interior_installs.end FS, exterior_finishes.end FS, framing FS | final_inspections FS 0 |
