| id | section_id | name | trade | kind | duration_days | crew_size | derived_from | phase_id | component_id | scheduled_start | scheduled_end | earliest_start | latest_start | float_days | status | binding_successors_of_this | depends_on | binding_predecessors |
| --- | --- | --- | --- | --- | --- | --- | --- | --- | --- | --- | --- | --- | --- | --- | --- | --- | --- | --- |
| proc_foundation_package | procurement | Foundation | general | procurement | 1 | 0 | procurement | procurement | procurement_items | 2027-03-02 | 2027-03-02 | 2027-03-02 | 2027-03-02 | 0 | not_started | foundation_prep FS 3 2027-03-08 2027-03-08 |  |  |
| proc_windows_doors | procurement | Windows & exterior doors | general | procurement | 10 | 0 | procurement | procurement | procurement_items | 2027-03-08 | 2027-03-19 | 2027-03-08 | 2027-03-08 | 0 | not_started | exterior_windows_doors FS 3 2027-03-25 2027-03-26 |  |  |
| proc_framing_package | procurement | Framing Package | general | procurement | 7 | 0 | procurement | procurement | procurement_items | 2027-03-04 | 2027-03-12 | 2027-03-04 | 2027-03-04 | 0 | not_started | framing FS 3 2027-03-18 2027-03-24 |  |  |
| proc_subpanel | procurement | Subpanel / service equipment | general | procurement | 4 | 0 | procurement | procurement | procurement_items | 2027-03-18 | 2027-03-23 | 2027-03-18 | 2027-03-18 | 0 | not_started | rough_electrical FS 3 2027-03-29 2027-03-30 |  |  |
| proc_hvac_equipment | procurement | HVAC equipment (mini-split / system) | general | procurement | 5 | 0 | procurement | procurement | procurement_items | 2027-03-17 | 2027-03-23 | 2027-03-17 | 2027-03-17 | 0 | not_started | rough_hvac FS 3 2027-03-29 2027-03-29 |  |  |
| proc_electrical_package | procurement | Electrical Package | general | procurement | 2 | 0 | procurement | procurement | procurement_items | 2027-03-22 | 2027-03-23 | 2027-03-22 | 2027-03-22 | 0 | not_started | rough_electrical FS 3 2027-03-29 2027-03-30 |  |  |
| proc_insulation | procurement | Insulation | general | procurement | 1 | 0 | procurement | procurement | procurement_items | 2027-04-02 | 2027-04-02 | 2027-04-02 | 2027-04-02 | 0 | not_started | insulation FS 3 2027-04-08 2027-04-09 |  |  |
| proc_drywall | procurement | Drywall | general | procurement | 4 | 0 | procurement | procurement | procurement_items | 2027-04-02 | 2027-04-07 | 2027-04-02 | 2027-04-02 | 0 | not_started | drywall FS 3 2027-04-13 2027-04-14 |  |  |
| proc_light_fixtures | procurement | Light fixtures & devices | general | procurement | 5 | 0 | procurement | procurement | procurement_items | 2027-04-05 | 2027-04-09 | 2027-04-05 | 2027-04-05 | 0 | not_started | mep_fixture_install FS 3 2027-04-15 2027-04-16 |  |  |
| permit_building | permits | Building permit | general | permit | 10 | 0 | permits | permits | permit_items | 2027-02-15 | 2027-02-26 | 2027-02-15 | 2027-02-15 | 0 | not_started | site_and_structure_demo FS 0 2027-03-01 2027-03-03 |  |  |
| site_and_structure_demo | demolition | Demolition (site + structure at addition footprint) | demo | work | 3 | 3 | demolition | demolition | main_demolition | 2027-03-01 | 2027-03-03 | 2027-03-01 | 2027-03-01 | 0 | not_started | site_prep FS 0 2027-03-04 2027-03-04 | permit_building FS | permit_building FS 0 |
| site_prep | site_foundation | Site prep (protection, staging, access) | general | work | 1 | 2 | site_foundation | site_foundation | groundwork | 2027-03-04 | 2027-03-04 | 2027-03-04 | 2027-03-04 | 0 | not_started | excavation FS 0 2027-03-05 2027-03-05 | site_and_structure_demo FS | site_and_structure_demo FS 0 |
| excavation | site_foundation | Excavation (footings, slab, access) | excavation | work | 1 | 2 | site_foundation | site_foundation | groundwork | 2027-03-05 | 2027-03-05 | 2027-03-05 | 2027-03-05 | 0 | not_started | foundation_prep FS 0 2027-03-08 2027-03-08 | site_prep FS | site_prep FS 0 |
| foundation_prep | site_foundation | Prepare Foundation | concrete | work | 1 | 2 | site_foundation | site_foundation | groundwork | 2027-03-08 | 2027-03-08 | 2027-03-08 | 2027-03-08 | 0 | not_started | foundation_inspection FS 0 2027-03-09 2027-03-09 | excavation FS, proc_foundation_package FS 3 | excavation FS 0, proc_foundation_package FS 3 |
| foundation_inspection | site_foundation | Foundation Inspection | concrete | work | 1 | 0 | site_foundation flagged: review before trusting | site_foundation | groundwork | 2027-03-09 | 2027-03-09 | 2027-03-09 | 2027-03-09 | 0 | not_started | foundation_pour FS 0 2027-03-10 2027-03-10 | foundation_prep FS | foundation_prep FS 0 |
| foundation_pour | site_foundation | Foundation Pour | concrete | work | 1 | 3 | site_foundation flagged: review before trusting | site_foundation | groundwork | 2027-03-10 | 2027-03-10 | 2027-03-10 | 2027-03-10 | 0 | not_started | site_foundation.end FS 0 2027-03-11 2027-03-11 | foundation_inspection FS | foundation_inspection FS 0 |
| site_foundation.end | site_foundation | Site Prep & Foundation — complete | general | milestone | 0 | 0 | site_foundation | site_foundation |  | 2027-03-11 | 2027-03-11 | 2027-03-11 | 2027-03-11 | 0 | not_started | framing_shell.start FS 5 2027-03-18 2027-03-18 | foundation_pour FS | foundation_pour FS 0 |
| framing_shell.start | framing_shell | Framing & Shell — start | general | milestone | 0 | 0 | framing_shell | framing_shell |  | 2027-03-18 | 2027-03-18 | 2027-03-18 | 2027-03-18 | 0 | not_started | framing FS 0 2027-03-18 2027-03-24 | site_foundation.end FS 5 | site_foundation.end FS 5 |
| framing | framing_shell | Framing (floor, walls, roof structure, sheathing) | framing | work | 5 | 3 | framing_shell | framing_shell | structural_framing | 2027-03-18 | 2027-03-24 | 2027-03-18 | 2027-03-18 | 0 | not_started | exterior_windows_doors FS 0 2027-03-25 2027-03-26, roof_reintegration FS 0 2027-03-25 2027-03-26 | framing_shell.start FS, proc_framing_package FS 3 | framing_shell.start FS 0, proc_framing_package FS 3 |
| roof_reintegration | framing_shell | Roof reintegration (reseat preserved roof, bearing transfer, strike shoring) | framing | work | 2 | 3 | framing_shell | framing_shell | structural_framing | 2027-03-25 | 2027-03-26 | 2027-03-25 | 2027-04-21 | 19 | not_started |  | framing FS | framing FS 0 |
| exterior_windows_doors | framing_shell | Exterior windows & doors install | windows_doors | work | 2 | 2 | framing_shell | framing_shell | structural_framing | 2027-03-25 | 2027-03-26 | 2027-03-25 | 2027-03-25 | 0 | not_started | fascia_soffit_gutters FS 0 2027-03-29 2027-03-30, roofing FS 0 2027-03-29 2027-03-29, siding FS 0 2027-03-29 2027-04-01 | framing FS, proc_windows_doors FS 3 | framing FS 0, proc_windows_doors FS 3 |
| roofing | exterior_finishes | Roofing (underlayment, shingles, flashing, tie-in blend) | roofing | work | 1 | 3 | exterior_finishes | exterior_finishes | cladding_roof | 2027-03-29 | 2027-03-29 | 2027-03-29 | 2027-03-29 | 0 | not_started | rough_hvac FS -1 2027-03-29 2027-03-29 | exterior_windows_doors FS | exterior_windows_doors FS 0 |
| siding | exterior_finishes | Siding (WRB, siding, tie-in blend) | siding | work | 4 | 2 | exterior_finishes | exterior_finishes | cladding_roof | 2027-03-29 | 2027-04-01 | 2027-03-29 | 2027-04-19 | 15 | not_started | exterior_finishes.end FS 0 2027-04-02 2027-04-02 | exterior_windows_doors FS | exterior_windows_doors FS 0 |
| fascia_soffit_gutters | exterior_finishes | Fascia, soffit & gutters | siding | work | 2 | 2 | exterior_finishes | exterior_finishes | cladding_roof | 2027-03-29 | 2027-03-30 | 2027-03-29 | 2027-04-21 | 17 | not_started |  | exterior_windows_doors FS | exterior_windows_doors FS 0 |
| exterior_finishes.end | exterior_finishes | Exterior Finishes — complete | general | milestone | 0 | 0 | exterior_finishes | exterior_finishes |  | 2027-04-02 | 2027-04-02 | 2027-04-02 | 2027-04-23 | 15 | not_started |  | roofing FS, siding FS, fascia_soffit_gutters FS | siding FS 0 |
| rough_hvac | rough_trades | Rough HVAC (line set / duct extension) | hvac | work | 1 | 2 | rough_trades | rough_trades | rough_meps | 2027-03-29 | 2027-03-29 | 2027-03-29 | 2027-03-29 | 0 | not_started | rough_electrical FS -1 2027-03-29 2027-03-30 | roofing FS -1, proc_hvac_equipment FS 3 | roofing FS -1, proc_hvac_equipment FS 3 |
| rough_electrical | rough_trades | Rough electrical (circuits, subpanel, boxes) | electrical | work | 2 | 2 | rough_trades | rough_trades | rough_meps | 2027-03-29 | 2027-03-30 | 2027-03-29 | 2027-03-29 | 0 | not_started | rough_trades.end FS 0 2027-03-31 2027-03-31 | rough_hvac FS -1, proc_subpanel FS 3, proc_electrical_package FS 3 | rough_hvac FS -1, proc_subpanel FS 3, proc_electrical_package FS 3 |
| rough_trades.end | rough_trades | Rough Trades (MEPs) — complete | general | milestone | 0 | 0 | rough_trades | rough_trades |  | 2027-03-31 | 2027-03-31 | 2027-03-31 | 2027-03-31 | 0 | not_started | bundled_rough_inspections FS 0 2027-03-31 2027-03-31 | rough_hvac FS, rough_electrical FS | rough_electrical FS 0 |
| bundled_rough_inspections | rough_inspections | Rough inspections (MEPs then framing, bundled) | inspector | inspection | 1 | 1 | rough_inspections | rough_inspections | bundled_inspections | 2027-03-31 | 2027-03-31 | 2027-03-31 | 2027-03-31 | 0 | not_started | rough_inspections.end FS 0 2027-04-01 2027-04-01 | rough_trades.end FS | rough_trades.end FS 0 |
| rough_inspections.end | rough_inspections | Rough Inspections — complete | general | milestone | 0 | 0 | rough_inspections | rough_inspections |  | 2027-04-01 | 2027-04-01 | 2027-04-01 | 2027-04-01 | 0 | not_started | insulation_drywall.start FS 5 2027-04-08 2027-04-08 | bundled_rough_inspections FS | bundled_rough_inspections FS 0 |
| insulation_drywall.start | insulation_drywall | Insulation & Drywall — start | general | milestone | 0 | 0 | insulation_drywall | insulation_drywall |  | 2027-04-08 | 2027-04-08 | 2027-04-08 | 2027-04-08 | 0 | not_started | insulation FS 0 2027-04-08 2027-04-09 | rough_inspections.end FS 5 | rough_inspections.end FS 5 |
| insulation | insulation_drywall | Insulation & air sealing | insulation | work | 2 | 2 | insulation_drywall | insulation_drywall | insulation_drywall_prime | 2027-04-08 | 2027-04-09 | 2027-04-08 | 2027-04-08 | 0 | not_started | insulation_inspection FS 0 2027-04-12 2027-04-12 | insulation_drywall.start FS, proc_insulation FS 3 | insulation_drywall.start FS 0, proc_insulation FS 3 |
| insulation_inspection | insulation_drywall | Insulation inspection | inspector | inspection | 1 | 1 | insulation_drywall | insulation_drywall | insulation_drywall_prime | 2027-04-12 | 2027-04-12 | 2027-04-12 | 2027-04-12 | 0 | not_started | drywall FS 0 2027-04-13 2027-04-14 | insulation FS | insulation FS 0 |
| drywall | insulation_drywall | Drywall (hang, tape, sand) | drywall | work | 2 | 3 | insulation_drywall | insulation_drywall | insulation_drywall_prime | 2027-04-13 | 2027-04-14 | 2027-04-13 | 2027-04-13 | 0 | not_started | insulation_drywall.end FS 0 2027-04-15 2027-04-15 | insulation_inspection FS, proc_drywall FS 3 | insulation_inspection FS 0, proc_drywall FS 3 |
| insulation_drywall.end | insulation_drywall | Insulation & Drywall — complete | general | milestone | 0 | 0 | insulation_drywall | insulation_drywall |  | 2027-04-15 | 2027-04-15 | 2027-04-15 | 2027-04-15 | 0 | not_started | mep_fixture_install FS 0 2027-04-15 2027-04-16 | drywall FS | drywall FS 0 |
| mep_fixture_install | interior_finishes | Final Trades (fixture install for HVAC, Plumbing, and Electrical) | mep_finish | work | 2 | 2 | interior_finishes | interior_finishes | final_trades_paint_2 | 2027-04-15 | 2027-04-16 | 2027-04-15 | 2027-04-15 | 0 | not_started | closeout.start FS 2 2027-04-21 2027-04-21 | insulation_drywall.end FS, proc_light_fixtures FS 3 | insulation_drywall.end FS 0, proc_light_fixtures FS 3 |
| closeout.start | closeout | Closeout — start | general | milestone | 0 | 0 | closeout | closeout |  | 2027-04-21 | 2027-04-21 | 2027-04-21 | 2027-04-21 | 0 | not_started | customer_walkthrough FS 0 2027-04-21 2027-04-21 | mep_fixture_install FS 2 | mep_fixture_install FS 2 |
| customer_walkthrough | closeout | Customer walkthrough & punch list | pm | work | 1 | 1 | closeout | closeout | walkthrough_final_inspection | 2027-04-21 | 2027-04-21 | 2027-04-21 | 2027-04-21 | 0 | not_started | final_inspections FS 0 2027-04-22 2027-04-22 | closeout.start FS | closeout.start FS 0 |
| final_inspections | closeout | Final inspections (building + E/P/M, bundled) | inspector | inspection | 1 | 1 | closeout | closeout | walkthrough_final_inspection | 2027-04-22 | 2027-04-22 | 2027-04-22 | 2027-04-22 | 0 | not_started | job_complete FS 0 2027-04-23 2027-04-23 | customer_walkthrough FS | customer_walkthrough FS 0 |
| job_complete | closeout | Job complete (owner walkthrough with customer) | general | milestone | 0 | 0 | closeout | closeout | walkthrough_final_inspection | 2027-04-23 | 2027-04-23 | 2027-04-23 | 2027-04-23 | 0 | not_started |  | final_inspections FS, mep_fixture_install FS, exterior_finishes.end FS, framing FS | final_inspections FS 0 |
