| id | section_id | name | trade | kind | duration_days | crew_size | phase_id | component_id | pre_construction_offset_working_days | lead_up_working_days | derived_from | scheduled_start | scheduled_end | earliest_start | latest_start | float_days | status | lead_time_days | depends_on |
| --- | --- | --- | --- | --- | --- | --- | --- | --- | --- | --- | --- | --- | --- | --- | --- | --- | --- | --- | --- |
| general.permitting | general_conditions | Pull building permit (same-day walk-in) | general | work | 1 | 1 | pre_construction | permits_and_planning | 15 | 2 | general_conditions dev_rules#4A, editor_rules#permits Per Will's audit (~line 134) walks in / walks out same-day ~90% of time. 1d work task scheduled 15 working days (3 weeks) before on-site per Rule 4A. | 2026-06-04 | 2026-06-04 | 2026-06-04 | 2026-10-08 | 89 | not_started |  |  |
| general.pre_construction_walkthrough | general_conditions | Pre-construction walkthrough with homeowner | general | work | 0.5 | 1 | pre_construction | permits_and_planning | 15 | 0 | general_conditions editor_rules#general_conditions Verify tie-in points, existing dimensions, customer alignment 3 weeks before on-site. | 2026-06-04 | 2026-06-04 | 2026-06-04 | 2026-10-08 | 89.5 | not_started |  |  |
| permit.tdec_septic | general_conditions | TDEC septic evaluation (6 weeks) | general | lead_time | 0 | 0 | pre_construction | tdec_septic | 30 | 2 | general_conditions tdec_septic_permit_offset, addition_rules#tdec Per Round 1 PM interview: TCR handles TDEC septic eval as pre-con anchor. Per addition rule tdec_septic_permit_offset: MANDATORY pre_construction_offset_working_days: 30 so the 6-week lead anchors at start of PC zone. | 2026-05-13 | 2026-06-24 | 2026-05-13 | 2026-05-27 | 9 | not_started | 42 |  |
| prep.amperage_check | electrical | Existing service amperage check | electrical | work | 0.5 | 1 | pre_construction | amperage_check | 15 | 1 | electrical addition_rules#amperage_check Per Round 1 PM interview: scope assumes existing main can support new 100A subpanel but not verified. 0.5d electrical check 3 weeks before on-site so a service upgrade CO can be triggered before signing. | 2026-06-04 | 2026-06-04 | 2026-06-04 | 2026-08-06 | 45 | not_started |  |  |
| checkpoint.selections_finalized | general_conditions | Customer selections finalized | general | milestone | 0 | 0 | pre_construction | checkpoints | 15 | 5 | general_conditions dev_rules#4P, editor_rules#selections Mandatory per Rule 4P. 15 wd (3 weeks) before on-site. 5-wd lead-up window for PM follow-up on vanity, faucets, mirrors/lights, mini-split aesthetic, interior doors, exterior door (still TBD per Round 2). | 2026-06-04 | 2026-06-04 | 2026-06-04 | 2026-07-31 | 41 | not_started |  |  |
| checkpoint.equipment_confirmed_demo | demolition_site_work | Equipment reserved for demo phase | general | milestone | 0 | 0 | pre_construction | checkpoints | 10 | 2 | demolition_site_work dev_rules#4O, editor_rules#equipment 2 weeks before demo PM confirms dumpster, concrete saw, mini-ex, scaffolding reserved. Gates equipment.dumpster_arrive + equipment.demo_machines_arrive (Rule 4U downstream consumer requirement). | 2026-06-11 | 2026-06-11 | 2026-06-11 | 2026-06-30 | 13.5 | not_started |  |  |
| order.windows | windows_doors_weatherproofing | Place windows + exterior door order | general | work | 0.5 | 1 | procurement_long_leads | procurement_windows |  | 2 | windows_doors_weatherproofing dev_rules#4R, editor_rules#procurement Stock windows + 1 exterior door per Round 1. 3-task pattern step 1: PM places the order. | 2026-06-25 | 2026-06-25 | 2026-06-25 | 2026-07-10 | 11.5 | not_started |  |  |
| wait.windows | windows_doors_weatherproofing | Windows delivery window (21 cal-d) | general | lead_time | 0 | 0 | procurement_long_leads | procurement_windows |  | 0 | windows_doors_weatherproofing editor_rules#procurement_table Stock window supplier delivery window 21 calendar days per editor rules table. | 2026-06-25 | 2026-07-16 | 2026-06-25 | 2026-07-13 | 11.5 | not_started | 21 | order.windows FS |
| checkpoint.windows_arrived | windows_doors_weatherproofing | Windows delivered to site | general | milestone | 0 | 0 | procurement_long_leads | procurement_windows |  | 0 | windows_doors_weatherproofing dev_rules#4R PM confirms windows on site. Gates windows.install (Rule 4U downstream consumer). | 2026-07-16 | 2026-07-16 | 2026-07-16 | 2026-08-03 | 11.5 | not_started |  | wait.windows FS |
| order.lvl | structural_modifications | Place LVL beam order | general | work | 0.5 | 1 | procurement_long_leads | procurement_lvl |  | 2 | structural_modifications dev_rules#4R, addition_rules#lvl Standard 3-ply 14" LVL per Round 1. 3-task pattern step 1. | 2026-06-25 | 2026-06-25 | 2026-06-25 | 2026-07-27 | 22.5 | not_started |  |  |
| wait.lvl | structural_modifications | LVL delivery window (14 cal-d) | general | lead_time | 0 | 0 | procurement_long_leads | procurement_lvl |  | 0 | structural_modifications addition_rules#lvl Standard LVL 14 cal-d safety lead per addition rules (1 wk real + 1 wk buffer in case the lumber market tightens). | 2026-06-25 | 2026-07-09 | 2026-06-25 | 2026-07-28 | 22.5 | not_started | 14 | order.lvl FS |
| checkpoint.lvl_arrived | structural_modifications | LVL delivered to site | general | milestone | 0 | 0 | procurement_long_leads | procurement_lvl |  | 0 | structural_modifications dev_rules#4R Gates structural.install_lvl. | 2026-07-09 | 2026-07-09 | 2026-07-09 | 2026-08-11 | 22.5 | not_started |  | wait.lvl FS |
| order.subpanel | electrical | Place 100A subpanel order | general | work | 0.5 | 1 | procurement_long_leads | procurement_subpanel |  | 2 | electrical dev_rules#4R 3-task pattern step 1 for 100A subpanel. | 2026-06-25 | 2026-06-25 | 2026-06-25 | 2026-07-23 | 20 | not_started |  |  |
| wait.subpanel | electrical | Subpanel delivery window (14 cal-d) | general | lead_time | 0 | 0 | procurement_long_leads | procurement_subpanel |  | 0 | electrical editor_rules#procurement_table Electrical panel 7-14 day supplier lead — use 14 for safety. | 2026-06-25 | 2026-07-09 | 2026-06-25 | 2026-07-23 | 20 | not_started | 14 | order.subpanel FS |
| checkpoint.subpanel_arrived | electrical | Subpanel delivered to site | general | milestone | 0 | 0 | procurement_long_leads | procurement_subpanel |  | 0 | electrical dev_rules#4R Gates electrical.subpanel_install. | 2026-07-09 | 2026-07-09 | 2026-07-09 | 2026-08-06 | 20 | not_started |  | wait.subpanel FS |
| order.minisplit | hvac | Place mini-split order | general | work | 0.5 | 1 | procurement_long_leads | procurement_minisplit |  | 2 | hvac editor_rules#material_ordering, dev_rules#4R Mechanical equipment ordered at/near dried-in per editor rules. Aesthetic selection still TBD per Round 2 — gates on selections_finalized. | 2026-08-05 | 2026-08-05 | 2026-08-05 | 2026-09-15 | 28 | not_started |  | checkpoint.selections_finalized FS, milestone.dried_in FS |
| wait.minisplit | hvac | Mini-split delivery window (14 cal-d) | general | lead_time | 0 | 0 | procurement_long_leads | procurement_minisplit |  | 0 | hvac editor_rules#procurement_table Mini-split 7-14 day supplier lead — use 14 for safety. | 2026-08-05 | 2026-08-19 | 2026-08-05 | 2026-09-15 | 28 | not_started | 14 | order.minisplit FS |
| checkpoint.minisplit_arrived | hvac | Mini-split delivered to site | general | milestone | 0 | 0 | procurement_long_leads | procurement_minisplit |  | 0 | hvac dev_rules#4R Gates hvac.minisplit_install. | 2026-08-19 | 2026-08-19 | 2026-08-19 | 2026-09-29 | 28 | not_started |  | wait.minisplit FS |
| order.tile | master_bathroom | Place master bath tile order (special order) | general | work | 0.5 | 1 | procurement_long_leads | procurement_tile |  | 2 | master_bathroom dev_rules#4R, addition_rules#material_ordering Per Round 4: special-order wall + mosaic tile combo. 14-day supplier lead, full 3-task chain anchored to checkpoint.selections_finalized. | 2026-06-25 | 2026-06-25 | 2026-06-25 | 2026-08-21 | 41.5 | not_started |  | checkpoint.selections_finalized FS |
| wait.tile | master_bathroom | Tile delivery window (14 cal-d) | general | lead_time | 0 | 0 | procurement_long_leads | procurement_tile |  | 0 | master_bathroom editor_rules#procurement_table Special-order tile 14 cal-d supplier delivery. | 2026-06-25 | 2026-07-09 | 2026-06-25 | 2026-08-24 | 41.5 | not_started | 14 | order.tile FS |
| checkpoint.tile_arrived | master_bathroom | Master bath tile delivered to site | general | milestone | 0 | 0 | procurement_long_leads | procurement_tile |  | 0 | master_bathroom dev_rules#4R Gates tile.shower_substrate. | 2026-07-09 | 2026-07-09 | 2026-07-09 | 2026-09-08 | 41.5 | not_started |  | wait.tile FS |
| order.paint | interior_finish | Order/pick up paint | general | work | 1 | 1 | procurement_long_leads | procurement_finishes |  | 0 | interior_finish editor_rules#procurement_table Paint base palette picked per Round 2. Collapsed 1-day order task (≤7-day supplier wait); PM picks up locally ~1 week before paint phase 1. | 2026-06-25 | 2026-06-25 | 2026-06-25 | 2026-09-03 | 50 | not_started |  | checkpoint.selections_finalized FS |
| order.lvt | interior_finish | Order LVT flooring | general | work | 1 | 1 | procurement_long_leads | procurement_finishes |  | 0 | interior_finish editor_rules#procurement_table LVT selected per Round 2. Stock 7-day supplier — collapsed 1-day order task per Rule 4R exception for ≤7 supplier days. | 2026-06-25 | 2026-06-25 | 2026-06-25 | 2026-09-21 | 61.5 | not_started |  | checkpoint.selections_finalized FS |
| order.vanity | master_bathroom | Order 72" vanity | general | work | 1 | 1 | procurement_long_leads | procurement_finishes |  | 2 | master_bathroom editor_rules#procurement_table 72" double vanity per scope. Stock 7-day supplier — collapsed 1-day order task. Model TBD at PM Interview (Round 2) so dep on selections_finalized. | 2026-06-25 | 2026-06-25 | 2026-06-25 | 2026-09-25 | 65 | not_started |  | checkpoint.selections_finalized FS |
| order.vanity_fixtures | master_bathroom | Order faucets, mirrors, vanity lights | general | work | 1 | 1 | procurement_long_leads | procurement_finishes |  | 2 | master_bathroom editor_rules#procurement_table Bundled: 2× faucets, 2× mirrors, 2× vanity lights + toilet + commode. Stock 7-day supplier. | 2026-06-25 | 2026-06-25 | 2026-06-25 | 2026-09-25 | 65.5 | not_started |  | checkpoint.selections_finalized FS |
| order.interior_doors | interior_finish | Order interior + pocket doors | general | work | 1 | 1 | procurement_long_leads | procurement_finishes |  | 2 | interior_finish editor_rules#procurement_table (1) pre-hung + (2) pocket door systems per scope. Styles TBD at selections. | 2026-06-25 | 2026-06-25 | 2026-06-25 | 2026-09-24 | 64.5 | not_started |  | checkpoint.selections_finalized FS |
| order.exterior_door | windows_doors_weatherproofing | Order exterior door | general | work | 1 | 1 | procurement_long_leads | procurement_finishes |  | 2 | windows_doors_weatherproofing editor_rules#procurement_table (1) exterior door per scope, $500 allowance. Stock 7-day. Installed alongside windows. | 2026-06-25 | 2026-06-25 | 2026-06-25 | 2026-07-31 | 26 | not_started |  | checkpoint.selections_finalized FS |
| general.site_setup | general_conditions | Site setup — signage, porta-john, staging | general | work | 1 | 2 | site_prep | site_setup |  | 2 | general_conditions editor_rules#general_conditions On-site Day 1 anchor task. No PC predecessor — natural day-0 placement. | 2026-06-25 | 2026-06-25 | 2026-06-25 | 2026-06-25 | 0 | not_started |  |  |
| equipment.dumpster_arrive | demolition_site_work | Dumpster delivered to site | general | work | 0.5 | 1 | site_prep | site_setup |  | 0 | demolition_site_work editor_rules#equipment Lands shortly after site setup, before main demo per day-before rule. | 2026-06-26 | 2026-06-26 | 2026-06-26 | 2026-06-30 | 2.5 | not_started |  | general.site_setup FS, checkpoint.equipment_confirmed_demo FS |
| equipment.demo_machines_arrive | demolition_site_work | Concrete saw, mini-ex, skid steer, scaffolding arrive | general | work | 0.5 | 1 | site_prep | site_setup |  | 0 | demolition_site_work editor_rules#equipment Concrete saw, mini-ex for footings, skid steer, scaffolding for roof tie-in. | 2026-06-26 | 2026-06-26 | 2026-06-26 | 2026-06-30 | 2.5 | not_started |  | general.site_setup FS, checkpoint.equipment_confirmed_demo FS |
| prep.heat_pump_relocate | demolition_site_work | Relocate existing heat pump | hvac | work | 1 | 2 | site_prep | prep_work_before_demo |  | 0 | demolition_site_work dev_rules#4K, addition_rules#heat_pump_relocate Heat pump in addition footprint per scope. Relocated BEFORE main demo (Rule 4K). Site_prep / prep_work_before_demo, NOT inside demo phase. | 2026-06-26 | 2026-06-26 | 2026-06-26 | 2026-06-26 | 0 | not_started |  | general.site_setup FS |
| prep.electrical_disconnect_relocate | demolition_site_work | Relocate electrical disconnect | electrical | work | 0.5 | 1 | site_prep | prep_work_before_demo |  | 0 | demolition_site_work addition_rules#heat_pump_relocate Relocate before main demo, same pattern as heat pump. | 2026-06-26 | 2026-06-26 | 2026-06-26 | 2026-06-26 | 0.5 | not_started |  | general.site_setup FS |
| early.acrylic_shower_swap | existing_hall_bath_bedroom_closeout | Hall bath acrylic shower swap (customer early item) | plumbing | work | 1 | 2 | site_prep | customer_early_items |  | 0 | existing_hall_bath_bedroom_closeout dev_rules#4V, addition_rules#customer_early_items Per Round 1: customer wants working shower BEFORE we break ground. Two-bucket pattern per Rule 4V — this is the early item (Day 1, site_prep, customer_early_items); the hall-bath window infill + drywall patch + repaint are SEPARATE in interior_finishes / hall_bath_mod. | 2026-06-26 | 2026-06-26 | 2026-06-26 | 2026-10-08 | 73 | not_started |  | general.site_setup FS |
| demo.protection | demolition_site_work | Floor protection & dust walls | demo | work | 1 | 3 | demo_and_protection | demolition |  | 2 | demolition_site_work addition_rules#heat_pump_relocate Demo starts only AFTER heat pump + disconnect relocated, with 2 wd buffer (~3 calendar days per Will's audit transcript line 278). | 2026-07-01 | 2026-07-01 | 2026-07-01 | 2026-07-01 | 0 | not_started |  | equipment.dumpster_arrive FS, equipment.demo_machines_arrive FS, prep.heat_pump_relocate FS 2, prep.electrical_disconnect_relocate FS 2 |
| demo.selective_demo | demolition_site_work | Saw-cut walkway, selective demo, hall bath window remove | demo | work | 3 | 3 | demo_and_protection | demolition |  | 0 | demolition_site_work editor_rules#demolition_site_work 56 labor-hours / 3 crew ≈ 2.3d; bumped to 3d to cover walkway saw-cut, addition demo + hall bath window removal (consolidated rather than separate retrofit task). | 2026-07-02 | 2026-07-06 | 2026-07-02 | 2026-07-02 | 0 | not_started |  | demo.protection FS |
| demo.expose_bearing_wall | structural_modifications | Expose existing load-bearing wall for LVL | demo | work | 1 | 2 | demo_and_protection | retrofit_zones |  | 0 | structural_modifications addition_rules#lvl_temp_shoring Independent retrofit sub-chain — opens the existing 2nd-story load-bearing wall for LVL install. Per Will's audit (line 376): temp shoring is independent of new addition framing. | 2026-07-02 | 2026-07-02 | 2026-07-02 | 2026-08-07 | 26.5 | not_started |  | demo.protection FS |
| demo.haul_out | demolition_site_work | Debris removal & dump runs | demo | work | 1 | 2 | demo_and_protection | demolition |  | 0 | demolition_site_work editor_rules#demolition_site_work Haul out runs after selective demo. | 2026-07-07 | 2026-07-07 | 2026-07-07 | 2026-07-07 | 0 | not_started |  | demo.selective_demo FS |
| excavation.dig | excavation_foundation | Excavate footing & slab area | excavation | work | 2 | 2 | structural_and_shell | foundation |  | 2 | excavation_foundation editor_rules#excavation_foundation, addition_rules#tdec 78 labor-hours total foundation, ~30 cy/day mini-ex. Gated on TDEC permit so no excavation until septic verified. | 2026-07-08 | 2026-07-09 | 2026-07-08 | 2026-07-08 | 0 | not_started |  | demo.haul_out FS, permit.tdec_septic FS |
| foundation.form_and_prep | excavation_foundation | Form footings + gravel base + vapor barrier + rebar | concrete | work | 1.5 | 4 | structural_and_shell | foundation |  | 0 | excavation_foundation dev_rules#4B One continuous form-and-prep task per Rule 4B (monolithic default — scope has no stem-wall language). | 2026-07-10 | 2026-07-13 | 2026-07-10 | 2026-07-10 | 0 | not_started |  | excavation.dig FS |
| inspect.footing | excavation_foundation | Footing & slab-prep inspection | inspector | inspection | 0.5 | 1 | structural_and_shell | foundation |  | 1 | excavation_foundation dev_rules#4B Single inspection covers BOTH footing and slab prep (monolithic — Rule 4B). 1d scheduling lead. | 2026-07-14 | 2026-07-14 | 2026-07-14 | 2026-07-14 | 0 | not_started |  | foundation.form_and_prep FS 1 |
| foundation.monolithic_pour | excavation_foundation | Pour footings + 4" slab (monolithic, 1 day) | concrete | work | 1 | 4 | structural_and_shell | foundation |  | 0 | excavation_foundation dev_rules#4B Per Will's audit (line 321-326): one-day monolithic pour, footings + slab. 95% of TCR jobs. | 2026-07-15 | 2026-07-15 | 2026-07-15 | 2026-07-15 | 0 | not_started |  | inspect.footing FS |
| foundation.cure | excavation_foundation | Concrete cure (2 cal-d) | general | lead_time | 0 | 0 | structural_and_shell | foundation |  | 0 | excavation_foundation dev_rules#4B 2 cal-d minimum cure before framing per Will's audit (line 338). | 2026-07-16 | 2026-07-17 | 2026-07-16 | 2026-07-16 | 0 | not_started | 2 | foundation.monolithic_pour FS |
| framing.basement_walls | framing | Frame basement walls (2x4 @ 16" OC) | framing | work | 2 | 3 | structural_and_shell | framing |  | 2 | framing editor_rules#framing Framing 146h / 3 crew ≈ 6d total split across 6 tasks. Basement walls first per Will's audit (line 348). | 2026-07-20 | 2026-07-21 | 2026-07-20 | 2026-07-20 | 0 | not_started |  | foundation.cure FS |
| framing.floor_system | framing | Frame floor system + subfloor (glued & fastened) | framing | work | 2 | 3 | structural_and_shell | framing |  | 0 | framing addition_rules#lvl_temp_shoring Floor system depends ONLY on basement walls — NOT on LVL temp shoring (per Will's audit lines 350-352 + Round 1 q.retrofit_primary_bedroom). LVL is retrofit, independent. | 2026-07-22 | 2026-07-23 | 2026-07-22 | 2026-07-22 | 0 | not_started |  | framing.basement_walls FS |
| framing.exterior_walls | framing | Frame upper exterior + interior walls (2x4 @ 16" OC) | framing | work | 3 | 3 | structural_and_shell | framing |  | 0 | framing editor_rules#framing ~250 sqft/day per crew of 3. | 2026-07-24 | 2026-07-28 | 2026-07-24 | 2026-07-24 | 0 | not_started |  | framing.floor_system FS |
| framing.interior_walls | framing | Frame interior partition walls (primary bedroom, master bath, WIC) | framing | work | 2 | 3 | structural_and_shell | framing |  | 0 | framing dev_rules#8 SS lag 1 — interior partitions can start one day after exterior walls begin so framing crew flows continuously. | 2026-07-27 | 2026-07-28 | 2026-07-27 | 2026-10-07 | 51 | not_started |  | framing.exterior_walls SS 1 |
| framing.elevator_shaft | framing | Frame elevator shaft (~4'×4', retrofit on existing floor) | framing | work | 1 | 2 | structural_and_shell | lvl_subchain |  | 0 | framing dev_rules#9, addition_rules#retrofit_detection Per Will's audit (line ~390): elevator shaft is NOT in addition footprint — it's a retrofit item, independent of new framing. Scope: framing only, no elevator system. | 2026-07-08 | 2026-07-08 | 2026-07-08 | 2026-10-08 | 65 | not_started |  | demo.haul_out FS |
| framing.roof | roof_framing_roofing | Stick-frame 3/12 gable, tie into existing 6/12 | framing | work | 3 | 3 | structural_and_shell | framing |  | 0 | roof_framing_roofing dev_rules#4Q, addition_rules#roof_trusses, stick_frame_default_for_small_additions Stick-frame default — 300 sqft footprint / 10' max wall / 3/12 pitch, all under sub-800sqft / sub-24' triggers. Confirmed by PM Round 2. NO procurement.trusses task. Lumber arrives day-of with framing crew. | 2026-07-29 | 2026-07-31 | 2026-07-29 | 2026-07-29 | 0 | not_started |  | framing.exterior_walls FS |
| framing.sheathing | roof_framing_roofing | Roof + wall sheathing | framing | work | 1 | 3 | structural_and_shell | framing |  | 0 | roof_framing_roofing editor_rules#framing Sheathing follows roof framing. | 2026-08-03 | 2026-08-03 | 2026-08-03 | 2026-08-03 | 0 | not_started |  | framing.roof FS |
| roof.concealed_buffer | roof_framing_roofing | Concealed roof tie-in discovery buffer | general | lead_time | 0 | 0 | structural_and_shell | roof_tie_in |  | 0 | roof_framing_roofing addition_rules#concealed_roof_tie_in Per Round 1: PM accepted the 2-3 day discovery buffer for the concealed 6/12 tie-in. Runs concurrent with framing.roof — PM opens existing ceiling early on day 1 of framing.roof. | 2026-07-30 | 2026-08-03 | 2026-07-30 | 2026-10-06 | 47 | not_started | 3 | framing.roof SS 1 |
| structural.temp_shoring | structural_modifications | Install temporary shoring (LVL retrofit) | framing | work | 0.5 | 2 | structural_and_shell | lvl_subchain |  | 0 | structural_modifications addition_rules#lvl_temp_shoring Independent retrofit. Runs in parallel with new addition framing. | 2026-07-03 | 2026-07-03 | 2026-07-03 | 2026-08-10 | 26.5 | not_started |  | demo.expose_bearing_wall FS |
| structural.install_lvl | structural_modifications | Install 3-ply 14" LVL beam (~15'-6" span) | framing | work | 1 | 3 | structural_and_shell | lvl_subchain |  | 0 | structural_modifications addition_rules#lvl_temp_shoring Gated on LVL arrival + temp shoring complete. | 2026-07-09 | 2026-07-10 | 2026-07-09 | 2026-08-11 | 22.5 | not_started |  | structural.temp_shoring FS, checkpoint.lvl_arrived FS |
| structural.remove_temp_shoring | structural_modifications | Remove temporary shoring | framing | work | 0.5 | 2 | structural_and_shell | lvl_subchain |  | 0 | structural_modifications addition_rules#lvl_temp_shoring Closes the LVL retrofit sub-chain. Covered by bundled framing inspection. | 2026-07-10 | 2026-07-10 | 2026-07-10 | 2026-08-12 | 22.5 | not_started |  | structural.install_lvl FS |
| roofing.underlayment | roof_framing_roofing | Synthetic underlayment + drip edge + flashing | roofing | work | 1 | 3 | structural_and_shell | roofing |  | 0 | roof_framing_roofing editor_rules#roof_framing_roofing Building becomes weatherproof; gates MEPs + windows. | 2026-08-04 | 2026-08-04 | 2026-08-04 | 2026-08-04 | 0 | not_started |  | framing.sheathing FS |
| roofing.shingles | roof_framing_roofing | Architectural asphalt shingles + ridge vent | roofing | work | 1 | 3 | structural_and_shell | roofing |  | 0 | roof_framing_roofing editor_rules#roof_framing_roofing Per editor rules + Will's audit (line 420): shingles up to 6,000 sqft in 1 day; ~300 sqft addition fits easily. | 2026-08-05 | 2026-08-05 | 2026-08-05 | 2026-10-08 | 45 | not_started |  | roofing.underlayment FS |
| windows.install | windows_doors_weatherproofing | Install 3× 36"×60" DH + transom + exterior door | windows_doors | work | 2 | 2 | structural_and_shell | envelope |  | 0 | windows_doors_weatherproofing dev_rules#4J, addition_rules#windows_install Per Rule 4J: windows install IMMEDIATELY after roof framed, in parallel with underlayment. NOT gated on dried-in milestone. | 2026-08-03 | 2026-08-04 | 2026-08-03 | 2026-08-03 | 0 | not_started |  | framing.roof FS, checkpoint.windows_arrived FS, order.exterior_door FS |
| milestone.dried_in | roof_framing_roofing | Structure dried-in | general | milestone | 0 | 0 | structural_and_shell | roofing |  | 0 | roof_framing_roofing dev_rules#4I, addition_rules#meps_underlayment_windows Dried-in fires after underlayment + windows. Per Rule 4I dried-in does NOT gate MEPs (those depend on underlayment+windows directly). Dried-in does gate exterior siding and order.minisplit. | 2026-08-05 | 2026-08-05 | 2026-08-05 | 2026-09-15 | 28 | not_started |  | roofing.underlayment FS, windows.install FS |
| siding.install | exterior_finishes | WRB + vinyl siding (match existing double-4) | siding | work | 3 | 3 | structural_and_shell | exterior |  | 0 | exterior_finishes editor_rules#exterior_finishes Exterior runs in parallel with interior rough trades — exterior crew doesn't count against 2-trade interior cap. Per Will (audit line 430): same-crew block with roofing. | 2026-08-05 | 2026-08-07 | 2026-08-05 | 2026-10-02 | 41 | not_started |  | roofing.underlayment FS, windows.install FS |
| siding.trim_fascia_soffit_gutters | exterior_finishes | Trim, fascia metal, vinyl soffit, seamless gutters | siding | work | 2 | 3 | structural_and_shell | exterior |  | 0 | exterior_finishes editor_rules#exterior_finishes Same-crew continuation per editor rules. | 2026-08-10 | 2026-08-11 | 2026-08-10 | 2026-10-07 | 41 | not_started |  | siding.install FS |
| plumbing.rough_in | plumbing | Plumbing rough-in (master bath, W/D relocation, vent stacks) | plumbing | work | 4 | 2 | rough_trades | rough_plumbing |  | 2 | plumbing plumbing_rough_min_duration, dev_rules#4G, dev_rules#4I Master bath + W/D relocation + vent stacks = Will's nominal floor of 4d × crew 2 (transcript line 1942). NO tank set predecessor — existing gas WH stays per Round 1; only vent extension. Gates on underlayment + windows per Rule 4I. | 2026-08-05 | 2026-08-10 | 2026-08-05 | 2026-08-05 | 0 | not_started |  | roofing.underlayment FS, windows.install FS |
| electrical.subpanel_install | electrical | Install 100A subpanel | electrical | work | 1 | 1 | rough_trades | rough_electrical |  | 0 | electrical editor_rules#electrical Per Will's audit (line 474): 1 day, 1 person. Even though breakdown labor hours imply more, the editor rules override based on Will's measured productivity. | 2026-08-05 | 2026-08-05 | 2026-08-05 | 2026-08-06 | 1.5 | not_started |  | roofing.underlayment FS, windows.install FS, checkpoint.subpanel_arrived FS, prep.amperage_check FS |
| electrical.rough_in | electrical | Electrical rough-in (recessed cans, outlets, GFCI/AFCI, elevator 30A circuit) | electrical | work | 1.5 | 2 | rough_trades | rough_electrical |  | 0 | electrical dev_rules#4G, editor_rules#electrical SS lag 1 with plumbing per editor parallelism. Mini-split job → MEP order plumbing → electrical → mini-split (Rule 4G). Includes 12 recessed, switch relocation, dedicated elevator 30A. | 2026-08-06 | 2026-08-07 | 2026-08-06 | 2026-08-07 | 1.5 | not_started |  | plumbing.rough_in SS 1, electrical.subpanel_install FS |
| hvac.minisplit_rough | hvac | Mini-split line set rough-in | hvac | work | 0.5 | 1 | rough_trades | rough_hvac |  | 0 | hvac dev_rules#4G, editor_rules#hvac Per Rule 4G + Will's audit (line 476): mini-split rough is 0.5d, 1 person, runs LAST among MEPs for mini-split jobs. | 2026-08-11 | 2026-08-11 | 2026-08-11 | 2026-08-11 | 0 | not_started |  | plumbing.rough_in FS, electrical.rough_in FS |
| inspect.rough_bundled | framing | Bundled rough inspection (plumbing + electrical + HVAC + framing) | inspector | inspection | 0.5 | 1 | rough_inspections | rough_inspections_group |  | 1 | framing dev_rules#4C ONE inspector, ONE day per Rule 4C + Will's audit (line 397-417): framing inspection can't precede MEPs because plumbers/electricians drill the framing during rough. Bundle covers all four. 1d scheduling lead. | 2026-08-12 | 2026-08-12 | 2026-08-12 | 2026-08-12 | 0 | not_started |  | plumbing.rough_in FS 1, electrical.rough_in FS 1, hvac.minisplit_rough FS 1, structural.remove_temp_shoring FS |
| buffer.post_rough_inspection | framing | Punch-list buffer (2 wd) | general | lead_time | 0 | 0 | rough_inspections | rough_inspections_group |  | 0 | framing dev_rules#4D 2-wd punch-list loop per Rule 4D — trades come back for fixes, re-inspect. | 2026-08-13 | 2026-08-14 | 2026-08-13 | 2026-08-13 | 0 | not_started | 2 | inspect.rough_bundled FS |
| equipment.insulation_material_arrival | insulation_air_sealing | Insulation material on site | general | work | 0.5 | 1 | insulation_and_drywall | insulation |  | 0 | insulation_air_sealing editor_rules#insulation_air_sealing TCR-specific rule: insulation material arrives same day as bundled rough inspection so it's staged for the post-inspection install. | 2026-08-12 | 2026-08-12 | 2026-08-12 | 2026-08-17 | 2.5 | not_started |  | inspect.rough_bundled SS |
| insulation.air_seal | insulation_air_sealing | Air sealing (all penetrations) | insulation | work | 0.5 | 2 | insulation_and_drywall | insulation |  | 2 | insulation_air_sealing editor_rules#insulation_air_sealing Phase-start bar. After rough inspections + punch buffer. | 2026-08-17 | 2026-08-17 | 2026-08-17 | 2026-08-17 | 0 | not_started |  | buffer.post_rough_inspection FS |
| insulation.install | insulation_air_sealing | Install R13 walls + R30 attic + R30 floor system | insulation | work | 1 | 2 | insulation_and_drywall | insulation |  | 0 | insulation_air_sealing editor_rules#insulation_air_sealing Typical addition insulation = 1 day per editor rules. | 2026-08-17 | 2026-08-18 | 2026-08-17 | 2026-08-17 | 0 | not_started |  | insulation.air_seal FS, equipment.insulation_material_arrival FS |
| retrofit.hall_bath_window_infill_framing | existing_hall_bath_bedroom_closeout | Frame hall bath window infill | framing | work | 0.5 | 2 | insulation_and_drywall | insulation |  | 0 | existing_hall_bath_bedroom_closeout dev_rules#9, dev_rules#4V Retrofit framing for hall bath window opening (window already removed in selective demo). Independent of addition framing per retrofit detection. Runs in parallel; rolled into insulation/drywall consolidation chain rather than its own sub-chain. | 2026-07-07 | 2026-07-07 | 2026-07-07 | 2026-08-17 | 29.5 | not_started |  | demo.selective_demo FS |
| retrofit.hall_bath_insulation | existing_hall_bath_bedroom_closeout | Insulate hall bath window infill | insulation | work | 0.5 | 1 | insulation_and_drywall | insulation |  | 0 | existing_hall_bath_bedroom_closeout dev_rules#9 Retrofit insulation runs alongside main insulation crew, same day. | 2026-08-17 | 2026-08-17 | 2026-08-17 | 2026-08-18 | 0.5 | not_started |  | retrofit.hall_bath_window_infill_framing FS, insulation.install SS |

| id | section_id | name | trade | kind | duration_days | crew_size | phase_id | component_id | lead_up_working_days | derived_from | scheduled_start | scheduled_end | earliest_start | latest_start | float_days | status | lead_time_days | depends_on |
| --- | --- | --- | --- | --- | --- | --- | --- | --- | --- | --- | --- | --- | --- | --- | --- | --- | --- | --- |
| inspect.insulation | insulation_air_sealing | Insulation inspection | inspector | inspection | 0.5 | 1 | insulation_and_drywall | insulation | 1 | insulation_air_sealing editor_rules#insulation_inspection Procedural; 1d scheduling lead. Almost always passes per editor rules. | 2026-08-19 | 2026-08-19 | 2026-08-19 | 2026-08-19 | 0 | not_started |  | insulation.install FS 1, retrofit.hall_bath_insulation FS 1 |
| drywall.consolidated | drywall | Drywall consolidated (hang + tape + sand + prime, addition + bedroom retrofit + hall bath patch + basement storage) | drywall | work | 11 | 3 | insulation_and_drywall | drywall | 2 | drywall editor_rules#drywall_consolidation, addition_rules#retrofit_drywall 159 labor-hours / 3 crew ≈ 6.6d; multi-zone (addition + existing primary bedroom + hall bath patch + basement storage) bumps to 11d per editor multi-zone guidance. Single visit per Will's playbook. Cure days baked in. | 2026-08-20 | 2026-09-03 | 2026-08-20 | 2026-08-20 | 0 | not_started |  | inspect.insulation FS |
| paint.phase_1 | interior_finish | Paint phase 1 — primer walls+ceilings AM, ceiling finish coat PM | paint | work | 1 | 2 | insulation_and_drywall | paint_phase1 | 0 | interior_finish dev_rules#4E, editor_rules#paint_two_phases 1d covers primer (walls + ceilings) AM + ceiling finish coat PM same day per Will's standard sequence. Walls left in primer for downstream trades. Gates flooring, electrical finish, tile substrate. | 2026-09-04 | 2026-09-04 | 2026-09-04 | 2026-09-04 | 0 | not_started |  | drywall.consolidated FS, order.paint FS |
| tile.shower_substrate | master_bathroom | Master bath shower substrate + waterproofing | tile | work | 1 | 2 | interior_finishes | master_bath_tile | 2 | master_bathroom editor_rules#interior_finish Phase-start bar for interior_finishes. Shower pan + waterproofing prep gated on paint phase 1 + tile arrived. | 2026-09-08 | 2026-09-08 | 2026-09-08 | 2026-09-08 | 0 | not_started |  | paint.phase_1 FS, checkpoint.tile_arrived FS |
| tile.shower_install | master_bathroom | Tile master bath shower walls (~7'×4', niche + bench) | tile | work | 5 | 2 | interior_finishes | master_bath_tile | 0 | master_bathroom editor_rules#tile 88 labor-hours / crew 2 = 5.5d; rounded to 5d. Includes wall tile + mosaic floor + niche + bench. Tile is finish-heavy — keep at upper end of editor productivity. | 2026-09-09 | 2026-09-15 | 2026-09-09 | 2026-09-09 | 0 | not_started |  | tile.shower_substrate FS |
| tile.grout_seal | master_bathroom | Grout + seal master shower | tile | work | 1.5 | 2 | interior_finishes | master_bath_tile | 0 | master_bathroom editor_rules#tile Grout + seal closing the tile chain. Gates shower glass template. | 2026-09-16 | 2026-09-17 | 2026-09-16 | 2026-09-16 | 0 | not_started |  | tile.shower_install FS |
| shower.glass_template | master_bathroom | Template frameless shower glass enclosure | glazing | work | 0.5 | 1 | interior_finishes | shower_glass | 0 | master_bathroom editor_rules#glazing Per Round 4: frameless 3/8" tempered glass door + return panel. Glass supplier templates AFTER grout sets. | 2026-09-17 | 2026-09-17 | 2026-09-17 | 2026-09-17 | 0 | not_started |  | tile.grout_seal FS |
| wait.shower_glass | master_bathroom | Shower glass fabrication (10 cal-d) | general | lead_time | 0 | 0 | interior_finishes | shower_glass | 0 | master_bathroom editor_rules#glazing, dev_rules#4R 10 calendar-day fab from local glass supplier per Round 4. | 2026-09-18 | 2026-09-29 | 2026-09-18 | 2026-09-18 | 0 | not_started | 10 | shower.glass_template FS |
| shower.glass_install | master_bathroom | Install frameless shower glass enclosure | glazing | work | 0.5 | 1 | interior_finishes | shower_glass | 0 | master_bathroom editor_rules#glazing 0.5d install. Gates paint.phase_2 (Round 4 confirmation — predecessor to substantial completion). | 2026-09-30 | 2026-09-30 | 2026-09-30 | 2026-09-30 | 0 | not_started |  | wait.shower_glass FS |
| flooring.install | interior_finish | LVT flooring install (throughout addition + bedroom + storage) | flooring | work | 3 | 2 | interior_finishes | flooring_trim | 0 | interior_finish dev_rules#4L, editor_rules#interior_finish Per Rule 4L: flooring gated on paint.phase_1 + shower pan set. LVT throughout ~600 sqft + bedroom + storage = ~3d at 250 sqft/day. | 2026-09-09 | 2026-09-11 | 2026-09-09 | 2026-09-22 | 9.5 | not_started |  | paint.phase_1 FS, tile.shower_substrate FS, order.lvt FS |
| vanity.install | master_bathroom | Install 72" double vanity | cabinets | work | 0.5 | 2 | interior_finishes | vanity_cabinets | 0 | master_bathroom dev_rules#4L Per Rule 4L: vanity gates on flooring + paint phase 1. 0.5d install per editor rules. | 2026-09-14 | 2026-09-14 | 2026-09-14 | 2026-09-28 | 10 | not_started |  | flooring.install FS, paint.phase_1 FS, order.vanity FS |
| trim.install | interior_finish | Trim package — base, casing, interior doors | trim_carpentry | work | 3 | 2 | interior_finishes | flooring_trim | 0 | interior_finish dev_rules#4L Per Rule 4L: trim gates on flooring (NOT paint). Includes 4 interior doors (1 pre-hung + 2 pocket) + base + casing + caulk/fill/sand. | 2026-09-14 | 2026-09-16 | 2026-09-14 | 2026-09-25 | 9.5 | not_started |  | flooring.install FS, order.interior_doors FS |
| electrical.finish | electrical | Electrical finish — devices, recessed lights, dimmers, vent fan | electrical | work | 2.5 | 2 | interior_finishes | finishes_mep | 0 | electrical dev_rules#4L Per Rule 4L: electrical finish gates on paint phase 1 (NOT paint phase 2). 12 recessed + 2 vanity + 1 fan/light + outlets + dimmers + switch relocation patch. | 2026-09-08 | 2026-09-10 | 2026-09-08 | 2026-09-25 | 13 | not_started |  | paint.phase_1 FS |
| plumbing.finish | plumbing | Plumbing finish — faucets, toilet, shower trim, W/D hookup | plumbing | work | 2 | 2 | interior_finishes | finishes_mep | 0 | plumbing dev_rules#4L Per Rule 4L: plumbing finish gates on vanity + flooring + tile grout. 2 lav + toilet + dual-valve shower + W/D hookup. | 2026-09-17 | 2026-09-21 | 2026-09-17 | 2026-09-28 | 7 | not_started |  | vanity.install FS, flooring.install FS, tile.grout_seal FS, order.vanity_fixtures FS |
| hvac.minisplit_install | hvac | Mini-split install | hvac | work | 1 | 1 | interior_finishes | finishes_mep | 0 | hvac dev_rules#4N, editor_rules#crew_concurrency Per Rule 4N HVAC stagger default: serialized AFTER electrical.finish to preserve 2-trade interior cap when finish cluster converges. 1d / 1 person per editor rules. | 2026-09-10 | 2026-09-11 | 2026-09-10 | 2026-09-29 | 13 | not_started |  | drywall.consolidated FS, paint.phase_1 FS, checkpoint.minisplit_arrived FS, electrical.finish FS |
| retrofit.hall_bath_repaint | existing_hall_bath_bedroom_closeout | Hall bath repaint after window-infill drywall | paint | work | 0.5 | 1 | interior_finishes | hall_bath_mod | 0 | existing_hall_bath_bedroom_closeout dev_rules#4V Retrofit Component bucket #2 (per Rule 4V): hall bath repaint after consolidated drywall patches the window infill. PVC trim already in scope. NOT same task as early.acrylic_shower_swap (which is bucket #1 in site_prep). | 2026-09-08 | 2026-09-08 | 2026-09-08 | 2026-09-30 | 16 | not_started |  | drywall.consolidated FS, paint.phase_1 FS |
| paint.phase_2 | interior_finish | Paint phase 2 — final wall coat (LAST work task on site) | paint | work | 1 | 2 | interior_finishes | paint_phase2 | 0 | interior_finish dev_rules#4F Per Rule 4F: paint.phase_2 gates on EVERY finish trade. LAST work task on site. Final cut-in + roll on walls. Predecessors cover trim, flooring, vanity, tile grout, plumbing finish, electrical finish, mini-split install, shower glass install, and hall bath retrofit repaint. | 2026-09-30 | 2026-10-01 | 2026-09-30 | 2026-09-30 | 0 | not_started |  | trim.install FS, flooring.install FS, vanity.install FS, tile.grout_seal FS, plumbing.finish FS, electrical.finish FS, hvac.minisplit_install FS, shower.glass_install FS, retrofit.hall_bath_repaint FS |
| milestone.substantial_completion | interior_finish | Substantial completion | general | milestone | 0 | 0 | interior_finishes | paint_phase2 | 0 | interior_finish dev_rules#4F FS-after paint.phase_2 ONLY per Rule 4F. Fires naturally at home-is-usable moment because paint.phase_2 is gated on every finish trade. | 2026-10-01 | 2026-10-01 | 2026-10-01 | 2026-10-01 | 0 | not_started |  | paint.phase_2 FS |
| closeout.client_walkthrough | existing_hall_bath_bedroom_closeout | Client walkthrough + signed punch list | general | work | 0.5 | 1 | closeout | closeout_group | 0 | existing_hall_bath_bedroom_closeout editor_rules#closeout PM walks through with homeowner using Will's SOP. Customer signs to lock the punch list. | 2026-10-01 | 2026-10-01 | 2026-10-01 | 2026-10-01 | 0 | not_started |  | milestone.substantial_completion FS |
| closeout.punch_list_returns | existing_hall_bath_bedroom_closeout | Trade punch-list returns | general | work | 2 | 2 | closeout | closeout_group | 0 | existing_hall_bath_bedroom_closeout editor_rules#closeout Trades return briefly. 1-3 days; pick midpoint. | 2026-10-02 | 2026-10-05 | 2026-10-02 | 2026-10-02 | 0 | not_started |  | closeout.client_walkthrough FS |
| closeout.final_clean | existing_hall_bath_bedroom_closeout | Final clean | cleanup | work | 1 | 2 | closeout | closeout_group | 0 | existing_hall_bath_bedroom_closeout editor_rules#closeout Whole-house final clean. | 2026-10-06 | 2026-10-06 | 2026-10-06 | 2026-10-06 | 0 | not_started |  | closeout.punch_list_returns FS |
| inspect.final_bundled | existing_hall_bath_bedroom_closeout | Final bundled inspection (electrical + plumbing + HVAC + building) | inspector | inspection | 0.5 | 1 | closeout | closeout_group | 1 | existing_hall_bath_bedroom_closeout dev_rules#4M Per Rule 4M: all finals + final building on ONE day, ONE inspector. | 2026-10-07 | 2026-10-07 | 2026-10-07 | 2026-10-07 | 0 | not_started |  | closeout.final_clean FS |
| milestone.co_handoff | existing_hall_bath_bedroom_closeout | CO + handoff | general | milestone | 0 | 0 | closeout | closeout_group | 0 | existing_hall_bath_bedroom_closeout editor_rules#closeout Certificate of Occupancy. | 2026-10-07 | 2026-10-07 | 2026-10-07 | 2026-10-09 | 1.5 | not_started |  | inspect.final_bundled FS |
| closeout.wills_walkthrough | existing_hall_bath_bedroom_closeout | Will's personal final walkthrough with customer | general | work | 0.5 | 1 | closeout | closeout_group | 0 | existing_hall_bath_bedroom_closeout addition_rules#wills_walkthrough Per addition rules: Will's personal touchpoint with the customer; the actual end of the project from TCR's standpoint. 1 wd after final inspection passes. | 2026-10-08 | 2026-10-08 | 2026-10-08 | 2026-10-08 | 0 | not_started |  | inspect.final_bundled FS 1 |
