| id | section_id | name | trade | kind | duration_days | crew_size | lead_time_days | phase_id | component_id | pre_construction_offset_working_days | lead_up_working_days | derived_from | scheduled_start | scheduled_end | earliest_start | latest_start | float_days | status | depends_on | can_overlap_with |
| --- | --- | --- | --- | --- | --- | --- | --- | --- | --- | --- | --- | --- | --- | --- | --- | --- | --- | --- | --- | --- |
| permit.tdec_septic | general_conditions | TDEC septic permit (6wk lead from submit 2026-07-07) | general | lead_time | 0 | 0 | 42 | pre_construction | permits_and_selections | 30 | 0 | general_conditions job_types/addition/rules/tdec_septic_permit_offset.md, _company/rules/dev_rules.md#4A Confirmed septic + TCR handles TDEC; application target 2026-07-07; 42 cal-d turnaround + 1-wk buffer → realistic on-site start 2026-08-24. Anchored via pre_construction_offset 30 working days per addition_rules rank-200 override. | 2026-05-18 | 2026-06-29 | 2026-05-18 | 2026-07-30 | 52 | not_started |  |  |
| permit.building_walk_in | general_conditions | Building permit walk-in | pm | work | 1 | 1 |  | pre_construction | permits_and_selections | 15 | 2 | general_conditions _company/rules/dev_rules.md#4A, _company/rules/dev_rules.md#4T 4A: permits = 1d work task with pre_construction_offset_working_days: 15. 4T: permits get lead_up_working_days: 2. | 2026-06-09 | 2026-06-09 | 2026-06-09 | 2026-09-10 | 66 | not_started |  |  |
| checkpoint.selections_finalized | general_conditions | Selections finalized (LVT, tile, vanity, fixtures, doors, paint colors) | pm | milestone | 0 | 0 |  | pre_construction | permits_and_selections | 15 | 5 | general_conditions _company/rules/dev_rules.md#4P, _company/rules/dev_rules.md#4T 4P: checkpoint.selections_finalized mandatory in pre_construction with offset 15. 4T: lead_up 5. Downstream consumers: drywall.consolidated (paint colors), tile.shower_full (tile selection), flooring.lvt, trim.carpentry — satisfies 4U no-op test. | 2026-06-09 | 2026-06-09 | 2026-06-09 | 2026-07-17 | 28 | not_started |  |  |
| prep.amperage_check | electrical | Verify existing main service supports new 100A subpanel | electrical | work | 0.5 | 1 |  | pre_construction | permits_and_selections | 15 | 0 | electrical job_types/addition/rules/addition_rules.md#amperage-check Scope L83 assumes existing main service can support new 100A subpanel. addition_rules amperage-check requires 0.5d in pre-construction to verify before contract signing. Downstream consumer: electrical.rough_in. | 2026-06-09 | 2026-06-09 | 2026-06-09 | 2026-08-04 | 40.5 | not_started |  |  |
| procurement.windows | windows_doors | Order + receive (2) stock vinyl windows: 1 transom + 1 DH | windows_doors | procurement | 0 | 0 | 14 | procurement | long_lead_procurement |  |  | windows_doors _company/rules/dev_rules.md#4R Confirmed (round 1, q.windows_stock_custom_and_count): 2 stock vinyl per drawing schedule, ~14 cal-d supplier lead. 4R procurement chain — collapsed to single procurement task with lead_time_days due to short stock lead. Downstream: windows.install. | 2026-07-14 | 2026-07-27 | 2026-07-14 | 2026-07-17 | 3 | not_started | checkpoint.selections_finalized FS 0 |  |
| procurement.lvl | structural | Order + receive 3-ply 14" LVL beam (~15'-6" span) | framing | procurement | 0 | 0 | 10 | procurement | long_lead_procurement |  |  | structural _company/rules/dev_rules.md#4R, job_types/addition/rules/addition_rules.md#LVL-temporary-shoring Confirmed (round 1, q.lvl_load_bearing): standard 3-ply, ~7-14 cal-d, no custom. Downstream: structural.lvl_install gates framing.floor_system (new floor bears on LVL). | 2026-06-26 | 2026-07-07 | 2026-06-26 | 2026-06-29 | 1 | not_started |  |  |
| procurement.brick | siding | Order + receive brick to match existing (General Shale via Builders FirstSource) | masonry | procurement | 0 | 0 | 14 | procurement | long_lead_procurement |  |  | siding _company/rules/dev_rules.md#4R Confirmed (round 2, q.masonry_sub_status; q.brick_co_certainty): Bristol Brick & Masonry as sub (3-4 wk advance notice — see assumption note); General Shale brick stock-orderable on ~14 cal-d. CO is paperwork only. Downstream: exterior.brick_veneer. | 2026-07-15 | 2026-07-28 | 2026-07-15 | 2026-08-20 | 26 | not_started | checkpoint.selections_finalized FS 0 |  |
| procurement.tank | plumbing | Order + receive tankless WH (customer signed $6,500 option) | plumbing | procurement | 0 | 0 | 10 | procurement | long_lead_procurement |  |  | plumbing _company/rules/dev_rules.md#4H, _company/rules/dev_rules.md#4R Confirmed (round 1, q.tankless_vs_existing_wh_contract): tankless in scope, ~10 cal-d standard lead. 4H: tank set sequence applies because tankless REPLACES existing tank. Downstream: plumbing.rough_in (tank-set SS predecessor). | 2026-07-22 | 2026-07-31 | 2026-07-22 | 2026-07-22 | 0 | not_started | checkpoint.selections_finalized FS 0 |  |
| procurement.tile_master_bath | tile | Order + receive master-bath wall + mosaic floor tile + setting materials | tile | procurement | 0 | 0 | 14 | procurement | long_lead_procurement |  |  | tile _company/rules/dev_rules.md#4R Custom 7'×4' shower with mosaic floor + niche/bench + dual-valve diverter (scope L121-128); PM confirms stock vs custom at selections checkpoint. Default 14 cal-d. Downstream: tile.shower_full. | 2026-08-14 | 2026-08-27 | 2026-08-14 | 2026-08-18 | 2 | not_started | checkpoint.selections_finalized FS 0 |  |
| early.acrylic_shower_swap | existing_hall_bath_mod_bedroom_remodel_closeout | Customer-early: hall bath acrylic shower swap (Day 1, off critical path) | plumbing | work | 1 | 2 |  | on_site_execution | customer_early_items |  |  | existing_hall_bath_mod_bedroom_remodel_closeout _company/rules/dev_rules.md#4V, job_types/addition/rules/addition_rules.md#customer-early-items Confirmed (round 1, q.customer_early_items): homeowner wants a working shower throughout. 4V: emit in site_prep/customer_early_items Component, Day 1 before main demo, off CP. The retrofit hall bath repaint/drywall patch/window infill stays in retrofit.hall_bath_mod — TWO buckets, same room. | 2026-06-30 | 2026-06-30 | 2026-06-30 | 2026-09-10 | 51 | not_started |  |  |
| prep.heat_pump_relocate | selective_demolition_site_work | Relocate existing heat pump + electrical disconnect out of new footprint | hvac | work | 1 | 2 |  | on_site_execution | site_prep |  |  | selective_demolition_site_work _company/rules/dev_rules.md#4K Scope L21: existing heat pump and disconnect in the way of new footprint. 4K: prep.heat_pump_relocate 1d hvac in site_prep, 3+ working days before main demo. FS lag 3 into demo.expose_and_clear enforces the buffer. | 2026-06-30 | 2026-06-30 | 2026-06-30 | 2026-06-30 | 0 | not_started |  |  |
| demo.expose_and_clear | selective_demolition_site_work | Selective demo: saw-cut walkway, remove railroad ties + obstructions, expose bearing wall, dump runs | demo | work | 2 | 3 |  | on_site_execution | demo_and_protection |  |  | selective_demolition_site_work _company/rules/dev_rules.md#4K Breakdown 56 hrs / scope L18-20. Combined site-clear + walkway saw-cut + bearing-wall expose to feed structural.lvl_install. 4K requires 3+ working day gap after heat pump relocation. | 2026-07-06 | 2026-07-07 | 2026-07-06 | 2026-07-06 | 0 | not_started | prep.heat_pump_relocate FS 3 |  |
| structural.lvl_install | structural_modifications_lvl_beam_shoring | Temp shoring + install 3-ply 14" LVL beam + remove shoring | framing | work | 2 | 3 |  | on_site_execution | structural |  |  | structural_modifications_lvl_beam_shoring job_types/addition/rules/addition_rules.md#LVL-temporary-shoring Confirmed (round 1, q.lvl_load_bearing): new floor bears on LVL. Sub-chain shoring → install → remove is combined into one 2d work block; framing.floor_system FS-gates after install per addition_rules. Breakdown 60 labor hrs covers chain. | 2026-07-08 | 2026-07-09 | 2026-07-08 | 2026-07-09 | 1 | not_started | demo.expose_and_clear FS 0, procurement.lvl FS 0 |  |
| concrete.foundation_monolithic | excavation_foundation_footings_slab | Excavate + form 12×12 footings + slab gravel + vapor + rebar + 4" slab pour (single pour) + footing inspection | concrete | work | 1 | 3 |  | on_site_execution | foundation |  |  | excavation_foundation_footings_slab _company/rules/dev_rules.md#4B 4B monolithic foundation default — single form/prep task, single inspection covers footing + slab. Scope L33-39 confirms no CMU / no foundation walls. Breakdown 78 hrs covers excavation + footings + slab + inspection compressed into 1 pour day. | 2026-07-08 | 2026-07-08 | 2026-07-08 | 2026-07-08 | 0 | not_started | demo.expose_and_clear FS 0 |  |
| framing.floor_system | framing_floor_walls_elevator | Framing — floor system over basement (above LVL bearing line) | framing | work | 2 | 3 |  | on_site_execution | framing |  |  | framing_floor_walls_elevator _company/rules/dev_rules.md#4B, job_types/addition/rules/addition_rules.md#LVL-temporary-shoring FS lag 2 on foundation = monolithic cure (4B: cure modeled as lag rather than separate lead_time task). Confirmed (round 1, q.lvl_load_bearing): new floor bears on LVL → FS gate on structural.lvl_install. Breakdown 146 labor hrs for full framing block is split across floor/walls/roof tasks. | 2026-07-13 | 2026-07-14 | 2026-07-13 | 2026-07-13 | 0 | not_started | concrete.foundation_monolithic FS 2, structural.lvl_install FS 0 |  |
| framing.walls_and_shaft | framing_floor_walls_elevator | Framing — basement 2×4 walls, exterior + interior walls, future elevator shaft (4'×4') | framing | work | 5 | 3 |  | on_site_execution | framing |  |  | framing_floor_walls_elevator Scope L42, L48-49: basement walls + exterior + interior + elevator shaft framing rolled into one block. Breakdown 146 hrs allocates ~half to walls + shaft. | 2026-07-15 | 2026-07-21 | 2026-07-15 | 2026-07-15 | 0 | not_started | framing.floor_system FS 0 |  |
| framing.roof | roof_framing_sheathing_roofing | Stick-frame gable roof tie-in into existing 6/12 (3/12 new) + sheathing | framing | work | 4 | 3 |  | on_site_execution | framing |  |  | roof_framing_sheathing_roofing _company/rules/dev_rules.md#4Q, job_types/addition/rules/addition_rules.md#concealed-roof-tie-in Confirmed (round 1, q.roof_framing): stick-frame, 590 sqft / ~10 ft gable span well under 24-ft truss threshold per 4Q; no procurement.trusses emitted. Multi-valley tie-in into existing 6/12 carries concealed-condition risk → FS lag 3 cal-d on roofing.underlayment models the buffer (rather than separate buffer task). Plans note 'VERIFY EXISTING ROOF SLOPES'. | 2026-07-22 | 2026-07-27 | 2026-07-22 | 2026-07-22 | 0 | not_started | framing.walls_and_shaft FS 0 |  |
| roofing.underlayment | roof_framing_sheathing_roofing | Synthetic underlayment + drip edge + flashing + ridge vent (gates MEPs + windows) | roofing | work | 1 | 2 |  | on_site_execution | roofing_and_exterior |  |  | roof_framing_sheathing_roofing job_types/addition/rules/addition_rules.md#MEP-gating, job_types/addition/rules/addition_rules.md#concealed-roof-tie-in addition_rules: MEPs gate on roofing.underlayment + windows.install (NOT dried-in milestone). FS lag 3 cal-d after framing.roof buffers the multi-valley concealed-condition risk. | 2026-07-31 | 2026-07-31 | 2026-07-31 | 2026-07-31 | 0 | not_started | framing.roof FS 3 |  |
| windows.install | windows_doors | Install (2) new vinyl windows + flash + air-seal + reset relocated existing units | windows_doors | work | 1 | 2 |  | on_site_execution | roofing_and_exterior |  |  | windows_doors job_types/addition/rules/addition_rules.md#windows-install 4I + addition_rules windows-install: windows install IMMEDIATELY after roof framed, NOT after dried-in milestone. Runs in parallel with roofing.underlayment. Confirmed 2 stock vinyl per drawing schedule. | 2026-07-28 | 2026-07-28 | 2026-07-28 | 2026-07-31 | 3 | not_started | framing.roof FS 0, procurement.windows FS 0 | roofing.underlayment |
| roofing.shingles | roof_framing_sheathing_roofing | Architectural asphalt shingles to match existing + fascia + soffit + gutters | roofing | work | 2 | 3 |  | on_site_execution | roofing_and_exterior |  |  | roof_framing_sheathing_roofing Scope L55-58. Breakdown 96 hrs roofing covers framing + sheathing + shingles + soffit; shingles task is ~16-24 hrs / 3-person crew ≈ 1-2d. | 2026-08-03 | 2026-08-04 | 2026-08-03 | 2026-09-08 | 25 | not_started | roofing.underlayment FS 0 |  |
| exterior.brick_veneer | exterior_finishes_siding_trim_gutters | Bristol Brick install — basement-level brick veneer (match existing) | masonry | work | 4 | 2 |  | on_site_execution | roofing_and_exterior |  |  | exterior_finishes_siding_trim_gutters Confirmed (round 1 q.brick_or_vinyl + round 2 q.masonry_sub + q.brick_co_certainty): NEW BRICK on basement-level walls per plans elevations p1-p2; Bristol Brick & Masonry sub; CO paperwork-only. Productivity ~150 brick/day; 4d for basement-level perimeter. | 2026-07-29 | 2026-08-03 | 2026-07-29 | 2026-09-03 | 26 | not_started | windows.install FS 0, procurement.brick FS 0 |  |
| exterior.vinyl_lap | exterior_finishes_siding_trim_gutters | Install vinyl lap siding + WRB on second-floor walls + trim | siding | work | 3 | 2 |  | on_site_execution | roofing_and_exterior |  |  | exterior_finishes_siding_trim_gutters Confirmed (round 1, q.brick_or_vinyl_addition): vinyl lap on second floor (drawings authoritative, scope's vinyl-only line revised). Runs in parallel with brick veneer. | 2026-07-29 | 2026-07-31 | 2026-07-29 | 2026-09-04 | 27 | not_started | windows.install FS 0 | exterior.brick_veneer |
| plumbing.rough_in | plumbing | Plumbing rough-in: tank set (tankless) + supply/waste/vent for master bath, W/D relocate, vent stacks through roof | plumbing | work | 4 | 2 |  | on_site_execution | mep_rough |  |  | plumbing _company/rules/dev_rules.md#4H, _company/rules/dev_rules.md#4I, _company/rules/dev_rules.md#4J, job_types/addition/rules/addition_rules.md#MEP-gating 4H tank-set sequence: tankless arrives first then plumbing rough-in stubs into it — modeled as 0.5d set absorbed into Day-1 of rough-in. 4I+4J + addition_rules MEP-gating: gates on roofing.underlayment + windows.install. Duration EXPANDED from 40 breakdown hrs (=2.5d) to 4d × 2 crew = 64 labor-hr rule floor per editor_rules — see warnings[]. | 2026-08-03 | 2026-08-06 | 2026-08-03 | 2026-08-03 | 0 | not_started | roofing.underlayment FS 0, windows.install FS 0, procurement.tank FS 0 |  |
| electrical.rough_in | electrical | Electrical rough-in: 100A subpanel, recessed lights, outlets, 30A elevator circuit, hall switch relocation | electrical | work | 1.5 | 2 |  | on_site_execution | mep_rough |  |  | electrical _company/rules/dev_rules.md#4G, _company/rules/dev_rules.md#4I, _company/rules/dev_rules.md#4J, job_types/addition/rules/addition_rules.md#MEP-gating 4G mini-split → plumbing → electrical → mini-split order; electrical runs after plumbing starts (overlap allowed). editor_rules: subpanel 1d/1 person + full rough 1-1.5d/2 crew. 78 breakdown hrs total split rough+finish. | 2026-08-03 | 2026-08-04 | 2026-08-03 | 2026-08-05 | 2 | not_started | roofing.underlayment FS 0, windows.install FS 0, prep.amperage_check FS 0 | plumbing.rough_in |
| hvac.minisplit_rough | hvac | HVAC mini-split rough-in: line-set + electrical penetration | hvac | work | 0.5 | 1 |  | on_site_execution | mep_rough |  |  | hvac _company/rules/dev_rules.md#4G 4G + editor_rules mini-split sequence: rough = 0.5d/1 person line-set after electrical (mini-split is LAST in MEP order per 4G when HVAC = mini-split). | 2026-08-04 | 2026-08-04 | 2026-08-04 | 2026-08-06 | 2 | not_started | electrical.rough_in FS 0 |  |
| inspect.rough_bundled | general_conditions | BUNDLED rough inspection: framing + plumbing + electrical + mini-split (single inspector, single day) | inspector | inspection | 1 | 1 |  | on_site_execution | mep_rough |  | 1 | general_conditions _company/rules/dev_rules.md#4C, _company/rules/dev_rules.md#4T 4C: rough electrical + rough plumbing + mini-split rough + framing inspected ONE day by ONE inspector. 4T: inspections lead_up 1. | 2026-08-07 | 2026-08-07 | 2026-08-07 | 2026-08-07 | 0 | not_started | plumbing.rough_in FS 0, electrical.rough_in FS 0, hvac.minisplit_rough FS 0 |  |
| insulation | insulation_air_sealing | Insulation — R13 walls, R30 attic/roof, R30 floor between basement and living space | insulation | work | 1 | 2 |  | on_site_execution | insulation_and_drywall |  |  | insulation_air_sealing _company/rules/dev_rules.md#4D 4D: 2-day punch buffer after rough inspection — modeled as FS lag 2 working days into insulation. editor_rules ~1d standard install; material arrival lands same day per editor_rules material-tied-to-inspection. | 2026-08-12 | 2026-08-12 | 2026-08-12 | 2026-08-12 | 0 | not_started | inspect.rough_bundled FS 2 |  |
| drywall.consolidated | drywall | Drywall (consolidated): addition + existing primary bedroom retrofit + hall bath patch + basement storage — hang, tape, 3-coat Level 3 finish | drywall | work | 10 | 3 |  | on_site_execution | insulation_and_drywall |  |  | drywall editor_rules drywall-consolidation: addition + retrofit primary + retrofit hall bath + basement storage in ONE block. Breakdown 159 hrs = largest section. ~10 working days for 4-zone consolidation on the higher end of editor_rules' 9-11d range. | 2026-08-13 | 2026-08-26 | 2026-08-13 | 2026-08-13 | 0 | not_started | insulation FS 0 |  |
| paint.phase_1 | interior_finish_carpentry_painting_flooring | Paint Phase 1 — primer walls + ceilings (AM) and ceiling finish coat (PM same day) | paint | work | 1 | 2 |  | on_site_execution | interior_finishes |  |  | interior_finish_carpentry_painting_flooring _company/rules/dev_rules.md#4E 4E: paint ALWAYS two phases. Phase 1 = primer + ceiling finish day-1; gates flooring/electrical-finish/tile-substrate. | 2026-08-27 | 2026-08-27 | 2026-08-27 | 2026-08-27 | 0 | not_started | drywall.consolidated FS 0 |  |
| tile.shower_full | master_bathroom_custom_tile_shower_finishes | Master-bath tile shower — substrate / waterproofing → install wall + mosaic floor + niche/bench → grout + seal | tile | work | 6 | 1 |  | on_site_execution | interior_finishes |  |  | master_bathroom_custom_tile_shower_finishes editor_rules tile productivity: substrate 1d → install 4-5d → grout/seal 1d compressed to 6d block. Custom 7'×4' shower + mosaic floor + niche/bench + dual-valve diverter (scope L121-128). 88 breakdown hrs. | 2026-08-28 | 2026-09-04 | 2026-08-28 | 2026-09-01 | 2 | not_started | paint.phase_1 FS 0, procurement.tile_master_bath FS 0 |  |
| flooring.lvt | interior_finish_carpentry_painting_flooring | LVT flooring throughout addition + existing primary bedroom retrofit | flooring | work | 3 | 2 |  | on_site_execution | interior_finishes |  |  | interior_finish_carpentry_painting_flooring _company/rules/dev_rules.md#4L 4L: flooring → trim ordering. LVT goes BEFORE trim. Two-trades concurrent OK with tile (different rooms). | 2026-08-28 | 2026-09-01 | 2026-08-28 | 2026-08-28 | 0 | not_started | paint.phase_1 FS 0 | tile.shower_full |
| electrical.finish | electrical | Electrical finish — trim recessed lights, switches/outlets, vanity lights, vent fan/light combo, dimmers | electrical | work | 2.5 | 2 |  | on_site_execution | interior_finishes |  |  | electrical _company/rules/dev_rules.md#4L 4L: electrical finish → paint_1 (not paint_2). Modeled here as electrical.finish FS-after paint.phase_1 to satisfy fixture-set-before-finish-coat ordering. editor_rules: full finish 2-3d. | 2026-08-28 | 2026-09-01 | 2026-08-28 | 2026-09-03 | 4.5 | not_started | paint.phase_1 FS 0 | flooring.lvt |
| hvac.minisplit_install | hvac | HVAC mini-split — head install + commissioning + relocated outdoor unit reconnect | hvac | work | 1 | 1 |  | on_site_execution | interior_finishes |  |  | hvac _company/rules/dev_rules.md#4N, _company/rules/dev_rules.md#4G 4N + 4G: HVAC mini-split install FS-after electrical.finish (2-trades-max stagger; mini-split LAST). editor_rules: install 1d/1 person. | 2026-09-01 | 2026-09-02 | 2026-09-01 | 2026-09-09 | 4.5 | not_started | electrical.finish FS 0 |  |
| trim.carpentry | interior_finish_carpentry_painting_flooring | Trim carpentry — 5-1/4" base, 2-1/4" casing, doors, vanity, plumbing finish + cabinet/hardware install | trim_carpentry | work | 3 | 2 |  | on_site_execution | interior_finishes |  |  | interior_finish_carpentry_painting_flooring _company/rules/dev_rules.md#4L 4L: trim FS-after flooring (not after paint). Includes plumbing finish (faucets, vanity, commode), cabinet/vanity set, accessories. Breakdown 162 hrs interior finish includes carpentry + trim + paint phases — trim portion ~24-30 hrs. | 2026-09-02 | 2026-09-04 | 2026-09-02 | 2026-09-02 | 0 | not_started | flooring.lvt FS 0 |  |
| retrofit.existing_primary_bedroom | interior_finish_carpentry_painting_flooring | Retrofit — existing primary bedroom remodel (framing mods done in walls task; LVT included; trim + paint touch-ups here) | trim_carpentry | work | 2 | 2 |  | on_site_execution | existing_primary_bedroom_retrofit |  |  | interior_finish_carpentry_painting_flooring Confirmed (round 1, q.retrofit_primary_bedroom_scope): EXISTING original-house primary bedroom retrofit, separate from addition's new master suite. Framing mods feed through demo + walls task; drywall already in drywall.consolidated; flooring already in flooring.lvt; this is the final trim + finish touch-ups distinct from new construction. | 2026-09-08 | 2026-09-09 | 2026-09-08 | 2026-09-08 | 0 | not_started | trim.carpentry FS 0 |  |
| retrofit.hall_bath_mod | existing_hall_bath_mod_bedroom_remodel_closeout | Retrofit — hall bath: existing window infill, drywall patch, prime + paint, PVC trim (acrylic shower already swapped early) | drywall | work | 3 | 2 |  | on_site_execution | hall_bath_mod |  |  | existing_hall_bath_mod_bedroom_remodel_closeout _company/rules/dev_rules.md#4V 4V: hall_bath_mod stays in interior_finishes Component, SEPARATE from early.acrylic_shower_swap (customer_early_items Component). Window infill + drywall patch + paint touch-up + PVC trim. Breakdown 72 hrs covers this + bedroom remodel + closeout; -$1,714 material is overlap credit (drywall + paint material already in other sections). | 2026-08-27 | 2026-08-31 | 2026-08-27 | 2026-09-04 | 6 | not_started | drywall.consolidated FS 0 | paint.phase_1, tile.shower_full, flooring.lvt |
| paint.phase_2 | interior_finish_carpentry_painting_flooring | Paint Phase 2 — wall finish coats + cut-ins + touch-ups (after all finish trades) | paint | work | 1 | 2 |  | on_site_execution | interior_finishes |  |  | interior_finish_carpentry_painting_flooring _company/rules/dev_rules.md#4E, _company/rules/dev_rules.md#4F 4E + 4F: paint.phase_2 predecessors include EVERY finish trade so it gates substantial completion alone. | 2026-09-10 | 2026-09-10 | 2026-09-10 | 2026-09-10 | 0 | not_started | trim.carpentry FS 0, tile.shower_full FS 0, electrical.finish FS 0, hvac.minisplit_install FS 0, retrofit.existing_primary_bedroom FS 0, retrofit.hall_bath_mod FS 0, exterior.brick_veneer FS 0, exterior.vinyl_lap FS 0, roofing.shingles FS 0 |  |
| milestone.substantial_completion | general_conditions | Substantial completion | pm | milestone | 0 | 0 |  | closeout | substantial_completion |  |  | general_conditions _company/rules/dev_rules.md#4F 4F: substantial completion = paint.phase_2 end; NO other predecessors. All other finish gating flows through paint.phase_2's predecessor list. | 2026-09-11 | 2026-09-11 | 2026-09-11 | 2026-09-11 | 0 | not_started | paint.phase_2 FS 0 |  |
