| id | section_id | name | trade | kind | duration_days | crew_size | phase_id | component_id | pre_construction_offset_working_days | lead_up_working_days | derived_from | scheduled_start | scheduled_end | earliest_start | latest_start | float_days | status | lead_time_days | depends_on | can_overlap_with |
| --- | --- | --- | --- | --- | --- | --- | --- | --- | --- | --- | --- | --- | --- | --- | --- | --- | --- | --- | --- | --- |
| checkpoint.selections_finalized | general.pre_construction | Checkpoint — selections finalized (finishes, fixtures, tile, LVT, vanity) | pm | milestone | 0 | 0 | pre_construction | checkpoints | 15 | 5 | general.pre_construction dev_rules.4P, dev_rules.4T Rule 4P mandatory selections checkpoint at 15-working-day pre-construction offset; downstream consumers: tile, LVT, vanity, doors (facts.md Sequencing). | 2026-06-10 | 2026-06-10 | 2026-06-10 | 2026-06-18 | 6.5 | not_started |  |  |  |
| checkpoint.equipment_confirmed | general.pre_construction | Checkpoint — equipment confirmed (mini-split, panel, exterior door, LVL) | pm | milestone | 0 | 0 | pre_construction | checkpoints | 10 | 3 | general.pre_construction dev_rules.4P Rule 4P mandatory equipment-confirmed checkpoint at 10-working-day offset; separate from selections — gates HVAC unit, subpanel, exterior door, LVL orders. | 2026-06-17 | 2026-06-17 | 2026-06-17 | 2026-06-22 | 3.5 | not_started |  |  |  |
| general.permitting | general.permitting | Permit walk-in + issuance | pm | work | 1 | 1 | pre_construction | permitting | 15 | 2 | general.permitting dev_rules.4A, dev_rules.4T Rule 4A: permits = 1d work task with 15-working-day pre-construction offset; NOT kind:lead_time (facts.md Sequencing). | 2026-06-10 | 2026-06-10 | 2026-06-10 | 2026-06-30 | 14 | not_started |  |  |  |
| general.tdec_septic_acknowledgment | general.permitting | TDEC septic permit acknowledgment (no septic work) | pm | work | 1 | 1 | pre_construction | permitting | 30 | 2 | general.permitting tdec_septic_permit_offset, dev_rules.4S tdec_septic_permit_offset rule: 30 calendar-day pre-construction offset when addition adds fixtures AND home on septic; confirmed.md round 1 septic_grinder_direction — permit acknowledgment only, existing septic adequate. | 2026-05-19 | 2026-05-19 | 2026-05-19 | 2026-09-25 | 91.5 | not_started |  |  |  |
| procurement.windows.order | procurement | Order windows — (1) 3'0"×1'0" transom + (1) 3'0"×3'0" DH | pm | procurement | 1 | 1 | procurement | procurement_windows |  |  | procurement dev_rules.4R, editor_rules.lead_times Rule 4R 3-task procurement pattern; window schedule per plans (confirmed.md q.windows_count_and_size_reconciliation); 21-cal-d stock DH+transom lead time. | 2026-06-18 | 2026-07-09 | 2026-06-18 | 2026-06-18 | 0 | not_started | 21 | checkpoint.selections_finalized FS 0 |  |
| procurement.windows.wait | procurement | Wait — windows in transit (~21 calendar days) | pm | lead_time | 0 | 0 | procurement | procurement_windows |  |  | procurement dev_rules.4R Rule 4R wait leg of the 3-task procurement pattern. | 2026-07-09 | 2026-07-30 | 2026-07-09 | 2026-07-09 | 0 | not_started | 21 | procurement.windows.order FS 0 |  |
| procurement.windows.arrived | procurement | Checkpoint — windows arrived on site | pm | milestone | 0 | 0 | procurement | procurement_windows |  |  | procurement dev_rules.4R, dev_rules.4U Rule 4R arrived leg; downstream consumer: windows.install (satisfies 4U no no-op checkpoint). | 2026-07-30 | 2026-07-30 | 2026-07-30 | 2026-07-30 | 0 | not_started |  | procurement.windows.wait FS 0 |  |
| procurement.lvl.order | procurement | Order LVL beam (3-ply 14" × ~15'-6") | pm | procurement | 1 | 1 | procurement | procurement_lvl |  |  | procurement dev_rules.4R, editor_rules.lead_times Rule 4R 3-task pattern; LVL 7–14 cal-d, use 14 for safety (facts.md Procurement). | 2026-06-22 | 2026-07-06 | 2026-06-22 | 2026-06-22 | 0 | not_started | 14 | checkpoint.equipment_confirmed FS 0 |  |
| procurement.lvl.wait | procurement | Wait — LVL in transit (~14 calendar days) | pm | lead_time | 0 | 0 | procurement | procurement_lvl |  |  | procurement dev_rules.4R Rule 4R wait leg. | 2026-07-06 | 2026-07-20 | 2026-07-06 | 2026-07-06 | 0 | not_started | 14 | procurement.lvl.order FS 0 |  |
| procurement.lvl.arrived | procurement | Checkpoint — LVL arrived on site | pm | milestone | 0 | 0 | procurement | procurement_lvl |  |  | procurement dev_rules.4R, dev_rules.4U Rule 4R arrived leg; downstream consumer: framing.lvl_install. | 2026-07-20 | 2026-07-20 | 2026-07-20 | 2026-07-20 | 0 | not_started |  | procurement.lvl.wait FS 0 |  |
| procurement.panel.order | procurement | Order 100A subpanel + electrical rough materials | pm | procurement | 1 | 1 | procurement | procurement_panel |  |  | procurement dev_rules.4R, editor_rules.lead_times Rule 4R 3-task pattern; panel 7–14 cal-d (facts.md Procurement). | 2026-07-10 | 2026-07-24 | 2026-07-10 | 2026-07-10 | 0 | not_started | 14 | checkpoint.equipment_confirmed FS 0 |  |
| procurement.panel.wait | procurement | Wait — subpanel in transit (~14 calendar days) | pm | lead_time | 0 | 0 | procurement | procurement_panel |  |  | procurement dev_rules.4R Rule 4R wait leg. | 2026-07-24 | 2026-08-07 | 2026-07-24 | 2026-07-24 | 0 | not_started | 14 | procurement.panel.order FS 0 |  |
| procurement.panel.arrived | procurement | Checkpoint — subpanel arrived | pm | milestone | 0 | 0 | procurement | procurement_panel |  |  | procurement dev_rules.4R, dev_rules.4U Rule 4R arrived leg; downstream consumer: electrical.rough. | 2026-08-07 | 2026-08-07 | 2026-08-07 | 2026-08-07 | 0 | not_started |  | procurement.panel.wait FS 0 |  |
| procurement.minisplit.order | procurement | Order ductless mini-split unit + line-set | pm | procurement | 1 | 1 | procurement | procurement_minisplit |  |  | procurement dev_rules.4R, editor_rules.lead_times Rule 4R 3-task pattern; mini-split 7–14 cal-d (facts.md Procurement). | 2026-07-16 | 2026-07-30 | 2026-07-16 | 2026-07-16 | 0 | not_started | 14 | checkpoint.equipment_confirmed FS 0 |  |
| procurement.minisplit.wait | procurement | Wait — mini-split in transit (~14 calendar days) | pm | lead_time | 0 | 0 | procurement | procurement_minisplit |  |  | procurement dev_rules.4R Rule 4R wait leg. | 2026-07-30 | 2026-08-13 | 2026-07-30 | 2026-07-30 | 0 | not_started | 14 | procurement.minisplit.order FS 0 |  |
| procurement.minisplit.arrived | procurement | Checkpoint — mini-split arrived | pm | milestone | 0 | 0 | procurement | procurement_minisplit |  |  | procurement dev_rules.4R, dev_rules.4U Rule 4R arrived leg; downstream consumer: hvac.minisplit_lineset_rough / hvac.minisplit_install. | 2026-08-13 | 2026-08-13 | 2026-08-13 | 2026-08-13 | 0 | not_started |  | procurement.minisplit.wait FS 0 |  |
| procurement.tile.order | procurement | Order custom master-bath tile (walls + mosaic floor) | pm | procurement | 1 | 1 | procurement | procurement_tile |  |  | procurement dev_rules.4R, editor_rules.lead_times Rule 4R 3-task pattern; custom tile 14–21 cal-d, use 21 for safety. | 2026-07-28 | 2026-08-18 | 2026-07-28 | 2026-07-28 | 0 | not_started | 21 | checkpoint.selections_finalized FS 0 |  |
| procurement.tile.wait | procurement | Wait — custom tile in transit (~21 calendar days) | pm | lead_time | 0 | 0 | procurement | procurement_tile |  |  | procurement dev_rules.4R Rule 4R wait leg. | 2026-08-18 | 2026-09-09 | 2026-08-18 | 2026-08-18 | 0 | not_started | 21 | procurement.tile.order FS 0 |  |
| procurement.tile.arrived | procurement | Checkpoint — custom tile arrived | pm | milestone | 0 | 0 | procurement | procurement_tile |  |  | procurement dev_rules.4R, dev_rules.4U Rule 4R arrived leg; downstream consumer: tile.master_bath. | 2026-09-09 | 2026-09-09 | 2026-09-09 | 2026-09-09 | 0 | not_started |  | procurement.tile.wait FS 0 |  |
| procurement.lvt.order | procurement | Order LVT flooring (stock) | pm | procurement | 1 | 1 | procurement | procurement_lvt |  |  | procurement dev_rules.4R, editor_rules.lead_times Rule 4R exception allows collapsed order for stock LVT (~7 cal-d); still emit 3-task pattern for scheduler consistency. | 2026-08-25 | 2026-09-01 | 2026-08-25 | 2026-08-26 | 1 | not_started | 7 | checkpoint.selections_finalized FS 0 |  |
| procurement.lvt.wait | procurement | Wait — LVT in transit (~7 calendar days) | pm | lead_time | 0 | 0 | procurement | procurement_lvt |  |  | procurement dev_rules.4R Rule 4R wait leg. | 2026-09-01 | 2026-09-09 | 2026-09-01 | 2026-09-02 | 1 | not_started | 7 | procurement.lvt.order FS 0 |  |
| procurement.lvt.arrived | procurement | Checkpoint — LVT arrived | pm | milestone | 0 | 0 | procurement | procurement_lvt |  |  | procurement dev_rules.4R, dev_rules.4U Rule 4R arrived leg; downstream consumer: flooring.install. | 2026-09-09 | 2026-09-09 | 2026-09-09 | 2026-09-10 | 1 | not_started |  | procurement.lvt.wait FS 0 |  |
| site_prep.heat_pump_relocation | site_prep | Relocate existing heat pump + electrical disconnect (before demo) | hvac | work | 1 | 2 | on_site_execution | site_prep |  | 2 | site_prep dev_rules.4K Rule 4K: heat pump relocation goes in site_prep at least 3 working days before demo (facts.md Sequencing; scope.md L36). | 2026-07-01 | 2026-07-01 | 2026-07-01 | 2026-07-01 | 0 | not_started |  | general.permitting FS 0 |  |
| customer_early.hall_bath_acrylic_shower_swap | hall_bath_mod | Hall bath acrylic shower swap — customer early item (Day 1) | plumbing | work | 2 | 2 | on_site_execution | customer_early_items |  |  | hall_bath_mod dev_rules.4V Rule 4V two-bucket: customer early item Day-1 (working shower during construction) off critical path; retrofit window infill/patch runs later in hall_bath_mod component (confirmed.md round 1 q.hall_bath_acrylic_shower_early_item). | 2026-07-01 | 2026-07-02 | 2026-07-01 | 2026-09-24 | 60.5 | not_started |  | general.permitting FS 0 |  |
| demo.selective | 12 | Selective demolition + site work (saw-cut walkway, remove railroad ties, dump runs) | demo | work | 3 | 3 | on_site_execution | demo_sitework |  |  | 12 dev_rules.4K, editor_rules.productivity CSV row 12 = 56 labor hrs @ crew 3 → ~2–3d. FS+3d lag after heat pump relocation per Rule 4K minimum offset. | 2026-07-07 | 2026-07-09 | 2026-07-07 | 2026-07-07 | 0 | not_started |  | site_prep.heat_pump_relocation FS 3 |  |
| excavation.footings | 13 | Excavate for footings + slab (backhoe/skid steer) | excavation | work | 2 | 2 | on_site_execution | foundation |  |  | 13 dev_rules.4O, editor_rules.productivity CSV row 13 = 78 hrs total combined excavation + foundation; equipment $1,950 → ~1.5–2 weeks machine time (facts.md Procurement). | 2026-07-10 | 2026-07-13 | 2026-07-10 | 2026-07-10 | 0 | not_started |  | demo.selective FS 0 |  |
| foundation.monolithic_pour | 13 | Monolithic footings + 4" slab pour (gravel, vapor barrier, rebar, footings + slab same day) | concrete | work | 2 | 3 | on_site_execution | foundation |  |  | 13 dev_rules.4B Rule 4B: monolithic pour default (footings + slab same day) when NO CMU or full-height walls (facts.md Trades; scope.md L45). | 2026-07-14 | 2026-07-15 | 2026-07-14 | 2026-07-14 | 0 | not_started |  | excavation.footings FS 0 |  |
| inspect.foundation | 13 | Foundation inspection (footings + slab) | inspector | inspection | 0.5 | 1 | on_site_execution | foundation |  | 1 | 13 editor_rules.tn_inspection_sequence TN inspection sequence: foundation inspection gates framing start. | 2026-07-16 | 2026-07-16 | 2026-07-16 | 2026-07-16 | 0 | not_started |  | foundation.monolithic_pour FS 0 |  |
| framing.floor_system | 15 | Frame floor system + subfloor (glued + fastened) | framing | work | 2 | 3 | on_site_execution | framing |  |  | 15 editor_rules.productivity CSV row 15 (framing 146 hrs total @ crew 3 → 6d split); floor system portion ~2d. | 2026-07-16 | 2026-07-20 | 2026-07-16 | 2026-07-16 | 0 | not_started |  | inspect.foundation FS 0 |  |
| framing.lvl_install | 14 | Install 3-ply 14" LVL beam + shoring (open existing load-bearing wall) | framing | work | 2 | 3 | on_site_execution | framing |  |  | 14 editor_rules.productivity CSV row 14 = 60 hrs @ crew 3 → ~2.5d; requires LVL on site (facts.md Trades). | 2026-07-20 | 2026-07-22 | 2026-07-20 | 2026-07-20 | 0 | not_started |  | framing.floor_system FS 0, procurement.lvl.arrived FS 0 |  |
| framing.exterior_walls | 15 | Frame exterior + interior 2×4 walls @ 16" O.C. + elevator shaft | framing | work | 3 | 3 | on_site_execution | framing |  |  | 15 editor_rules.productivity CSV row 15 balance ~86 hrs @ crew 3 → ~3.5d; includes elevator shaft framing folded into row 15 (breakdown.md silent omission #3). | 2026-07-22 | 2026-07-27 | 2026-07-22 | 2026-07-22 | 0 | not_started |  | framing.lvl_install FS 0 |  |
| framing.roof | 16 | Frame new 3/12 gable roof + tie-in to existing 6/12 (stick-frame, no trusses) | framing | work | 3 | 3 | on_site_execution | framing |  |  | 16 stick_frame_default_for_small_additions, dev_rules.4Q Rule 4Q + belief: stick-frame default for 789 SF footprint / 10 ft roof span, well under 800 SF / 24 ft thresholds (facts.md Trades). | 2026-07-27 | 2026-07-30 | 2026-07-27 | 2026-07-27 | 0 | not_started |  | framing.exterior_walls FS 0 |  |
| framing.roof_tie_in_discovery | 16 | Roof tie-in discovery buffer (3/12 → existing 6/12, valleys, chimney) | framing | work | 1 | 2 | on_site_execution | framing |  |  | 16 addition_rules.concealed_conditions plans.md Discrepancy #5 + breakdown.md silent omission #6: concealed roof tie-in seam; SS with framing.roof for discovery. | 2026-07-27 | 2026-07-28 | 2026-07-27 | 2026-09-25 | 43 | not_started |  | framing.roof SS 0 |  |
| roofing.sheathing | 16 | Install roof sheathing | roofing | work | 1 | 3 | on_site_execution | roofing |  |  | 16 editor_rules.productivity CSV row 16 = 96 hrs total roof framing + sheathing + roofing @ crew 3. | 2026-07-30 | 2026-07-31 | 2026-07-30 | 2026-07-30 | 0 | not_started |  | framing.roof FS 0 |  |
| roofing.underlayment | 16 | Install synthetic underlayment + drip edge + temporary dry-in | roofing | work | 1 | 2 | on_site_execution | roofing |  |  | 16 dev_rules.4I, dev_rules.4J Rule 4I/4J: roofing.underlayment gates MEPs + windows.install, NOT milestone.dried_in (facts.md Sequencing). | 2026-07-31 | 2026-08-03 | 2026-07-31 | 2026-07-31 | 0 | not_started |  | roofing.sheathing FS 0 |  |
| windows.install | 18 | Install windows + exterior door + WRB flashing | windows_doors | work | 2 | 2 | on_site_execution | windows_doors |  |  | 18 dev_rules.4I Rule 4I: windows install FS-after framing.roof, parallel with roofing.underlayment. CSV row 18 = 44 hrs / ~2d. | 2026-07-30 | 2026-08-03 | 2026-07-30 | 2026-07-30 | 0 | not_started |  | framing.roof FS 0, procurement.windows.arrived FS 0 | roofing.underlayment |
| milestone.dried_in | 16 | Milestone — dried-in | pm | milestone | 0 | 0 | on_site_execution | roofing |  |  | 16 dev_rules.4U Informational milestone for PM/PEP; MEPs still gate on roofing.underlayment+windows.install per Rule 4I/4J, not this bar. | 2026-08-03 | 2026-08-03 | 2026-08-03 | 2026-09-28 | 39 | not_started |  | roofing.underlayment FS 0, windows.install FS 0 |  |
| roofing.shingles | 16 | Install architectural shingles + flashing + ridge vent | roofing | work | 2 | 3 | on_site_execution | roofing |  |  | 16 editor_rules.productivity CSV row 16 shingle portion ~2d @ crew 3. | 2026-08-03 | 2026-08-05 | 2026-08-03 | 2026-09-16 | 31 | not_started |  | roofing.underlayment FS 0 |  |
| roofing.fascia_soffit_gutters | 17 | Fascia + vinyl soffit + seamless gutters | roofing | work | 2 | 2 | on_site_execution | roofing |  |  | 17 editor_rules.productivity Part of CSV row 17 exterior finishes (72 hrs total). | 2026-08-05 | 2026-08-07 | 2026-08-05 | 2026-09-18 | 31 | not_started |  | roofing.shingles FS 0 |  |
| plumbing.rough | 20 | Plumbing rough-in (supply/waste/vent, master bath, W/D relocate, vent stack through roof) | plumbing | work | 4 | 2 | on_site_execution | mep_rough |  |  | 20 plumbing_rough_min_duration, dev_rules.4I, dev_rules.4J Rule plumbing_rough_min_duration HARD FLOOR 4d × 2 crew (facts.md anomaly: CSV row 20 = 40 hrs / ~2.5d violates floor, overridden). No tank-set predecessor — existing WH stays (Rule 4H skip; confirmed.md q.tankless_wh_in_base_bid). | 2026-08-03 | 2026-08-07 | 2026-08-03 | 2026-08-03 | 0 | not_started |  | roofing.underlayment FS 0, windows.install FS 0 |  |
| electrical.rough | 19 | Electrical rough-in (100A subpanel, 12 recessed, 30A elevator circuit, GFCI/AFCI) | electrical | work | 4 | 2 | on_site_execution | mep_rough |  |  | 19 dev_rules.4G, editor_rules.productivity Rule 4G HVAC=mini-split → MEP order plumbing → electrical → mini-split line-set. CSV row 19 = 78 hrs @ crew 2 → ~5d combined rough+finish, ~4d rough portion. | 2026-08-07 | 2026-08-13 | 2026-08-07 | 2026-08-07 | 0 | not_started |  | plumbing.rough FS 0, procurement.panel.arrived FS 0 |  |
| hvac.minisplit_lineset_rough | 21 | HVAC mini-split line-set rough (in-wall run) | hvac | work | 0.5 | 1 | on_site_execution | mep_rough |  |  | 21 dev_rules.4G, editor_rules.hvac Rule 4G + editor_rules HVAC: mini-split line-set rough LAST in MEP order, 0.5d / 1 person. | 2026-08-13 | 2026-08-13 | 2026-08-13 | 2026-08-13 | 0 | not_started |  | electrical.rough FS 0, procurement.minisplit.arrived FS 0 |  |
| inspect.rough_bundled | general.inspections | Bundled rough inspection (framing + plumbing + electrical + HVAC, one inspector, one day) | inspector | inspection | 1 | 1 | on_site_execution | mep_rough |  | 1 | general.inspections dev_rules.4C Rule 4C: rough inspections BUNDLED — single inspector, single day, all trades simultaneously (NOT split per-trade). | 2026-08-14 | 2026-08-14 | 2026-08-14 | 2026-08-14 | 0 | not_started |  | hvac.minisplit_lineset_rough FS 0 |  |
| general.punch_buffer_rough | general.inspections | Punch buffer after rough inspection (fix + re-inspect if needed) | general | work | 2 | 2 | on_site_execution | mep_rough |  |  | general.inspections dev_rules.4D Rule 4D: 2-day punch buffer after rough inspection. | 2026-08-17 | 2026-08-18 | 2026-08-17 | 2026-08-17 | 0 | not_started |  | inspect.rough_bundled FS 0 |  |
| insulation.install | 22 | Insulation (R13 walls, R30 attic/roof, R30 floor) + air sealing | insulation | work | 2 | 2 | on_site_execution | insulation |  |  | 22 editor_rules.productivity CSV row 22 = 44 hrs @ crew 2 → ~2.5d; after rough sign-off + punch. | 2026-08-19 | 2026-08-20 | 2026-08-19 | 2026-08-19 | 0 | not_started |  | general.punch_buffer_rough FS 0 |  |
| inspect.insulation | general.inspections | Insulation inspection | inspector | inspection | 0.5 | 1 | on_site_execution | insulation |  | 1 | general.inspections editor_rules.tn_inspection_sequence TN inspection sequence: insulation inspection precedes drywall close-up. | 2026-08-21 | 2026-08-21 | 2026-08-21 | 2026-08-21 | 0 | not_started |  | insulation.install FS 0 |  |
| exterior.siding_trim | 17 | Vinyl siding + exterior trim (match existing; NO brick veneer) | siding | work | 4 | 2 | on_site_execution | exterior_finishes |  |  | 17 editor_rules.productivity CSV row 17 siding portion ~4d. Confirmed.md q.brick_veneer_addition_base: vinyl only, no brick veneer. | 2026-08-07 | 2026-08-13 | 2026-08-07 | 2026-09-22 | 31 | not_started |  | windows.install FS 0, roofing.fascia_soffit_gutters FS 0 | plumbing.rough, electrical.rough, insulation.install |
| drywall.hang_finish | 23 | Drywall hang + tape + Level 3 finish (addition + primary bedroom + basement storage — consolidated) | drywall | work | 10 | 3 | on_site_execution | drywall |  |  | 23 editor_rules.drywall_consolidation CSV row 23 = 159 hrs @ crew 3 → 9–11 working days consolidated per editor_rules (facts.md Trades). | 2026-08-21 | 2026-09-04 | 2026-08-21 | 2026-08-21 | 0 | not_started |  | inspect.insulation FS 0 |  |
| paint.phase_1 | 24 | Paint phase 1 — primer + ceilings (addition + primary bedroom + basement + hall bath patch) | paint | work | 2 | 2 | on_site_execution | interior_finishes |  |  | 24 dev_rules.4E, dev_rules.4F Rule 4E/4F: paint ALWAYS two phases; phase 1 = primer + ceilings after drywall. | 2026-09-04 | 2026-09-09 | 2026-09-04 | 2026-09-04 | 0 | not_started |  | drywall.hang_finish FS 0 |  |
| tile.master_bath | 25 | Master bath tile — waterproofing, wall tile, mosaic floor, niche + bench | tile | work | 5 | 2 | on_site_execution | master_bath_tile |  |  | 25 editor_rules.productivity CSV row 25 = 88 hrs @ crew 2 → ~5.5d; custom tile installation after paint phase 1. | 2026-09-09 | 2026-09-16 | 2026-09-09 | 2026-09-09 | 0 | not_started |  | paint.phase_1 FS 0, procurement.tile.arrived FS 0 |  |
| flooring.install | 24 | LVT flooring install (addition + primary bedroom) | flooring | work | 3 | 2 | on_site_execution | interior_finishes |  |  | 24 editor_rules.productivity, dev_rules.4L Rule 4L: flooring precedes trim (NOT paint → trim). CSV row 24 flooring portion ~3d. | 2026-09-09 | 2026-09-14 | 2026-09-09 | 2026-09-10 | 1 | not_started |  | paint.phase_1 FS 0, procurement.lvt.arrived FS 0 | tile.master_bath |
| electrical.finish | 19 | Electrical finish (trim-out: fixtures, devices, dimmers, panel schedule) | electrical | work | 2 | 2 | on_site_execution | interior_finishes |  |  | 19 dev_rules.4L Rule 4L: electrical.finish → paint_1 chain — trim-out happens after paint_1 primer coat before phase 2 wall finish. | 2026-09-09 | 2026-09-11 | 2026-09-09 | 2026-09-15 | 4 | not_started |  | paint.phase_1 FS 0 |  |
| plumbing.finish | 20 | Plumbing finish (set vanity, faucets, toilet, shower valve trim) | plumbing | work | 2 | 2 | on_site_execution | interior_finishes |  |  | 20 editor_rules.productivity Plumbing trim-out after tile + flooring; sets fixtures. 72" double vanity + 2 faucets + toilet + custom shower valve. | 2026-09-16 | 2026-09-18 | 2026-09-16 | 2026-09-16 | 0 | not_started |  | tile.master_bath FS 0, flooring.install FS 0 |  |
| hvac.minisplit_install | 21 | HVAC mini-split install (indoor head + outdoor unit + commissioning) | hvac | work | 1 | 1 | on_site_execution | interior_finishes |  |  | 21 dev_rules.4N, editor_rules.hvac Rule 4N: at interior-finish phase, mini-split install serializes AFTER electrical.finish to hold 2-trade interior cap. | 2026-09-11 | 2026-09-14 | 2026-09-11 | 2026-09-17 | 4 | not_started |  | electrical.finish FS 0 |  |
| trim.install | 24 | Interior trim + baseboard + casing + interior doors (2 pocket + pre-hung panels) | trim_carpentry | work | 3 | 2 | on_site_execution | interior_finishes |  |  | 24 dev_rules.4L, editor_rules.productivity Rule 4L: trim after flooring. CSV row 24 trim + doors portion ~3d. Doors: 2 pocket + pre-hung remainder per confirmed.md q.interior_doors_pocket_vs_panel. | 2026-09-14 | 2026-09-17 | 2026-09-14 | 2026-09-15 | 1 | not_started |  | flooring.install FS 0 |  |
| paint.phase_2 | 24 | Paint phase 2 — wall finish coats + trim paint + touch-ups | paint | work | 2 | 2 | on_site_execution | interior_finishes |  |  | 24 dev_rules.4E, dev_rules.4F Rule 4E/4F: paint phase 2 predecessors include EVERY finish trade (trim, plumbing, HVAC, tile). | 2026-09-18 | 2026-09-22 | 2026-09-18 | 2026-09-18 | 0 | not_started |  | trim.install FS 0, plumbing.finish FS 0, hvac.minisplit_install FS 0, tile.master_bath FS 0 |  |
| hall_bath.window_infill_patch | 26 | Hall bath window infill + insulation + drywall + repaint (retrofit component) | general | work | 2 | 2 | on_site_execution | hall_bath_mod |  |  | 26 dev_rules.4V Rule 4V two-bucket: retrofit window infill/patch/repaint runs later in hall_bath_mod component (separate from Day-1 customer early item). | 2026-09-04 | 2026-09-09 | 2026-09-04 | 2026-09-18 | 9 | not_started |  | drywall.hang_finish FS 0 | paint.phase_1 |
| closeout.punch_final_clean | 26 | Punch list + final clean + final walkthrough | cleanup | work | 3 | 2 | closeout | closeout |  |  | 26 editor_rules.closeout Scope L156-159 closeout: debris removal, final clean, walkthrough. | 2026-09-22 | 2026-09-25 | 2026-09-22 | 2026-09-22 | 0 | not_started |  | paint.phase_2 FS 0, hall_bath.window_infill_patch FS 0 |  |
| inspect.final | general.inspections | Final inspection (building + electrical + plumbing + HVAC) | inspector | inspection | 1 | 1 | closeout | closeout |  | 1 | general.inspections editor_rules.tn_inspection_sequence TN inspection sequence: final inspection after punch/clean. | 2026-09-25 | 2026-09-28 | 2026-09-25 | 2026-09-25 | 0 | not_started |  | closeout.punch_final_clean FS 0 |  |
| milestone.substantial_completion | general.milestones | Milestone — substantial completion | pm | milestone | 0 | 0 | closeout | closeout |  |  | general.milestones editor_rules.milestones Terminal milestone triggering final invoice + balance due (scope.md L198-203). | 2026-09-28 | 2026-09-28 | 2026-09-28 | 2026-09-28 | 0 | not_started |  | inspect.final FS 0 |  |
