| id | section_id | name | trade | kind | duration_days | crew_size | pre_construction_offset_working_days | lead_up_working_days | phase_id | component_id | derived_from | scheduled_start | scheduled_end | earliest_start | latest_start | float_days | status | depends_on | lead_time_days | can_overlap_with |
| --- | --- | --- | --- | --- | --- | --- | --- | --- | --- | --- | --- | --- | --- | --- | --- | --- | --- | --- | --- | --- |
| permit.building | general_conditions | Building permit application + issuance | pm | work | 1 | 1 | 15 | 2 | pre_construction | preconstruction_admin | general_conditions dev_rules.4A Permit is 1d work task with 15-working-day pre-con offset per dev_rules §4A (NOT kind:lead_time). | 2026-06-10 | 2026-06-10 | 2026-06-10 | 2026-07-06 | 18 | not_started |  |  |  |
| prep.tdec_septic_inspection | general_conditions | TDEC septic inspection (capacity confirmation only) | pm | work | 1 | 1 | 15 | 2 | pre_construction | preconstruction_admin | general_conditions job_types/addition/rules/tdec_septic_permit_offset.md, confirmed.md:q.sewer_septic_direction Existing septic stays per PM round 1; TDEC inspection only, no install. tdec_septic_permit_offset does NOT fire for install work — inspection-only pre-con task. | 2026-06-10 | 2026-06-10 | 2026-06-10 | 2026-10-02 | 81 | not_started |  |  |  |
| prep.amperage_check | general_conditions | Existing service amperage check (before panel order) | electrical | work | 0.5 | 1 | 15 | 2 | pre_construction | preconstruction_admin | general_conditions _company/rules/service_amperage_check.md Adding 100A subpanel + mini-split — service_amperage_check rule requires prep.amperage_check in pre-con before panel order + rough. | 2026-06-10 | 2026-06-10 | 2026-06-10 | 2026-07-31 | 37 | not_started |  |  |  |
| checkpoint.selections_finalized | general_conditions | Selections finalized (finishes, tile, LVT, vanity, fixtures) | pm | milestone | 0 | 0 | 15 | 5 | pre_construction | preconstruction_admin | general_conditions dev_rules.4P, _company/rules/editor_rules.md Rule 4P — selections_finalized checkpoint mandatory in pre_construction, 15-day offset, 5-day lead-up. Downstream consumers: tile order, vanity, LVT, doors. | 2026-06-10 | 2026-06-10 | 2026-06-10 | 2026-07-13 | 23.5 | not_started |  |  |  |
| checkpoint.equipment_confirmed | general_conditions | Equipment/spec sheets confirmed (mini-split, subpanel, exterior door, vanity) | pm | milestone | 0 | 0 | 10 | 5 | pre_construction | preconstruction_admin | general_conditions dev_rules.4P Rule 4P — equipment_confirmed is a SEPARATE checkpoint from selections_finalized, 10-day offset. Downstream: mini-split order, subpanel order, exterior door order. | 2026-06-17 | 2026-06-17 | 2026-06-17 | 2026-07-13 | 18.5 | not_started |  |  |  |
| procurement.windows.order | windows | Order (2) new windows (3'×3' D.H. + 3'×1' transom) | pm | procurement | 0.5 | 1 |  |  | procurement | procurement_long_leads | windows dev_rules.4R, confirmed.md:q.window_count_and_relocation Rule 4R 3-task procurement pattern. PM confirmed 2 new windows (relocate 2 existing separately). | 2026-07-20 | 2026-07-20 | 2026-07-20 | 2026-07-20 | 0 | not_started | checkpoint.selections_finalized FS 0 | 0 |  |
| procurement.windows.wait | windows | Window lead-time wait (stock ~14–21 cal-d) | general | lead_time | 0 | 0 |  |  | procurement | procurement_long_leads | windows dev_rules.4R, _company/rules/editor_rules.md Stock window lead 14–21 cal-d per editor_rules; mid-range 18d. | 2026-07-21 | 2026-08-06 | 2026-07-21 | 2026-07-21 | 0 | not_started | procurement.windows.order FS 0 | 18 |  |
| procurement.windows.arrived | windows | Windows on-site | general | milestone | 0 | 0 |  |  | procurement | procurement_long_leads | windows dev_rules.4R Completes 3-task procurement chain; gates windows.install. | 2026-08-07 | 2026-08-07 | 2026-08-07 | 2026-08-07 | 0 | not_started | procurement.windows.wait FS 0 |  |  |
| procurement.lvl.order | structural | Order 3-ply 14" LVL (~15'-6" span) | pm | procurement | 0.5 | 1 |  |  | procurement | procurement_long_leads | structural dev_rules.4R LVL is long-lead; 3-task pattern. | 2026-07-07 | 2026-07-07 | 2026-07-07 | 2026-07-07 | 0 | not_started |  | 0 |  |
| procurement.lvl.wait | structural | LVL lead-time wait (7–14 cal-d) | general | lead_time | 0 | 0 |  |  | procurement | procurement_long_leads | structural dev_rules.4R Editor_rules LVL supplier ~7–14 cal-d. | 2026-07-08 | 2026-07-17 | 2026-07-08 | 2026-07-08 | 0 | not_started | procurement.lvl.order FS 0 | 10 |  |
| procurement.lvl.arrived | structural | LVL on-site | general | milestone | 0 | 0 |  |  | procurement | procurement_long_leads | structural dev_rules.4R Gates structural.lvl_install. | 2026-07-20 | 2026-07-20 | 2026-07-20 | 2026-07-20 | 0 | not_started | procurement.lvl.wait FS 0 |  |  |
| procurement.mini_split.order | hvac | Order ductless mini-split (~$2,500) | pm | procurement | 0.5 | 1 |  |  | procurement | procurement_long_leads | hvac dev_rules.4R 3-task pattern; equipment_confirmed gates mini-split spec sheet. | 2026-09-10 | 2026-09-10 | 2026-09-10 | 2026-09-10 | 0 | not_started | checkpoint.equipment_confirmed FS 0 | 0 |  |
| procurement.mini_split.wait | hvac | Mini-split lead-time wait (7–14 cal-d) | general | lead_time | 0 | 0 |  |  | procurement | procurement_long_leads | hvac dev_rules.4R Editor_rules mini-split 7–14 cal-d. | 2026-09-11 | 2026-09-22 | 2026-09-11 | 2026-09-11 | 0 | not_started | procurement.mini_split.order FS 0 | 10 |  |
| procurement.mini_split.arrived | hvac | Mini-split on-site | general | milestone | 0 | 0 |  |  | procurement | procurement_long_leads | hvac dev_rules.4R Gates hvac.mini_split_install. | 2026-09-23 | 2026-09-23 | 2026-09-23 | 2026-09-23 | 0 | not_started | procurement.mini_split.wait FS 0 |  |  |
| procurement.subpanel.order | electrical | Order 100A subpanel | pm | procurement | 0.5 | 1 |  |  | procurement | procurement_long_leads | electrical dev_rules.4R, _company/rules/service_amperage_check.md 3-task pattern; amperage check must precede panel order per service_amperage_check. | 2026-07-31 | 2026-07-31 | 2026-07-31 | 2026-07-31 | 0 | not_started | checkpoint.equipment_confirmed FS 0, prep.amperage_check FS 0 | 0 |  |
| procurement.subpanel.wait | electrical | Subpanel lead-time wait (7–14 cal-d) | general | lead_time | 0 | 0 |  |  | procurement | procurement_long_leads | electrical dev_rules.4R Editor_rules subpanel 7–14 cal-d. | 2026-08-03 | 2026-08-12 | 2026-08-03 | 2026-08-03 | 0 | not_started | procurement.subpanel.order FS 0 | 10 |  |
| procurement.subpanel.arrived | electrical | Subpanel on-site | general | milestone | 0 | 0 |  |  | procurement | procurement_long_leads | electrical dev_rules.4R Gates electrical.rough. | 2026-08-13 | 2026-08-13 | 2026-08-13 | 2026-08-13 | 0 | not_started | procurement.subpanel.wait FS 0 |  |  |
| procurement.tile.order | master_bath | Order master bath tile (wall + mosaic floor) + waterproofing | pm | procurement | 0.5 | 1 |  |  | procurement | procurement_long_leads | master_bath dev_rules.4R Tile can be 14–21 cal-d if custom, 7 if stock; treat as long-lead. | 2026-08-21 | 2026-08-21 | 2026-08-21 | 2026-08-21 | 0 | not_started | checkpoint.selections_finalized FS 0 | 0 |  |
| procurement.tile.wait | master_bath | Tile lead-time wait (14 cal-d) | general | lead_time | 0 | 0 |  |  | procurement | procurement_long_leads | master_bath dev_rules.4R Editor_rules tile lead. | 2026-08-24 | 2026-09-04 | 2026-08-24 | 2026-08-24 | 0 | not_started | procurement.tile.order FS 0 | 14 |  |
| procurement.tile.arrived | master_bath | Tile on-site | general | milestone | 0 | 0 |  |  | procurement | procurement_long_leads | master_bath dev_rules.4R Gates master_bath.tile_shower. | 2026-09-08 | 2026-09-08 | 2026-09-08 | 2026-09-08 | 0 | not_started | procurement.tile.wait FS 0 |  |  |
| procurement.doors.order | interior_finish | Order 3× pre-hung panel doors + 1× pocket door frame + 1 exterior door | pm | procurement | 0.5 | 1 |  |  | procurement | procurement_long_leads | interior_finish dev_rules.4R, confirmed.md:q.interior_doors_pocket_vs_panel PM confirmed 3 panel + 1 pocket; standard 7–14 cal-d. Pocket-door frame needed during framing. | 2026-07-13 | 2026-07-13 | 2026-07-13 | 2026-07-13 | 0 | not_started | checkpoint.selections_finalized FS 0, checkpoint.equipment_confirmed FS 0 | 0 |  |
| procurement.doors.wait | interior_finish | Door lead-time wait (10 cal-d) | general | lead_time | 0 | 0 |  |  | procurement | procurement_long_leads | interior_finish dev_rules.4R Editor_rules doors 7–14 cal-d. | 2026-07-14 | 2026-07-23 | 2026-07-14 | 2026-07-14 | 0 | not_started | procurement.doors.order FS 0 | 10 |  |
| procurement.doors.arrived | interior_finish | Doors on-site (pocket frame gates framing) | general | milestone | 0 | 0 |  |  | procurement | procurement_long_leads | interior_finish dev_rules.4R, confirmed.md:q.interior_doors_pocket_vs_panel Pocket door frame installed during framing per PM answer; hard gate. | 2026-07-24 | 2026-07-24 | 2026-07-24 | 2026-07-24 | 0 | not_started | procurement.doors.wait FS 0 |  |  |
| early.acrylic_shower_swap | hall_bath | Hall bath acrylic shower swap (Day 1, customer-early) | plumbing | work | 1 | 2 |  |  | on_site_execution | customer_early_items | hall_bath dev_rules.4V, confirmed.md:q.hall_bath_acrylic_shower_timing Rule 4V — customer-requested early item; Day 1, off critical path, SEPARATE bucket from mid-job hall bath retrofit. PM confirmed customer needs working shower. | 2026-07-01 | 2026-07-01 | 2026-07-01 | 2026-10-02 | 66 | not_started |  |  |  |
| prep.relocate_heat_pump | site_prep | Relocate existing heat pump + electrical disconnect (before demo) | hvac | work | 1 | 2 |  |  | on_site_execution | prep_work_before_demo | site_prep job_types/addition/rules/addition_rules.md dev_rules §4K: heat pump relocation in prep_work_before_demo, ≥3 working days before demo. | 2026-07-01 | 2026-07-01 | 2026-07-01 | 2026-07-01 | 0 | not_started |  |  |  |
| site.demo | selective_demo | Selective demo — sawcut walkway, remove railroad ties, clear site | demo | work | 2 | 3 |  |  | on_site_execution | site_prep | selective_demo _company/rules/editor_rules.md Site work per breakdown row 2 (56 labor hrs) — 2 crew-days × 3 crew. Follows heat pump relocation by 3d per §4K. | 2026-07-07 | 2026-07-08 | 2026-07-07 | 2026-07-07 | 0 | not_started | permit.building FS 0, prep.relocate_heat_pump FS 3 |  |  |
| foundation.excavate | excavation_foundation | Excavate for footings + slab | excavation | work | 2 | 2 |  |  | on_site_execution | foundation | excavation_foundation Row 3 breakdown 78 hrs across excavate + foundation; ~2d excavate. | 2026-07-09 | 2026-07-10 | 2026-07-09 | 2026-07-09 | 0 | not_started | site.demo FS 0 |  |  |
| foundation.footings_slab_pour | excavation_foundation | Monolithic pour — 12×12 perimeter footings + 4" slab (gravel/VB/rebar) | concrete | work | 2 | 3 |  |  | on_site_execution | foundation | excavation_foundation dev_rules.4B Rule 4B — monolithic foundation default; footings + slab same pour (scope confirms slab-on-grade, no CMU/full-height wall). | 2026-07-13 | 2026-07-14 | 2026-07-13 | 2026-07-13 | 0 | not_started | foundation.excavate FS 0 |  |  |
| inspect.foundation | excavation_foundation | Foundation inspection (pre-pour footing / post-slab) | inspector | inspection | 0.5 | 1 |  | 1 | on_site_execution | foundation | excavation_foundation _company/rules/editor_rules.md TN inspection prior to pour; SS overlap coordinates with pour day. | 2026-07-13 | 2026-07-13 | 2026-07-13 | 2026-10-02 | 58.5 | not_started | foundation.footings_slab_pour SS 0 |  |  |
| structural.lvl_install | structural_mods | LVL beam install + temporary shoring (open existing bearing wall) | framing | work | 2 | 3 |  |  | on_site_execution | structural | structural_mods Row 4 breakdown 60 hrs; LVL 3-ply 14" @ ~15'-6" per scope. 3-day lag after slab pour for cure. | 2026-07-20 | 2026-07-21 | 2026-07-20 | 2026-07-20 | 0 | not_started | foundation.footings_slab_pour FS 3, procurement.lvl.arrived FS 0 |  |  |
| framing.floor_system | framing | Frame floor system + subfloor (glued & fastened) | framing | work | 2 | 3 |  |  | on_site_execution | framing | framing Row 5 breakdown 146 hrs total framing; floor system first sub-phase. | 2026-07-22 | 2026-07-23 | 2026-07-22 | 2026-07-22 | 0 | not_started | structural.lvl_install FS 0 |  |  |
| framing.walls | framing | Frame exterior + interior walls (both levels), incl. elevator shaft + pocket door frame | framing | work | 5 | 3 |  |  | on_site_execution | framing | framing job_types/addition/beliefs/stick_frame_default_for_small_additions.md, confirmed.md:q.interior_doors_pocket_vs_panel Stick-frame default (295 sqft/level, 10ft span). Pocket door frame rough-in during framing per PM answer. | 2026-07-24 | 2026-07-30 | 2026-07-24 | 2026-07-24 | 0 | not_started | framing.floor_system FS 0, procurement.doors.arrived FS 0 |  |  |
| framing.tie_in_discovery | framing | Retrofit tie-in discovery + framing (chimney, 3/12↔6/12, window/door relocation) | framing | work | 2 | 3 |  |  | on_site_execution | framing | framing job_types/addition/rules/retrofit_tie_in_discovery.md Rule fires: existing chimney inside new roof envelope + 3/12↔6/12 tie-in + 2 relocated windows + relocated door. SS+2 overlap with walls. | 2026-07-28 | 2026-07-29 | 2026-07-28 | 2026-07-29 | 1 | not_started | framing.walls SS 2 |  |  |
| framing.roof | roofing_framing | Frame new gable roof (stick, 3/12) + tie-in to existing 6/12 | framing | work | 3 | 3 |  |  | on_site_execution | framing | roofing_framing dev_rules.4Q, job_types/addition/beliefs/stick_frame_default_for_small_additions.md Rule 4Q — stick-frame default (no procurement.trusses). Row 6 breakdown 96 hrs total roof; framing ~3d of it. | 2026-07-31 | 2026-08-04 | 2026-07-31 | 2026-07-31 | 0 | not_started | framing.walls FS 0, framing.tie_in_discovery FS 0 |  |  |
| roofing.sheathing | roofing | Roof sheathing + WRB on walls | framing | work | 1 | 3 |  |  | on_site_execution | roof_and_exterior | roofing Sheathing bridges framing → roofing / siding. | 2026-08-05 | 2026-08-05 | 2026-08-05 | 2026-08-05 | 0 | not_started | framing.roof FS 0 |  |  |
| roofing.underlayment | roofing | Synthetic underlayment + drip edge + temporary dry-in | roofing | work | 1 | 2 |  |  | on_site_execution | roof_and_exterior | roofing dev_rules.4I, job_types/addition/rules/siding_starts_at_underlayment.md Rule 4I/4J: windows install + MEPs gated on roofing.underlayment (not milestone.dried_in). siding_starts_at_underlayment: siding can start here too. | 2026-08-06 | 2026-08-06 | 2026-08-06 | 2026-08-06 | 0 | not_started | roofing.sheathing FS 0 |  |  |
| windows.install | windows_doors | Install 2 new windows + relocate 2 existing + install exterior door | windows_doors | work | 2 | 2 |  |  | on_site_execution | roof_and_exterior | windows_doors dev_rules.4I, confirmed.md:q.window_count_and_relocation Rule 4I — windows.install after roofing.underlayment. +1d added for window relocation labor per PM. | 2026-08-07 | 2026-08-10 | 2026-08-07 | 2026-08-07 | 0 | not_started | roofing.underlayment FS 0, procurement.windows.arrived FS 0 |  |  |
| roofing.shingles | roofing | Architectural shingles + flashing + chimney cricket + ridge vent | roofing | work | 2 | 2 |  |  | on_site_execution | roof_and_exterior | roofing _company/beliefs/roof_and_siding_same_crew.md Same 2–3 person crew handles roof + siding; serialize by default. Multi-valley + chimney per plans. | 2026-08-07 | 2026-08-10 | 2026-08-07 | 2026-09-29 | 36 | not_started | roofing.underlayment FS 0 |  | siding.install, exterior.trim_gutters |
| siding.install | exterior_finishes | Vinyl lap siding — ALL exterior (no brick veneer) | siding | work | 3 | 2 |  |  | on_site_execution | roof_and_exterior | exterior_finishes confirmed.md:q.brick_veneer_scope, job_types/addition/rules/siding_starts_at_underlayment.md, _company/beliefs/roof_and_siding_same_crew.md PM confirmed all vinyl lap siding (brick veneer OUT). Same crew as roofing → serialize. | 2026-08-11 | 2026-08-13 | 2026-08-11 | 2026-10-01 | 36 | not_started | windows.install FS 0, roofing.shingles FS 0 |  | exterior.trim_gutters |
| exterior.trim_gutters | exterior_finishes | Fascia, vinyl soffit, seamless gutters | siding | work | 1 | 2 |  |  | on_site_execution | roof_and_exterior | exterior_finishes Row 7 breakdown 72 hrs total exterior — trim/gutter tail overlaps with siding tail. | 2026-08-12 | 2026-08-12 | 2026-08-12 | 2026-10-02 | 36 | not_started | siding.install SS 1 |  |  |
| milestone.dried_in | roofing | Dried-in milestone (roof + windows + WRB complete) | pm | milestone | 0 | 0 |  |  | on_site_execution | roof_and_exterior | roofing Informational milestone; MEPs gated on underlayment+windows per §4I not this. | 2026-08-11 | 2026-08-11 | 2026-08-11 | 2026-10-05 | 38 | not_started | windows.install FS 0, roofing.shingles FS 0 |  |  |
| plumbing.rough | plumbing | Plumbing rough-in (supply/waste/vent, master bath, W/D relocate, gas WH vent ext.) | plumbing | work | 4 | 2 |  |  | on_site_execution | mep_rough | plumbing dev_rules.4G, confirmed.md:q.plumbing_rough_labor_floor, confirmed.md:q.tankless_water_heater_election Rule 4G mini-split HVAC → MEP order plumbing → electrical → mini-split. Repriced to hard floor: 4d × 2 crew = 64 hrs per plumbing_rough_min_duration. NO tank_set (existing gas WH stays per rule 4H; only vent extension). | 2026-08-11 | 2026-08-14 | 2026-08-11 | 2026-08-11 | 0 | not_started | roofing.underlayment FS 0, windows.install FS 0 |  |  |
| electrical.rough | electrical | Electrical rough — subpanel install, receptacles, lighting, 30A elevator circuit | electrical | work | 3 | 2 |  |  | on_site_execution | mep_rough | electrical dev_rules.4G, dev_rules.4N §4G: mini-split HVAC → plumbing → electrical → mini-split. §4N: stagger by 2 days SS to keep ≤2 trades concurrent. | 2026-08-13 | 2026-08-17 | 2026-08-13 | 2026-08-13 | 0 | not_started | plumbing.rough SS 2, procurement.subpanel.arrived FS 0 |  | plumbing.rough |
| hvac.mini_split_rough | hvac | Mini-split rough (line-set, condensate) | hvac | work | 0.5 | 1 |  |  | on_site_execution | mep_rough | hvac dev_rules.4G §4G mini-split rough = 0.5d/1 person, LAST in MEP rough sequence. | 2026-08-18 | 2026-08-18 | 2026-08-18 | 2026-08-18 | 0 | not_started | electrical.rough FS 0 |  |  |
| inspect.rough_bundled | inspections | Bundled rough inspection (framing + plumbing + electrical + HVAC) | inspector | inspection | 1 | 1 |  | 1 | on_site_execution | mep_rough | inspections dev_rules.4C Rule 4C — rough inspections BUNDLED (one inspector, one day, all trades). | 2026-08-18 | 2026-08-19 | 2026-08-18 | 2026-08-18 | 0 | not_started | plumbing.rough FS 0, electrical.rough FS 0, hvac.mini_split_rough FS 0, framing.tie_in_discovery FS 0 |  |  |
| punch.rough_buffer | inspections | Post-rough punch buffer | general | work | 2 | 1 |  |  | on_site_execution | mep_rough | inspections dev_rules.4D Rule 4D — 2-day punch buffer after rough inspection. | 2026-08-19 | 2026-08-21 | 2026-08-19 | 2026-08-19 | 0 | not_started | inspect.rough_bundled FS 0 |  |  |
| insulation.install | insulation | Insulation — R13 walls, R30 attic, R30 floor + air seal | insulation | work | 2 | 2 |  |  | on_site_execution | insulation_drywall | insulation _company/rules/editor_rules.md Row 12 breakdown 44 hrs. Material staged same day as insulation inspection per editor rules. | 2026-08-21 | 2026-08-25 | 2026-08-21 | 2026-08-21 | 0 | not_started | punch.rough_buffer FS 0 |  |  |
| inspect.insulation | inspections | Insulation inspection | inspector | inspection | 0.5 | 1 |  | 1 | on_site_execution | insulation_drywall | inspections _company/beliefs/drywall_soft_schedule.md Drywall soft-schedule: drywall crew committed only after insulation inspection is calendared. | 2026-08-25 | 2026-08-25 | 2026-08-25 | 2026-08-25 | 0 | not_started | insulation.install FS 0 |  |  |
| drywall.hang_finish | drywall | Drywall hang + 3-coat compound + sand to L3 (addition + primary bedroom + hall bath) | drywall | work | 6 | 3 |  |  | on_site_execution | insulation_drywall | drywall _company/beliefs/drywall_soft_schedule.md Row 13 breakdown 159 hrs; ~6d × 3 crew. L3 finish + primer prep per scope. | 2026-08-26 | 2026-09-02 | 2026-08-26 | 2026-08-26 | 0 | not_started | inspect.insulation FS 0 |  |  |
| paint.phase_1 | paint | Paint phase 1 — primer + ceilings | paint | work | 2 | 2 |  |  | on_site_execution | interior_finishes | paint dev_rules.4E Rule 4E/4F — paint ALWAYS two phases. Phase 1 = primer + ceiling after drywall. | 2026-09-03 | 2026-09-04 | 2026-09-03 | 2026-09-03 | 0 | not_started | drywall.hang_finish FS 0 |  |  |
| master_bath.tile_shower | master_bath | Master bath custom tile shower (waterproof, wall tile, mosaic floor, niche, bench) | tile | work | 4 | 2 |  |  | on_site_execution | master_bath | master_bath Row 15 breakdown 88 hrs. Tile after paint_1 so ceilings/primer set; before flooring. | 2026-09-08 | 2026-09-11 | 2026-09-08 | 2026-09-08 | 0 | not_started | paint.phase_1 FS 0, procurement.tile.arrived FS 0 |  |  |
| flooring.lvt | flooring | LVT flooring throughout ($3/sqft) | flooring | work | 2 | 2 |  |  | on_site_execution | interior_finishes | flooring dev_rules.4L Rule 4L — flooring precedes trim (NOT paint→trim). | 2026-09-14 | 2026-09-15 | 2026-09-14 | 2026-09-14 | 0 | not_started | paint.phase_1 FS 0, master_bath.tile_shower FS 0 |  |  |
| trim.install | interior_finish | Trim carpentry — 5-1/4" base + 2-1/4" casing + hang doors (3 panel + 1 pocket) | trim_carpentry | work | 3 | 2 |  |  | on_site_execution | interior_finishes | interior_finish dev_rules.4L, confirmed.md:q.interior_doors_pocket_vs_panel Rule 4L — flooring → trim. Row 14 162 hrs across trim + paint2. | 2026-09-16 | 2026-09-18 | 2026-09-16 | 2026-09-16 | 0 | not_started | flooring.lvt FS 0, procurement.doors.arrived FS 0 |  |  |
| electrical.finish | electrical | Electrical finish (devices, recessed lights ~12, vanity lights, fan/light, GFCI/AFCI) | electrical | work | 2 | 2 |  |  | on_site_execution | interior_finishes | electrical dev_rules.4L Rule 4L — electrical finish before paint_1... wait, actually 4L says electrical finish → paint_1. Here electrical finish runs after trim but BEFORE paint_2 so paint_2 covers device cutouts. | 2026-09-21 | 2026-09-22 | 2026-09-21 | 2026-09-21 | 0 | not_started | trim.install FS 0 |  |  |
| plumbing.finish | plumbing | Plumbing finish (72" double vanity, 2 faucets, commode, shower valve trim) | plumbing | work | 2 | 2 |  |  | on_site_execution | interior_finishes | plumbing Vanity, faucets, commode, shower trim after tile + trim. | 2026-09-21 | 2026-09-22 | 2026-09-21 | 2026-09-22 | 1 | not_started | trim.install FS 0, master_bath.tile_shower FS 0 |  | electrical.finish |
| hvac.mini_split_install | hvac | Mini-split install (head + condenser set + commissioning) | hvac | work | 1 | 1 |  |  | on_site_execution | interior_finishes | hvac dev_rules.4G §4G mini-split install = 1d/1 person, after electrical finish. | 2026-09-23 | 2026-09-23 | 2026-09-23 | 2026-09-23 | 0 | not_started | electrical.finish FS 0, procurement.mini_split.arrived FS 0 |  |  |
| hall_bath.finish | hall_bath | Hall bath finish — remove window/infill, insulate, drywall patch, PVC trim, repaint | general | work | 2 | 2 |  |  | on_site_execution | hall_bath_finish | hall_bath dev_rules.4V Rule 4V two-bucket: acrylic swap ran Day 1 (early), remainder mid-job here. Reuses valve/trim installed on Day 1. | 2026-09-08 | 2026-09-09 | 2026-09-08 | 2026-09-22 | 10 | not_started | paint.phase_1 FS 0 |  | master_bath.tile_shower, flooring.lvt |
| paint.phase_2 | paint | Paint phase 2 — wall finish coats (2 coats) + trim touch-up | paint | work | 3 | 2 |  |  | on_site_execution | interior_finishes | paint dev_rules.4E, dev_rules.4F Rule 4E/4F — paint_2 predecessors MUST include EVERY finish trade (trim, elec finish, plumbing finish, hvac install, tile, hall bath finish). | 2026-09-24 | 2026-09-28 | 2026-09-24 | 2026-09-24 | 0 | not_started | trim.install FS 0, electrical.finish FS 0, plumbing.finish FS 0, hvac.mini_split_install FS 0, hall_bath.finish FS 0, master_bath.tile_shower FS 0 |  |  |
| inspect.final | closeout | Final inspection (building + electrical + plumbing + HVAC) | inspector | inspection | 1 | 1 |  | 1 | closeout | closeout_component | closeout _company/rules/editor_rules.md TN final inspections bundled per editor rules. | 2026-09-29 | 2026-09-29 | 2026-09-29 | 2026-09-29 | 0 | not_started | paint.phase_2 FS 0 |  |  |
| punch.closeout | closeout | Punch list + final cleaning + customer walkthrough | general | work | 3 | 2 |  |  | closeout | closeout_component | closeout job_types/addition/rules/addition_rules.md Addition playbook — Will's walkthrough + final clean + punch. | 2026-09-30 | 2026-10-02 | 2026-09-30 | 2026-09-30 | 0 | not_started | inspect.final FS 0 |  |  |
| milestone.substantial_completion | closeout | Substantial completion | pm | milestone | 0 | 0 |  |  | closeout | closeout_component | closeout Final marker; balance due per scope terms. | 2026-10-05 | 2026-10-05 | 2026-10-05 | 2026-10-05 | 0 | not_started | punch.closeout FS 0 |  |  |
