| id | section_id | name | trade | kind | duration_days | crew_size | phase_id | component_id | pre_construction_offset_working_days | lead_up_working_days | derived_from | scheduled_start | scheduled_end | earliest_start | latest_start | float_days | status | depends_on | lead_time_days | can_overlap_with |
| --- | --- | --- | --- | --- | --- | --- | --- | --- | --- | --- | --- | --- | --- | --- | --- | --- | --- | --- | --- | --- |
| permit.building | pre_construction | Pull building permit (walk-in) | pm | work | 1 | 1 | pre_construction | permits_checkpoints | 15 | 2 | pre_construction dev_rules:4A Rule 4A: permit is 1-day walk-in `work` task with 15 working-day pre-construction offset. Not lead_time. | 2026-06-11 | 2026-06-11 | 2026-06-11 | 2026-07-01 | 14 | not_started |  |  |  |
| permit.tdec_septic | pre_construction | TDEC septic inspection (existing septic — inspection only) | pm | work | 1 | 1 | pre_construction | septic_service_verification | 30 | 2 | pre_construction job_types/addition/rules/tdec_septic_permit_offset PM confirmed (round 1 q.septic_direction): keep existing septic, TDEC inspection only. Job-type rule tdec_septic_permit_offset requires 30 working-day pre-construction offset. | 2026-05-20 | 2026-05-20 | 2026-05-20 | 2026-09-24 | 89.5 | not_started |  |  |  |
| prep.amperage_check | pre_construction | Verify existing main service supports new 100A subpanel | electrical | work | 0.5 | 1 | pre_construction | septic_service_verification | 20 | 1 | pre_construction _company/rules/service_amperage_check Scope assumes existing service supports new 100A subpanel; rule service_amperage_check requires verification BEFORE panel procurement + electrical rough. | 2026-06-04 | 2026-06-04 | 2026-06-04 | 2026-07-28 | 38 | not_started |  |  |  |
| checkpoint.selections_finalized | pre_construction | Selections finalized checkpoint | pm | milestone | 0 | 1 | pre_construction | permits_checkpoints | 15 | 5 | pre_construction dev_rules:4P Rule 4P mandatory: selections_finalized locked 3 weeks (15 working days) before on-site start; anchors all finish-material procurement. | 2026-06-11 | 2026-06-11 | 2026-06-11 | 2026-07-06 | 17.5 | not_started |  |  |  |
| checkpoint.equipment_confirmed | pre_construction | Equipment/appliance confirmed checkpoint (mini-split, vanity, exterior door, panel) | pm | milestone | 0 | 1 | pre_construction | permits_checkpoints | 10 | 3 | pre_construction dev_rules:4P Rule 4P: equipment_confirmed is SEPARATE from selections_finalized; gates HVAC equipment, vanity, exterior door, electrical panel orders (10-working-day offset). | 2026-06-18 | 2026-06-18 | 2026-06-18 | 2026-07-28 | 28.5 | not_started | checkpoint.selections_finalized FS 0 |  |  |
| procurement.windows.order | procurement | Order windows (3× 36x60 DH + 1 transom) | pm | procurement | 1 | 1 | procurement | long_lead_orders |  |  | procurement dev_rules:4R, editor_rules Rule 4R 3-task pattern for stock windows (14-21 day lead per editor_rules). | 2026-07-13 | 2026-07-14 | 2026-07-13 | 2026-07-13 | 0 | not_started | checkpoint.selections_finalized FS 0 | 0 |  |
| procurement.windows.wait | procurement | Windows lead time | pm | lead_time | 0 | 0 | procurement | long_lead_orders |  |  | procurement dev_rules:4R 18 calendar-day wait (mid of 14-21 stock window lead). | 2026-07-14 | 2026-07-31 | 2026-07-14 | 2026-07-14 | 0 | not_started | procurement.windows.order FS 0 | 18 |  |
| procurement.windows.arrived | procurement | Windows on site | pm | milestone | 0 | 0 | procurement | long_lead_orders |  |  | procurement dev_rules:4R Arrival milestone gates windows.install. | 2026-07-31 | 2026-07-31 | 2026-07-31 | 2026-07-31 | 0 | not_started | procurement.windows.wait FS 0 |  |  |
| procurement.subpanel.order | procurement | Order 100A subpanel | pm | procurement | 1 | 1 | procurement | long_lead_orders |  |  | procurement _company/rules/service_amperage_check, dev_rules:4R Panel order gated on amperage_check pass per service_amperage_check rule. | 2026-07-28 | 2026-07-29 | 2026-07-28 | 2026-07-28 | 0 | not_started | prep.amperage_check FS 0, checkpoint.equipment_confirmed FS 0 | 0 |  |
| procurement.subpanel.wait | procurement | Subpanel lead time | pm | lead_time | 0 | 0 | procurement | long_lead_orders |  |  | procurement dev_rules:4R 10 calendar-day mid of 7-14 day subpanel lead per editor_rules. | 2026-07-29 | 2026-08-10 | 2026-07-29 | 2026-07-29 | 0 | not_started | procurement.subpanel.order FS 0 | 10 |  |
| procurement.subpanel.arrived | procurement | Subpanel on site | pm | milestone | 0 | 0 | procurement | long_lead_orders |  |  |  | 2026-08-10 | 2026-08-10 | 2026-08-10 | 2026-08-10 | 0 | not_started | procurement.subpanel.wait FS 0 |  |  |
| procurement.lvl_beam.order | procurement | Order 3-ply 14" LVL beam (~15'-6") | pm | procurement | 1 | 1 | procurement | long_lead_orders |  |  | procurement dev_rules:4R, editor_rules 3-task pattern; LVL 7-14 day standard lead. | 2026-07-06 | 2026-07-07 | 2026-07-06 | 2026-07-06 | 0 | not_started | checkpoint.selections_finalized FS 0 | 0 |  |
| procurement.lvl_beam.wait | procurement | LVL beam lead time | pm | lead_time | 0 | 0 | procurement | long_lead_orders |  |  |  | 2026-07-07 | 2026-07-17 | 2026-07-07 | 2026-07-07 | 0 | not_started | procurement.lvl_beam.order FS 0 | 10 |  |
| procurement.lvl_beam.arrived | procurement | LVL beam on site | pm | milestone | 0 | 0 | procurement | long_lead_orders |  |  |  | 2026-07-17 | 2026-07-17 | 2026-07-17 | 2026-07-17 | 0 | not_started | procurement.lvl_beam.wait FS 0 |  |  |
| procurement.minisplit.order | procurement | Order ductless mini-split unit ($2,500) | pm | procurement | 1 | 1 | procurement | long_lead_orders |  |  | procurement dev_rules:4R Mini-split 7-14 day lead per editor_rules; gates on equipment_confirmed. | 2026-08-26 | 2026-08-26 | 2026-08-26 | 2026-09-01 | 4 | not_started | checkpoint.equipment_confirmed FS 0 | 0 |  |
| procurement.minisplit.wait | procurement | Mini-split lead time | pm | lead_time | 0 | 0 | procurement | long_lead_orders |  |  |  | 2026-08-27 | 2026-09-08 | 2026-08-27 | 2026-09-02 | 4 | not_started | procurement.minisplit.order FS 0 | 10 |  |
| procurement.minisplit.arrived | procurement | Mini-split unit on site | pm | milestone | 0 | 0 | procurement | long_lead_orders |  |  |  | 2026-09-09 | 2026-09-09 | 2026-09-09 | 2026-09-15 | 4 | not_started | procurement.minisplit.wait FS 0 |  |  |
| procurement.stock_finishes | procurement | Stock finish materials (LVT, tile, vanity, fixtures, interior + exterior doors) | pm | procurement | 1 | 1 | procurement | stock_orders |  |  | procurement dev_rules:4R Rule 4R exception: stock 7-day items collapse to 1-day order 1 week before install. PM confirmed 4 interior doors (2 pre-hung + 2 pocket), stock exterior door, no closet system, no tankless. | 2026-07-24 | 2026-07-31 | 2026-07-24 | 2026-07-24 | 0 | not_started | checkpoint.selections_finalized FS 0 | 7 |  |
| early.hall_bath_shower | site_prep | Hall bath acrylic shower swap (customer early item — Day 1) | plumbing | work | 1 | 2 | site_prep | customer_early_items |  |  | site_prep dev_rules:4V PM confirmed (round 1 q.customer_early_items): customer needs working shower during construction. Two-bucket pattern per Rule 4V: early item runs Day 1 off critical path; window-infill/repaint work stays in interior_finish as separate hall bath retrofit component. Reuses existing valve/trim (round 1 q.hall_bath_valve_reuse_confirmed) — no plumbing rough needed. | 2026-07-02 | 2026-07-02 | 2026-07-02 | 2026-09-24 | 59.5 | not_started | permit.building FS 0 |  |  |
| site.mobilization | site_prep | Site mobilization + staging | general | work | 1 | 2 | site_prep | site_mobilization |  |  | site_prep Standard mobilization: dump trailer, backhoe delivery, material staging. | 2026-07-02 | 2026-07-02 | 2026-07-02 | 2026-07-02 | 0 | not_started | permit.building FS 0 |  |  |
| site.relocate_hvac_disconnect | site_prep | Relocate existing heat pump + electrical disconnect (BEFORE demo) | electrical | work | 1 | 2 | site_prep | site_mobilization |  |  | site_prep dev_rules:4K Rule 4K: heat pump + electrical disconnect relocations happen in site_prep phase, BEFORE demo — not in demo phase. | 2026-07-03 | 2026-07-03 | 2026-07-03 | 2026-07-03 | 0 | not_started | site.mobilization FS 0 |  |  |
| demo.selective | demo | Selective demo (walkway saw-cut, railroad ties, site obstructions, hall bath tub/shower) | demo | work | 2 | 3 | demo | selective_demo |  |  | demo Selective demo per scope: saw-cut walkway, remove railroad ties + obstructions, hall bath tub/shower demo. Heat pump + disconnect already relocated in site_prep. | 2026-07-06 | 2026-07-07 | 2026-07-06 | 2026-07-06 | 0 | not_started | site.relocate_hvac_disconnect FS 0 |  |  |
| foundation.excavation | foundation | Excavate for footings + slab | excavation | work | 2 | 2 | foundation_structural | foundation |  |  |  | 2026-07-08 | 2026-07-09 | 2026-07-08 | 2026-07-08 | 0 | not_started | demo.selective FS 0 |  |  |
| foundation.monolithic_pour | foundation | Set forms + rebar/mesh + monolithic pour (12x12 footings + 4" slab + vapor barrier) | concrete | work | 2 | 4 | foundation_structural | foundation |  |  | foundation dev_rules:4B Rule 4B monolithic default: no CMU or full-height wall (scope explicit). Footings + slab poured same day. | 2026-07-10 | 2026-07-13 | 2026-07-10 | 2026-07-10 | 0 | not_started | foundation.excavation FS 0 |  |  |
| inspect.foundation | foundation | Foundation inspection | inspector | inspection | 0.5 | 1 | foundation_structural | foundation |  | 1 |  | 2026-07-14 | 2026-07-14 | 2026-07-14 | 2026-07-14 | 0 | not_started | foundation.monolithic_pour FS 0 |  |  |
| foundation.slab_cure | foundation | Slab cure (calendar wait) | concrete | lead_time | 0 | 0 | foundation_structural | foundation |  |  |  | 2026-07-14 | 2026-07-17 | 2026-07-14 | 2026-07-14 | 0 | not_started | inspect.foundation FS 0 | 3 |  |
| structural.lvl_install | framing | Install 3-ply 14" LVL beam + temporary shoring, open load-bearing wall | framing | work | 2 | 3 | foundation_structural | structural_beam |  |  | framing LVL beam opens existing load-bearing wall per scope; requires shoring and gates upper floor framing. | 2026-07-17 | 2026-07-21 | 2026-07-17 | 2026-07-17 | 0 | not_started | foundation.slab_cure FS 0, procurement.lvl_beam.arrived FS 0 |  |  |
| framing.tie_in_discovery | framing | Tie-in discovery (roof/framing/MEP existing conditions) | framing | work | 1 | 2 | framing | framing_retrofit |  |  | framing job_types/addition/rules/retrofit_tie_in_discovery Rule retrofit_tie_in_discovery: addition ties into existing at roof (3/12 into 6/12), primary bedroom framing, hall bathroom — SS with tie-in framing. | 2026-07-17 | 2026-07-20 | 2026-07-17 | 2026-08-14 | 19.5 | not_started | structural.lvl_install SS 0 |  |  |
| framing.floor_system | framing | Frame floor system + subfloor (glue + fasten) | framing | work | 2 | 3 | framing | framing_walls_floor |  |  |  | 2026-07-21 | 2026-07-23 | 2026-07-21 | 2026-07-21 | 0 | not_started | structural.lvl_install FS 0 |  |  |
| framing.walls | framing | Frame basement + exterior + interior walls (2x4 @ 16" OC) + elevator shaft | framing | work | 3 | 3 | framing | framing_walls_floor |  |  | framing Includes 4x4 future elevator shaft framing (framing only, no elevator system). | 2026-07-23 | 2026-07-28 | 2026-07-23 | 2026-07-23 | 0 | not_started | framing.floor_system FS 0 |  |  |
| framing.roof | framing | Stick-frame gable roof rafters (3/12 tie into existing 6/12) | framing | work | 3 | 3 | framing | framing_roof |  |  | framing job_types/addition/beliefs/stick_frame_default_for_small_additions, dev_rules:4Q PM confirmed (round 1 q.roof_framing_method): stick-framed rafters, lumber arrives day-of with framing crew. Belief stick_frame_default confirmed. Per Rule 4Q, NO procurement.trusses task. | 2026-07-28 | 2026-07-31 | 2026-07-28 | 2026-07-28 | 0 | not_started | framing.walls FS 0 |  |  |
| framing.retrofit_tie_in | framing | Retrofit framing at existing tie-ins (primary bedroom + hall bath window infill) | framing | work | 1 | 2 | framing | framing_retrofit |  |  | framing job_types/addition/rules/retrofit_tie_in_discovery Framing modifications for primary bedroom + hall bath window infill. | 2026-07-31 | 2026-08-03 | 2026-07-31 | 2026-08-17 | 10.5 | not_started | framing.tie_in_discovery FS 0, framing.roof FS 0 |  |  |
| inspect.framing | framing | Framing inspection | inspector | inspection | 0.5 | 1 | framing | framing_retrofit |  | 1 |  | 2026-08-03 | 2026-08-03 | 2026-08-03 | 2026-08-18 | 10.5 | not_started | framing.retrofit_tie_in FS 0 |  |  |
| roofing.underlayment | shell | Roof sheathing + synthetic underlayment + drip edge + temp dry-in | roofing | work | 2 | 3 | shell | roofing |  |  |  | 2026-07-31 | 2026-08-04 | 2026-07-31 | 2026-07-31 | 0 | not_started | framing.roof FS 0 |  |  |
| windows.install | shell | Install 4 windows (3× 36x60 + 1 transom) + 1 exterior door | windows_doors | work | 2 | 2 | shell | windows_doors |  |  | shell dev_rules:4J Rule 4J: windows install runs immediately after roof framing, parallel with roofing underlayment. Exterior door PM confirmed stock (round 1 q.exterior_door_type). | 2026-07-31 | 2026-08-04 | 2026-07-31 | 2026-07-31 | 0 | not_started | roofing.underlayment SS 0, procurement.windows.arrived FS 0, procurement.stock_finishes FS 0 |  | roofing.shingles |
| roofing.shingles | shell | Architectural shingles + flashing + ridge vent + fascia + soffit + gutters | roofing | work | 3 | 3 | shell | roofing |  |  | shell _company/beliefs/roof_and_siding_same_crew Same crew does roof then siding per TCR default; serial render. | 2026-08-04 | 2026-08-07 | 2026-08-04 | 2026-09-16 | 30 | not_started | roofing.underlayment FS 0 |  |  |
| siding.install | shell | Sheathing + WRB + vinyl siding (match existing) + sealed penetrations | siding | work | 4 | 3 | shell | siding_exterior |  |  | shell job_types/addition/rules/siding_starts_at_underlayment, _company/beliefs/roof_and_siding_same_crew Rule siding_starts_at_underlayment: siding may start once underlayment + windows in; same-crew belief keeps it after shingles. | 2026-08-07 | 2026-08-13 | 2026-08-07 | 2026-09-21 | 30 | not_started | roofing.underlayment FS 0, windows.install FS 0, roofing.shingles FS 0 |  |  |
| milestone.dried_in | shell | Dried-in milestone | pm | milestone | 0 | 0 | shell | siding_exterior |  |  |  | 2026-08-07 | 2026-08-07 | 2026-08-07 | 2026-09-25 | 34 | not_started | roofing.shingles FS 0, windows.install FS 0 |  |  |
| plumbing.rough | mep_rough | Plumbing rough (supply/waste/vent, master bath, W/D relocation, vent stacks + WH vent extension) | plumbing | work | 4 | 2 | mep_rough | plumbing_rough |  |  | mep_rough _company/rules/_examples/plumbing_rough_min_duration, dev_rules:4I, dev_rules:4G 4d floor per plumbing_rough_min_duration (master bath + W/D relocation + multiple branches). Gated on underlayment + windows, NOT dried-in (Rule 4I). Mini-split → plumbing FIRST per Rule 4G. WH vent extension included; existing WH stays per PM confirmation (round 1 q.tankless_option_elected) — no tank set task per Rule 4H. | 2026-08-04 | 2026-08-10 | 2026-08-04 | 2026-08-04 | 0 | not_started | roofing.underlayment FS 0, windows.install FS 0 |  |  |
| electrical.rough | mep_rough | Electrical rough (100A subpanel, ~12 recessed, outlets, elevator 120V/30A circuit, switch relocation) | electrical | work | 4 | 2 | mep_rough | electrical_rough |  |  | mep_rough dev_rules:4G, _company/rules/service_amperage_check Rule 4G mini-split order: plumbing → electrical → mini-split. Panel install gated on amperage_check pass + subpanel arrived. | 2026-08-10 | 2026-08-14 | 2026-08-10 | 2026-08-10 | 0 | not_started | plumbing.rough FS 0, procurement.subpanel.arrived FS 0 |  |  |
| hvac.rough_minisplit_lineset | mep_rough | HVAC rough — mini-split lineset + relocate existing HVAC components | hvac | work | 2 | 2 | mep_rough | hvac_rough |  |  | mep_rough dev_rules:4G Rule 4G: mini-split LAST in MEP rough order (plumbing → electrical → mini-split). | 2026-08-14 | 2026-08-18 | 2026-08-14 | 2026-08-14 | 0 | not_started | electrical.rough FS 0 |  |  |
| inspect.rough_bundled | mep_rough | Bundled rough inspection (framing + plumbing + electrical + HVAC) | inspector | inspection | 1 | 1 | mep_rough | rough_inspection |  | 1 | mep_rough dev_rules:4C Rule 4C: single inspector, single day, all trades bundled. | 2026-08-18 | 2026-08-19 | 2026-08-18 | 2026-08-18 | 0 | not_started | hvac.rough_minisplit_lineset FS 0, inspect.framing FS 0 |  |  |
| punch.rough_buffer | mep_rough | Rough inspection punch buffer (2-day) | general | work | 2 | 2 | mep_rough | rough_inspection |  |  | mep_rough dev_rules:4D Rule 4D: 2-day punch buffer after rough inspection. | 2026-08-19 | 2026-08-21 | 2026-08-19 | 2026-08-19 | 0 | not_started | inspect.rough_bundled FS 0 |  |  |
| insulation.install | drywall_finish | Insulation (R13 walls, R30 attic/roof, R30 floor) + air sealing | insulation | work | 2 | 2 | drywall_finish | insulation_drywall |  |  |  | 2026-08-21 | 2026-08-25 | 2026-08-21 | 2026-08-21 | 0 | not_started | punch.rough_buffer FS 0 |  |  |
| inspect.insulation | drywall_finish | Insulation inspection | inspector | inspection | 0.5 | 1 | drywall_finish | insulation_drywall |  | 1 |  | 2026-08-25 | 2026-08-25 | 2026-08-25 | 2026-08-25 | 0 | not_started | insulation.install FS 0 |  |  |
| drywall.hang_finish | drywall_finish | Drywall hang + tape + Level 3 finish (addition + primary bedroom + basement storage + hall bath retrofit) | drywall | work | 5 | 3 | drywall_finish | insulation_drywall |  |  | drywall_finish _company/beliefs/drywall_soft_schedule Belief drywall_soft_schedule: soft-start behind inspect.insulation; consolidates across addition + primary bedroom + basement + hall bath retrofit. | 2026-08-26 | 2026-09-01 | 2026-08-26 | 2026-08-26 | 0 | not_started | inspect.insulation FS 0 |  |  |
| paint.phase_1 | drywall_finish | Paint phase 1 — primer + ceilings | paint | work | 2 | 2 | drywall_finish | paint_phase_1 |  |  | drywall_finish dev_rules:4E, dev_rules:4F Rule 4E/4F: paint is ALWAYS two phases. Phase 1 = primer + ceilings before finish trades. | 2026-09-02 | 2026-09-03 | 2026-09-02 | 2026-09-02 | 0 | not_started | drywall.hang_finish FS 0 |  |  |
| tile.master_bath | interior_finish | Master bath tile — waterproofing + 7x4 custom shower walls + mosaic floor + niche + bench | tile | work | 4 | 2 | interior_finish | tile_flooring |  |  |  | 2026-09-04 | 2026-09-10 | 2026-09-04 | 2026-09-08 | 1 | not_started | paint.phase_1 FS 0 |  |  |
| flooring.lvt | interior_finish | LVT flooring throughout (addition + primary bedroom) | flooring | work | 3 | 2 | interior_finish | tile_flooring |  |  | interior_finish dev_rules:4L Rule 4L: flooring → trim (not paint → trim). LVT $3/sqft, stock. | 2026-09-04 | 2026-09-09 | 2026-09-04 | 2026-09-04 | 0 | not_started | paint.phase_1 FS 0 |  | tile.master_bath |
| electrical.trim | interior_finish | Electrical trim (~12 recessed lights, 2 vanity lights, bath fan/light, dimmers, devices, GFCI/AFCI) | electrical | work | 2 | 2 | interior_finish | mep_finish |  |  | interior_finish dev_rules:4L Rule 4L: electrical finish precedes paint_2 (not paint_1). | 2026-09-04 | 2026-09-08 | 2026-09-04 | 2026-09-11 | 4 | not_started | paint.phase_1 FS 0 |  | flooring.lvt |
| hvac.minisplit_install | interior_finish | Mini-split head install + startup + commissioning | hvac | work | 1 | 2 | interior_finish | mep_finish |  |  | interior_finish dev_rules:4N Rule 4N: stagger HVAC after electrical trim to avoid 3+ concurrent trades. | 2026-09-09 | 2026-09-09 | 2026-09-09 | 2026-09-15 | 4 | not_started | electrical.trim FS 0, procurement.minisplit.arrived FS 0 |  |  |
| plumbing.finish | interior_finish | Plumbing finish (2 lav sup/drain, toilet, custom shower dual-valve trim, 72" double vanity + 2 faucets, exhaust fan) | plumbing | work | 2 | 2 | interior_finish | mep_finish |  |  | interior_finish dev_rules:4H Rule 4H: NO plumbing.tank_set — PM confirmed tankless not elected (round 1 q.tankless_option_elected); existing WH stays. | 2026-09-11 | 2026-09-14 | 2026-09-11 | 2026-09-14 | 1 | not_started | tile.master_bath FS 0, flooring.lvt FS 0 |  |  |
| trim.interior | interior_finish | Interior trim (5-1/4" baseboard, 2-1/4" casing, 4 interior doors: 2 pre-hung + 2 pocket, caulk/fill/sand) | trim_carpentry | work | 4 | 2 | interior_finish | trim_carpentry |  |  | interior_finish dev_rules:4L Rule 4L: flooring → trim. PM confirmed (round 1 q.fourth_interior_door_type): 2 pre-hung + 2 pocket. Note: pocket door FRAMES are installed pre-drywall in framing.walls; casings/leaves install here. | 2026-09-10 | 2026-09-15 | 2026-09-10 | 2026-09-10 | 0 | not_started | flooring.lvt FS 0 |  |  |
| hall_bath.retrofit_finish | interior_finish | Hall bath retrofit (window infill drywall/finish, PVC trim, patch + repaint) | general | work | 2 | 2 | interior_finish | hall_bath_retrofit |  |  | interior_finish dev_rules:4V Rule 4V two-bucket: hall bath window-infill/repaint retrofit lives here, SEPARATE from Day-1 early shower swap in site_prep. | 2026-09-02 | 2026-09-03 | 2026-09-02 | 2026-09-14 | 7 | not_started | drywall.hang_finish FS 0 |  |  |
| paint.phase_2 | interior_finish | Paint phase 2 — wall finish coats (2 coats) after all finish trades | paint | work | 3 | 2 | interior_finish | paint_phase_2 |  |  | interior_finish dev_rules:4E, dev_rules:4F Rule 4E/4F: paint_2 predecessors include EVERY finish trade. | 2026-09-16 | 2026-09-18 | 2026-09-16 | 2026-09-16 | 0 | not_started | trim.interior FS 0, electrical.trim FS 0, plumbing.finish FS 0, hvac.minisplit_install FS 0, tile.master_bath FS 0, hall_bath.retrofit_finish FS 0 |  |  |
| punch.list | closeout | Punch list walk + fixes | general | work | 3 | 2 | closeout | final_closeout |  |  |  | 2026-09-21 | 2026-09-23 | 2026-09-21 | 2026-09-21 | 0 | not_started | paint.phase_2 FS 0 |  |  |
| cleanup.final | closeout | Final cleaning + debris removal | cleanup | work | 1 | 2 | closeout | final_closeout |  |  |  | 2026-09-24 | 2026-09-24 | 2026-09-24 | 2026-09-24 | 0 | not_started | punch.list FS 0 |  |  |
| inspect.final | closeout | Final inspection (building) | inspector | inspection | 0.5 | 1 | closeout | final_closeout |  | 1 |  | 2026-09-25 | 2026-09-25 | 2026-09-25 | 2026-09-25 | 0 | not_started | cleanup.final FS 0 |  |  |
| milestone.substantial_completion | closeout | Substantial completion | pm | milestone | 0 | 0 | closeout | final_closeout |  |  |  | 2026-09-25 | 2026-09-25 | 2026-09-25 | 2026-09-25 | 0 | not_started | inspect.final FS 0 |  |  |
